How a schedule from MS Project changed from version to version. A marks actual dates.

## Version 1 (saved 2006-05-02, file Original_Infra_CRIT.mpp)

| ID | WBS | Task | Duration | Start | Finish | Predecessors | Total float | Constraint |
| --- | --- | --- | --- | --- | --- | --- | --- | --- |
| 1 | 1 | **Rollout Task** | 11.16d | 2006-05-02 08:00 | 2006-05-17 09:15 |  | 0d |  |
| 2 | 1.1 | **Pre-Rollout Verification/Changes [If required]** | 0d | 2006-05-02 08:00 | 2006-05-02 08:00 |  | 0.23d |  |
| 3 |  | Database changes | 0h | 2006-05-02 08:00 | 2006-05-02 08:00 |  | 0.23d | start no earlier than 2006-05-02 08:00 |
| 4 |  | Extent Map changes | 0h | 2006-05-02 08:00 | 2006-05-02 08:00 | 3 | 0.23d |  |
| 5 |  | Version label verification on all boxes | 0h | 2006-05-02 08:00 | 2006-05-02 08:00 | 4 | 0.23d |  |
| 6 |  | Check: Tier Lead has verified information and obtained a sign off | 0h | 2006-05-02 08:00 | 2006-05-02 08:00 | 3, 4, 5 | 0.23d |  |
| 7 | 1.2 | **Install and perform tests on GC A Side** | 1.62d | 2006-05-02 08:00 | 2006-05-03 14:00 | 2 | 0.23d |  |
| 8 | 1.2.1 | **Install GC "A" side with new release – load idl, create EC** | 0.85d | 2006-05-02 08:00 | 2006-05-02 15:50 |  | 0.23d |  |
| 9 |  | Generate XML, build Localrep, load All IFR and other Installation steps. | 2h | 2006-05-02 08:00 | 2006-05-02 10:00 | 5 | 0.23d | start no earlier than 2006-05-02 08:00 |
| 10 |  | Server Side Full Cleanup | 3h | 2006-05-02 10:00 | 2006-05-02 14:00 | 9 | 0.23d |  |
| 11 |  | Time server full startup after cleanup (See Server Startup Timing Page) | 1h | 2006-05-02 14:00 | 2006-05-02 15:00 | 10 | 0.23d |  |
| 12 |  | Backup for server Timings | 20min | 2006-05-02 15:00 | 2006-05-02 15:20 | 11 | 0.23d |  |
| 13 |  | Check: Sign off on Server Timings | 30min | 2006-05-02 15:20 | 2006-05-02 15:50 | 12 | 0.23d |  |
| 14 | 1.2.2 | **ITG Checkout Script** | 0.19d | 2006-05-02 15:50 | 2006-05-03 08:20 | 8 | 0.23d |  |
| 15 |  | ITG Checkout for W_MAIN , ONE_MAIN session s | 40min | 2006-05-02 15:50 | 2006-05-02 16:30 | 13 | 0.23d |  |
| 16 |  | Backup for ITG Checkout (endOfPerformanceReport) | 20min | 2006-05-02 16:30 | 2006-05-02 16:50 | 15 | 0.23d |  |
| 17 |  | Check: Sign off on Checkout Scripts | 30min | 2006-05-02 16:50 | 2006-05-03 08:20 | 16 | 0.23d |  |
| 18 | 1.2.3 | **User Login test1** | 0.2d | 2006-05-03 08:20 | 2006-05-03 09:55 | 14 | 0.23d |  |
| 19 |  | Initial setup like bouncing Global Server and SACAS. | 15min | 2006-05-03 08:20 | 2006-05-03 08:35 | 17 | 0.23d | start no earlier than 2006-05-03 08:00 |
| 20 |  | Login Test for 1 and 2 Users | 15min | 2006-05-03 08:35 | 2006-05-03 08:50 | 19 | 0.23d |  |
| 21 |  | Product State Update to CLOSE on VLO (visually timing Single class CLOSED with SAGUI) | 15min | 2006-05-03 08:50 | 2006-05-03 09:05 | 20 | 0.23d |  |
| 22 |  | Backup for Login User Test and Product state Update through SAGUI | 20min | 2006-05-03 09:05 | 2006-05-03 09:25 | 21 | 0.23d |  |
| 23 |  | Check: Sign Off on Logs and Results | 30min | 2006-05-03 09:25 | 2006-05-03 09:55 | 22 | 0.23d |  |
| 24 | 1.2.4 | **GC failover to "B" side** | 0.39d | 2006-05-03 09:55 | 2006-05-03 14:00 | 18 | 0.23d |  |
| 25 |  | Initial setup for test Drivers (starting processes on GC Slave.) | 30min | 2006-05-03 09:55 | 2006-05-03 10:25 |  | 0.23d |  |
| 26 |  | Quote/Order BC20 Hybrid and ONE_MAIN traffic going before/during/after failover. Should not hang to verify no Global Dependency introduced. Test Execution | 45min | 2006-05-03 10:25 | 2006-05-03 11:10 | 25 | 0.23d |  |
| 27 |  | ITG Checkout script (for W_MAIN and ONE_MAIN Session) | 30min | 2006-05-03 11:10 | 2006-05-03 11:40 | 26 | 0.23d |  |
| 28 |  | Backup for Failover and ITG Checkout | 20min | 2006-05-03 11:40 | 2006-05-03 12:00 | 27 | 0.23d |  |
| 29 |  | Generate Report for Failover Timings for all GC Processes (taking time from log files) | 30min | 2006-05-03 13:00 | 2006-05-03 13:30 | 28 | 0.23d |  |
| 30 |  | Check: Sign Off on Checkout Scripts, Logs and Results | 30min | 2006-05-03 13:30 | 2006-05-03 14:00 | 29 | 0.23d |  |
| 31 | 1.3 | **Install and perform tests on GC B Side** | 0.56d | 2006-05-03 14:00 | 2006-05-04 09:30 | 7 | 0.23d |  |
| 32 | 1.3.1 | **Install GC "B" side** | 0.56d | 2006-05-03 14:00 | 2006-05-04 09:30 |  | 0.23d |  |
| 33 |  | Cleanup, createCurrentBusinessDay,starting all GC Processes on B side | 3h | 2006-05-03 14:00 | 2006-05-03 17:00 | 30 | 0.23d |  |
| 34 |  | ITG Checkout script (for W_MAIN and ONE_MAIN Session) | 40min | 2006-05-04 08:00 | 2006-05-04 08:40 | 33 | 0.23d |  |
| 35 |  | Backup for GC Upgrade and ITG Checkout | 20min | 2006-05-04 08:40 | 2006-05-04 09:00 | 34 | 0.23d |  |
| 36 |  | Check: Sign Off on Checkout Scripts, Logs and Results | 30min | 2006-05-04 09:00 | 2006-05-04 09:30 | 35 | 0.23d |  |
| 37 | 1.4 | **Install and Perform Tests on Hybrid BC A Side** | 3.11d | 2006-05-04 09:30 | 2006-05-09 10:25 | 31 | 0d |  |
| 38 | 1.10 | **Install Hybrid BC (A)** | 0.33d | 2006-05-04 09:30 | 2006-05-04 13:10 | 32 | 0.23d |  |
| 39 |  | Configuration and starting processes | 1.5h | 2006-05-04 09:30 | 2006-05-04 11:00 | 35 | 0.23d |  |
| 40 |  | ITG Checkout script (W_MAIN Session) | 20min | 2006-05-04 11:00 | 2006-05-04 11:20 | 39 | 0.23d |  |
| 41 |  | Backup and Reporting | 20min | 2006-05-04 11:20 | 2006-05-04 11:40 | 40 | 0.23d |  |
| 42 |  | Check: Sign Off on Checkout Scripts, Logs and Results | 30min | 2006-05-04 11:40 | 2006-05-04 13:10 | 41 | 0.23d |  |
| 43 |  | FIX Strategy Order Test | 2h | 2006-05-04 13:10 | 2006-05-04 15:10 | 38 | 0.23d |  |
| 44 | 1.4.3 | **Global Dependency Test** | 0.17d | 2006-05-05 08:00 | 2006-05-05 09:20 | 43 | 0d |  |
| 45 |  | Test Execution | 30min | 2006-05-05 08:00 | 2006-05-05 08:30 | 42 | 0d | start no earlier than 2006-05-05 08:00 |
| 46 |  | Log Backup and Reporting | 20min | 2006-05-05 08:30 | 2006-05-05 08:50 | 45 | 0d |  |
| 47 |  | Check:Log and Results verification | 30min | 2006-05-05 08:50 | 2006-05-05 09:20 | 46 | 0d |  |
| 48 | 1.4.4 | **Mult Class Quote Step-up with Quotes only (Scenario 0)** | 0.32d | 2006-05-05 09:20 | 2006-05-05 11:55 | 44 | 0d |  |
| 49 |  | BC Cleanup, Initial Driver Setup, | 20min | 2006-05-05 09:20 | 2006-05-05 09:40 | 47 | 0d | start no earlier than 2006-04-24 08:00 |
| 50 |  | Test Execution for No BOTR | 1h | 2006-05-05 09:40 | 2006-05-05 10:40 | 49 | 0d | start no earlier than 2006-04-24 08:00 |
| 51 |  | endOfPerformance and Backup | 30min | 2006-05-05 10:40 | 2006-05-05 11:10 | 50 | 0d |  |
| 52 |  | Reporting through KR site | 15min | 2006-05-05 11:10 | 2006-05-05 11:25 | 51 | 0d |  |
| 53 |  | Check: Sign Off on Logs and Results | 30min | 2006-05-05 11:25 | 2006-05-05 11:55 | 52 | 0d |  |
| 54 | 1.4.5 | **Hybrid test scenario 5 (Product State Change Test)** | 0.25d | 2006-05-05 11:55 | 2006-05-05 14:55 | 48 | 0d |  |
| 55 |  | BC Cleanup, Initial Driver Setup, | 20min | 2006-05-05 11:55 | 2006-05-05 13:15 | 47 | 0d |  |
| 56 |  | Test Execution - Global Server Bounce | 40min | 2006-05-05 13:15 | 2006-05-05 13:55 | 55 | 0d |  |
| 57 |  | Monitor and Backup logs | 20min | 2006-05-05 13:55 | 2006-05-05 14:15 | 56 | 0d |  |
| 58 |  | Reporting through KR site | 10min | 2006-05-05 14:15 | 2006-05-05 14:25 | 57 | 0d |  |
| 59 |  | Check: Sign Off on Logs and Results | 30min | 2006-05-05 14:25 | 2006-05-05 14:55 | 58 | 0d |  |
| 60 | 1.12 | **Multi-class Quote step-up test with BOTR [Scenario 3]** | 0.45d | 2006-05-05 14:55 | 2006-05-08 09:30 | 54 | 0d |  |
| 61 |  | BC Cleanup, Initial Driver Setup, | 20min | 2006-05-05 14:55 | 2006-05-05 15:15 | 59 | 0d |  |
| 62 |  | Test Execution for No BOTR | 1h | 2006-05-05 15:15 | 2006-05-05 16:15 | 61 | 0d |  |
| 63 |  | BOTR from 4000 to 16000 | 30min | 2006-05-05 16:15 | 2006-05-05 16:45 | 62 | 0d |  |
| 64 |  | endOfPerformance and Backup | 45min | 2006-05-05 16:45 | 2006-05-08 08:30 | 63 | 0d |  |
| 65 |  | Reporting through KR site | 30min | 2006-05-08 08:30 | 2006-05-08 09:00 | 64 | 0d |  |
| 66 |  | Check: Sign Off on Logs and Results | 30min | 2006-05-08 09:00 | 2006-05-08 09:30 | 65 | 0d |  |
| 67 | 1.13 | **Single-class Quote step-up test with BOTR [Scenario 1]** | 0.41d | 2006-05-08 09:30 | 2006-05-08 13:45 | 60 | 0d |  |
| 68 |  | BC Cleanup, Initial Driver Setup, | 20min | 2006-05-08 09:30 | 2006-05-08 09:50 | 66 | 0d |  |
| 69 |  | Test Execution for No BOTR | 1h | 2006-05-08 09:50 | 2006-05-08 10:50 | 68 | 0d |  |
| 70 |  | BOTR 16000 | 10min | 2006-05-08 10:50 | 2006-05-08 11:00 | 69 | 0d |  |

| ID | WBS | Task | Duration | Start | Finish | Predecessors | Total float |
| --- | --- | --- | --- | --- | --- | --- | --- |
| 71 |  | endOfPerformance and Backup | 45min | 2006-05-08 11:00 | 2006-05-08 11:45 | 70 | 0d |
| 72 |  | Reporting through KR site | 30min | 2006-05-08 11:45 | 2006-05-08 13:15 | 71 | 0d |
| 73 |  | Check: Sign Off On Logs and Results | 30min | 2006-05-08 13:15 | 2006-05-08 13:45 | 72 | 0d |
| 74 | 1.14 | **Multi-class Order step-up test [Scenario 4]** | 0.24d | 2006-05-08 13:45 | 2006-05-08 15:40 | 67 | 0d |
| 75 |  | BC Cleanup, Initial Driver Setup, | 20min | 2006-05-08 13:45 | 2006-05-08 14:05 | 73 | 0d |
| 76 |  | Test Execution for No BOTR | 1h | 2006-05-08 14:05 | 2006-05-08 15:05 | 75 | 0d |
| 77 |  | endOfPerformance and Backup | 20min | 2006-05-08 15:05 | 2006-05-08 15:25 | 76 | 0d |
| 78 |  | Reporting through KR site | 15min | 2006-05-08 15:25 | 2006-05-08 15:40 | 77 | 0d |
| 79 |  | Check: Sign Off on Logs and Results | 0h | 2006-05-08 15:40 | 2006-05-08 15:40 | 78 | 0d |
| 80 | 1.15 | **Hybrid BC failover (new release to old release)** | 0.47d | 2006-05-08 15:40 | 2006-05-09 10:25 | 74 | 0d |
| 81 |  | BC Cleanup start A Side as Master | 20min | 2006-05-08 15:40 | 2006-05-08 16:00 | 79 | 0d |
| 82 |  | Initial setup for test Drivers (starting processes on BC Slave.) | 25min | 2006-05-08 16:00 | 2006-05-08 16:25 | 81 | 0d |
| 83 |  | Quote/Order BC20 Hybrid traffic going before/during/after failover. Test Execution | 1h | 2006-05-08 16:25 | 2006-05-09 08:25 | 82 | 0d |
| 84 |  | ITG Checkout script (for W_MAIN and ONE_MAIN Session) | 40min | 2006-05-09 08:25 | 2006-05-09 09:05 | 83 | 0d |
| 85 |  | Backup for Failover and ITG Checkout | 20min | 2006-05-09 09:05 | 2006-05-09 09:25 | 84 | 0d |
| 86 |  | Generate Report for Failover Timings for all BC Processes (taking time from log files) | 30min | 2006-05-09 09:25 | 2006-05-09 09:55 | 85 | 0d |
| 87 |  | Check: Sign Off on Checkout Scripts, Logs and Results | 30min | 2006-05-09 09:55 | 2006-05-09 10:25 | 86 | 0d |
| 88 | 1.5 | **Install and Perform Failoveron Hybrid BC B Side** | 0.76d | 2006-05-09 10:25 | 2006-05-10 08:30 | 37 | 0d |
| 89 | 1.16 | **Install Hybrid BC "B" side** | 0.38d | 2006-05-09 10:25 | 2006-05-09 14:25 | 80 | 0d |
| 90 |  | Cleanup | 20min | 2006-05-09 10:25 | 2006-05-09 10:45 | 87 | 0d |
| 91 |  | Configuration and starting processes | 1.5h | 2006-05-09 10:45 | 2006-05-09 13:15 | 90 | 0d |
| 92 |  | ITG Checkout script (W_MAIN Session) | 20min | 2006-05-09 13:15 | 2006-05-09 13:35 | 91 | 0d |
| 93 |  | Backup and Reporting | 20min | 2006-05-09 13:35 | 2006-05-09 13:55 | 92 | 0d |
| 94 |  | Check: Sign Off on Checkout Scripts, Logs and Results | 30min | 2006-05-09 13:55 | 2006-05-09 14:25 | 93 | 0d |
| 95 | 1.17 | **Hybrid BC failover (new release to new release)** | 0.39d | 2006-05-09 14:25 | 2006-05-10 08:30 | 89 | 0d |
| 96 |  | Initial setup for test Drivers (starting processes on BC Slave.) | 25min | 2006-05-09 14:25 | 2006-05-09 14:50 | 94 | 0d |
| 97 |  | Quote/Order BC20 Hybrid traffic going before/during/after failover. Test Execution | 1h | 2006-05-09 14:50 | 2006-05-09 15:50 | 96 | 0d |
| 98 |  | ITG Checkout script (for W_MAIN Session) | 20min | 2006-05-09 15:50 | 2006-05-09 16:10 | 97 | 0d |
| 99 |  | Backup for Failover and ITG Checkout | 20min | 2006-05-09 16:10 | 2006-05-09 16:30 | 98 | 0d |
| 100 |  | Generate Report for Failover Timings for all BC Processes (taking time from log files) | 30min | 2006-05-09 16:30 | 2006-05-09 17:00 | 99 | 0d |
| 101 |  | Check: Sign Off on Checkout Scripts,Logs and Results | 30min | 2006-05-10 08:00 | 2006-05-10 08:30 | 100 | 0d |
| 102 | 1.6 | **Install and Perform Tests on ONE_MAIN BC A Side** | 1.32d | 2006-05-10 08:30 | 2006-05-11 11:05 | 88 | 0d |
| 103 | 1.26 | **Install ONE_MAIN BC (A)** | 0.33d | 2006-05-10 08:30 | 2006-05-10 11:10 | 95 | 0d |
| 104 |  | Configuration and starting processes | 1.5h | 2006-05-10 08:30 | 2006-05-10 10:00 | 101 | 0d |
| 105 |  | ITG Checkout script (ONE_MAIN Session) | 20min | 2006-05-10 10:00 | 2006-05-10 10:20 | 104 | 0d |
| 106 |  | Backup and Reporting | 20min | 2006-05-10 10:20 | 2006-05-10 10:40 | 105 | 0d |
| 107 |  | Check: Sign Off on Checkout Scripts, Logs and Results | 30min | 2006-05-10 10:40 | 2006-05-10 11:10 | 106 | 0d |
| 108 | 1.27 | **Multi-class Order step-up test for ONE_MAIN [Scenario 2]** | 0.29d | 2006-05-10 11:10 | 2006-05-10 14:30 | 103 | 0d |
| 109 |  | BC Cleanup, Initial Driver Setup, | 20min | 2006-05-10 11:10 | 2006-05-10 11:30 |  | 0d |
| 110 |  | Test Execution for No BOTR | 1h | 2006-05-10 11:30 | 2006-05-10 13:30 | 109 | 0d |
| 111 |  | endOfPerformance and Backup | 15min | 2006-05-10 13:30 | 2006-05-10 13:45 | 110 | 0d |
| 112 |  | Reporting through KR site | 15min | 2006-05-10 13:45 | 2006-05-10 14:00 | 111 | 0d |
| 113 |  | Check: Sign Off on Logs and Results | 30min | 2006-05-10 14:00 | 2006-05-10 14:30 | 112 | 0d |
| 114 | 1.28 | **Multi-class Quote step-up test [Scenario 1]** | 0.33d | 2006-05-10 14:30 | 2006-05-11 08:10 | 108 | 0d |
| 115 |  | BC Cleanup, Initial Driver Setup, | 20min | 2006-05-10 14:30 | 2006-05-10 14:50 |  | 0d |
| 116 |  | Test Execution for No BOTR | 1h | 2006-05-10 14:50 | 2006-05-10 15:50 | 115 | 0d |
| 117 |  | endOfPerformance and Backup | 30min | 2006-05-10 15:50 | 2006-05-10 16:20 | 116 | 0d |
| 118 |  | Reporting through KR site | 20min | 2006-05-10 16:20 | 2006-05-10 16:40 | 117 | 0d |
| 119 |  | Check: Sign Off on Logs and Results | 30min | 2006-05-10 16:40 | 2006-05-11 08:10 | 118 | 0d |
| 120 | 1.30 | **Failover ONE_MAIN BC (Old to New)** | 0.36d | 2006-05-11 08:10 | 2006-05-11 11:05 | 114 | 0d |
| 121 |  | Cleanup | 20min | 2006-05-11 08:10 | 2006-05-11 08:30 | 119 | 0d |
| 122 |  | Initial setup for test Drivers (starting processes on BC Slave.) | 25min | 2006-05-11 08:30 | 2006-05-11 08:55 | 121 | 0d |
| 123 |  | Quote/Order ONE_MAIN traffic going before/during/after failover. Test Execution | 30min | 2006-05-11 08:55 | 2006-05-11 09:25 | 122 | 0d |
| 124 |  | ITG Checkout script (for ONE_MAIN Session) | 20min | 2006-05-11 09:25 | 2006-05-11 09:45 | 123 | 0d |
| 125 |  | Backup for Failover and ITG Checkout | 20min | 2006-05-11 09:45 | 2006-05-11 10:05 | 124 | 0d |
| 126 |  | Generate Report for Failover Timings for all BC Processes (taking time from log files) | 30min | 2006-05-11 10:05 | 2006-05-11 10:35 | 125 | 0d |
| 127 |  | Check: Sign Off on Checkout Scripts,Logs and Results | 30min | 2006-05-11 10:35 | 2006-05-11 11:05 | 126 | 0d |
| 128 | 1.7 | **Install and Perform failover on ONE_MAIN BC B Side** | 0.7d | 2006-05-11 11:05 | 2006-05-12 08:40 | 102 | 0d |
| 129 | 1.31 | **Install ONE_MAIN BC (B)** | 0.33d | 2006-05-11 11:05 | 2006-05-11 14:45 | 120 | 0d |
| 130 |  | Configuration and starting processes | 1.5h | 2006-05-11 11:05 | 2006-05-11 13:35 | 127 | 0d |
| 131 |  | ITG Checkout script ( ONE_MAIN Session) | 20min | 2006-05-11 13:35 | 2006-05-11 13:55 | 130 | 0d |
| 132 |  | Backup and Reporting | 20min | 2006-05-11 13:55 | 2006-05-11 14:15 | 131 | 0d |
| 133 |  | Check: Sign Off on Checkout Scripts, Logs and Results | 30min | 2006-05-11 14:15 | 2006-05-11 14:45 | 132 | 0d |
| 134 | 1.7.2 | **Failover ONE_MAIN BC (New to New)** | 0.36d | 2006-05-11 14:45 | 2006-05-12 08:40 | 129 | 0d |
| 135 |  | Cleanup | 20min | 2006-05-11 14:45 | 2006-05-11 15:05 | 133 | 0d |
| 136 |  | Initial setup for test Drivers (starting processes on BC Slave.) | 25min | 2006-05-11 15:05 | 2006-05-11 15:30 | 135 | 0d |
| 137 |  | Quote/Order ONE_MAIN traffic going before/during/after failover. Test Execution | 30min | 2006-05-11 15:30 | 2006-05-11 16:00 | 136 | 0d |
| 138 |  | ITG Checkout script (for ONE_MAIN Session) | 20min | 2006-05-11 16:00 | 2006-05-11 16:20 | 137 | 0d |
| 139 |  | Backup for Failover and ITG Checkout | 20min | 2006-05-11 16:20 | 2006-05-11 16:40 | 138 | 0d |
| 140 |  | Generate Report for Failover Timings for all BC Processes (taking time from log files) | 30min | 2006-05-11 16:40 | 2006-05-12 08:10 | 139 | 0d |

| ID | WBS | Task | Duration | Start | Finish | Predecessors | Total float | Constraint |
| --- | --- | --- | --- | --- | --- | --- | --- | --- |
| 141 |  | Check: Sign Off on Checkout Scripts,Logs and Results | 30min | 2006-05-12 08:10 | 2006-05-12 08:40 | 140 | 0d |  |
| 142 | 1.8 | **4 Hour Endurance Test** | 0.81d | 2006-05-12 08:40 | 2006-05-12 16:10 | 128 | 0d |  |
| 143 |  | Cleanup for W_MAIN and ONE_MAIN BC | 20min | 2006-05-12 08:40 | 2006-05-12 09:00 |  | 0d |  |
| 144 |  | Driver setup | 20min | 2006-05-12 09:00 | 2006-05-12 09:20 | 143 | 0d |  |
| 145 |  | CAS bounce | 20min | 2006-05-12 09:20 | 2006-05-12 09:40 | 144 | 0d |  |
| 146 |  | 4 hour Sanity Check | 4h | 2006-05-12 09:40 | 2006-05-12 14:40 | 145 | 0d |  |
| 147 |  | endOfPerformance and Backup and Reporting | 1h | 2006-05-12 14:40 | 2006-05-12 15:40 | 146 | 0d |  |
| 148 |  | Check: Sign Off on Logs and Results | 30min | 2006-05-12 15:40 | 2006-05-12 16:10 | 147 | 0d |  |
| 149 | 1.9 | **Install and Perform tests on FE A Side** | 0.99d | 2006-05-12 16:10 | 2006-05-15 16:05 | 142 | 0d |  |
| 150 | 1.9.1 | **Install FE A** | 0.38d | 2006-05-12 16:10 | 2006-05-15 10:10 | 142 | 0d |  |
| 151 |  | Configuration and starting processes | 1.5h | 2006-05-12 16:10 | 2006-05-15 08:40 | 134 | 0d |  |
| 152 |  | ITG Checkout script (W_MAIN and ONE_MAIN Session) | 40min | 2006-05-15 08:40 | 2006-05-15 09:20 | 151 | 0d |  |
| 153 |  | Backup and Reporting | 20min | 2006-05-15 09:20 | 2006-05-15 09:40 | 152 | 0d |  |
| 154 |  | Check: Sign Off on Checkout Scripts, Logs and Results | 30min | 2006-05-15 09:40 | 2006-05-15 10:10 | 153 | 0d |  |
| 155 | 1.9.2 | **Mult Class Quote Step-up with Quotes only (Scenario 0)** | 0.32d | 2006-05-15 10:10 | 2006-05-15 13:45 | 150 | 0d |  |
| 156 |  | BC Cleanup, Initial Driver Setup, | 20min | 2006-05-15 10:10 | 2006-05-15 10:30 | 154 | 0d | start no earlier than 2006-04-24 08:00 |
| 157 |  | Test Execution for No BOTR | 1h | 2006-05-15 10:30 | 2006-05-15 11:30 | 156 | 0d | start no earlier than 2006-04-24 08:00 |
| 158 |  | endOfPerformance and Backup | 30min | 2006-05-15 11:30 | 2006-05-15 12:00 | 157 | 0d |  |
| 159 |  | Reporting through KR site | 15min | 2006-05-15 13:00 | 2006-05-15 13:15 | 158 | 0d |  |
| 160 |  | Check: Sign Off on Logs and Results | 30min | 2006-05-15 13:15 | 2006-05-15 13:45 | 159 | 0d |  |
| 161 | 1.9.3 | **FE Failover - New to Old** | 0.29d | 2006-05-15 13:45 | 2006-05-15 16:05 | 155 | 0d |  |
| 162 |  | initial cleanup and driver setup | 20min | 2006-05-15 13:45 | 2006-05-15 14:05 | 160 | 0d |  |
| 163 |  | Quote and order traffic | 20min | 2006-05-15 14:05 | 2006-05-15 14:25 | 162 | 0d |  |
| 164 |  | stop A side FE processes and see effect on traffic | 10min | 2006-05-15 14:25 | 2006-05-15 14:35 | 163 | 0d |  |
| 165 |  | ITG Checkout with only Old FE processes up | 40min | 2006-05-15 14:35 | 2006-05-15 15:15 | 164 | 0d |  |
| 166 |  | Log backup | 20min | 2006-05-15 15:15 | 2006-05-15 15:35 | 165 | 0d |  |
| 167 |  | Check: Sign Off on Checkout Scripts, Logs and Results | 30min | 2006-05-15 15:35 | 2006-05-15 16:05 | 166 | 0d |  |
| 168 | 1.10 | **Install and Perform tests on FE B Side** | 0.67d | 2006-05-15 16:05 | 2006-05-16 13:25 | 149 | 0d |  |
| 169 | 1.10.1 | **Install FE B** | 0.38d | 2006-05-15 16:05 | 2006-05-16 10:05 | 161 | 0d |  |
| 170 |  | Configuration and starting processes | 1.5h | 2006-05-15 16:05 | 2006-05-16 08:35 | 167 | 0d |  |
| 171 |  | ITG Checkout script (W_MAIN and ONE_MAIN Session) | 40min | 2006-05-16 08:35 | 2006-05-16 09:15 | 170 | 0d |  |
| 172 |  | Backup and Reporting | 20min | 2006-05-16 09:15 | 2006-05-16 09:35 | 171 | 0d |  |
| 173 |  | Check: Sign Off on Checkout Scripts, Logs and Results | 30min | 2006-05-16 09:35 | 2006-05-16 10:05 | 172 | 0d |  |
| 174 | 1.10.2 | **FE Failover - New to New** | 0.29d | 2006-05-16 10:05 | 2006-05-16 13:25 | 169 | 0d |  |
| 175 |  | initial cleanup and driver setup | 20min | 2006-05-16 10:05 | 2006-05-16 10:25 | 173 | 0d |  |
| 176 |  | Quote and order traffic | 20min | 2006-05-16 10:25 | 2006-05-16 10:45 | 175 | 0d |  |
| 177 |  | stop A side FE processes and see effect on traffic | 10min | 2006-05-16 10:45 | 2006-05-16 10:55 | 176 | 0d |  |
| 178 |  | ITG Checkout with only Old FE processes up | 40min | 2006-05-16 10:55 | 2006-05-16 11:35 | 177 | 0d |  |
| 179 |  | Log backup | 20min | 2006-05-16 11:35 | 2006-05-16 11:55 | 178 | 0d |  |
| 180 |  | Check: Sign Off on Checkout Scripts, Logs and Results | 30min | 2006-05-16 11:55 | 2006-05-16 13:25 | 179 | 0d |  |
| 181 | 1.42 | **Server Side Full Cleanup after All Server upgrades.** | 0.6d | 2006-05-16 13:25 | 2006-05-17 09:15 | 168 | 0d |  |
| 182 |  | Time server full startup after cleanup (See Server Startup Timing Page) | 4h | 2006-05-16 13:25 | 2006-05-17 08:25 | 180 | 0d |  |
| 183 |  | Backup for server Timings | 20min | 2006-05-17 08:25 | 2006-05-17 08:45 | 182 | 0d |  |
| 184 |  | Check: Sign Off on Logs and Results | 30min | 2006-05-17 08:45 | 2006-05-17 09:15 | 183 | 0d |  |
| 185 | 1.12 | **Check: Overall Verification** | 0d | 2006-05-17 08:45 | 2006-05-17 08:45 |  | 0.06d |  |
| 186 |  | All Results Signed Off | 0h | 2006-05-17 08:45 | 2006-05-17 08:45 | 183 | 0.06d |  |
| 187 |  | All Tests Completed | 0h | 2006-05-17 08:45 | 2006-05-17 08:45 | 183 | 0.06d |  |
| 188 |  | Results approved by Paul and Respective Groups | 0h | 2006-05-17 08:45 | 2006-05-17 08:45 | 183 | 0.06d |  |

## Version 2 (saved 2006-05-10, file Infra_CRIT.mpp)

Last finish 2006-05-17 → 2006-05-15 (-2d). Complete tasks 0 → 100.

Changed:

| ID | Task | Start | Finish | Duration | Complete | Total float |
| --- | --- | --- | --- | --- | --- | --- |
| 1 | **Rollout Task** | 2006-05-02 08:00 A | 2006-05-17 09:15 → 2006-05-15 15:50 (-2d) | 11.16d → 9.85d | 0% → 63% |  |
| 2 | **Pre-Rollout Verification/Changes [If required]** | 2006-05-02 08:00 A | 2006-05-02 08:00 A |  | 0% → 100% | 0.23d → none |
| 3 | Database changes | 2006-05-02 08:00 A | 2006-05-02 08:00 A |  | 0% → 100% | 0.23d → none |
| 4 | Extent Map changes | 2006-05-02 08:00 A | 2006-05-02 08:00 A |  | 0% → 100% | 0.23d → none |
| 5 | Version label verification on all boxes | 2006-05-02 08:00 A | 2006-05-02 08:00 A |  | 0% → 100% | 0.23d → none |
| 6 | Check: Tier Lead has verified information and obtained a sign off | 2006-05-02 08:00 A | 2006-05-02 08:00 A |  | 0% → 100% | 0.23d → none |
| 7 | **Install and perform tests on GC A Side** | 2006-05-02 08:00 A | 2006-05-03 14:00 A |  | 0% → 100% | 0.23d → none |
| 8 | **Install GC "A" side with new release – load idl, create EC** | 2006-05-02 08:00 A | 2006-05-02 15:50 A |  | 0% → 100% | 0.23d → none |
| 9 | Generate XML, build Localrep, load All IFR and other Installation steps. | 2006-05-02 08:00 A | 2006-05-02 10:00 A |  | 0% → 100% | 0.23d → none |
| 10 | Server Side Full Cleanup | 2006-05-02 10:00 A | 2006-05-02 14:00 A |  | 0% → 100% | 0.23d → none |
| 11 | Time server full startup after cleanup (See Server Startup Timing Page) | 2006-05-02 14:00 A | 2006-05-02 15:00 A |  | 0% → 100% | 0.23d → none |
| 12 | Backup for server Timings | 2006-05-02 15:00 A | 2006-05-02 15:20 A |  | 0% → 100% | 0.23d → none |
| 13 | Check: Sign off on Server Timings | 2006-05-02 15:20 A | 2006-05-02 15:50 A |  | 0% → 100% | 0.23d → none |
| 14 | **ITG Checkout Script** | 2006-05-02 15:50 A | 2006-05-03 08:20 A |  | 0% → 100% | 0.23d → none |
| 15 | ITG Checkout for W_MAIN , ONE_MAIN session s | 2006-05-02 15:50 A | 2006-05-02 16:30 A |  | 0% → 100% | 0.23d → none |
| 16 | Backup for ITG Checkout (endOfPerformanceReport) | 2006-05-02 16:30 A | 2006-05-02 16:50 A |  | 0% → 100% | 0.23d → none |
| 17 | Check: Sign off on Checkout Scripts | 2006-05-02 16:50 A | 2006-05-03 08:20 A |  | 0% → 100% | 0.23d → none |
| 18 | **User Login test1** | 2006-05-03 08:20 A | 2006-05-03 09:55 A |  | 0% → 100% | 0.23d → none |
| 19 | Initial setup like bouncing Global Server and SACAS. | 2006-05-03 08:20 A | 2006-05-03 08:35 A |  | 0% → 100% | 0.23d → none |
| 20 | Login Test for 1 and 2 Users | 2006-05-03 08:35 A | 2006-05-03 08:50 A |  | 0% → 100% | 0.23d → none |
| 21 | Product State Update to CLOSE on VLO (visually timing Single class CLOSED with SAGUI) | 2006-05-03 08:50 A | 2006-05-03 09:05 A |  | 0% → 100% | 0.23d → none |
| 22 | Backup for Login User Test and Product state Update through SAGUI | 2006-05-03 09:05 A | 2006-05-03 09:25 A |  | 0% → 100% | 0.23d → none |
| 23 | Check: Sign Off on Logs and Results | 2006-05-03 09:25 A | 2006-05-03 09:55 A |  | 0% → 100% | 0.23d → none |
| 24 | **GC failover to "B" side** | 2006-05-03 09:55 A | 2006-05-03 14:00 A |  | 0% → 100% | 0.23d → none |
| 25 | Initial setup for test Drivers (starting processes on GC Slave.) | 2006-05-03 09:55 A | 2006-05-03 10:25 A |  | 0% → 100% | 0.23d → none |
| 26 | Quote/Order BC20 Hybrid and ONE_MAIN traffic going before/during/after failover. Should not hang to verify no Global Dependency introduced. Test Execution | 2006-05-03 10:25 A | 2006-05-03 11:10 A |  | 0% → 100% | 0.23d → none |
| 27 | ITG Checkout script (for W_MAIN and ONE_MAIN Session) | 2006-05-03 11:10 A | 2006-05-03 11:40 A |  | 0% → 100% | 0.23d → none |
| 28 | Backup for Failover and ITG Checkout | 2006-05-03 11:40 A | 2006-05-03 12:00 A |  | 0% → 100% | 0.23d → none |
| 29 | Generate Report for Failover Timings for all GC Processes (taking time from log files) | 2006-05-03 13:00 A | 2006-05-03 13:30 A |  | 0% → 100% | 0.23d → none |
| 30 | Check: Sign Off on Checkout Scripts, Logs and Results | 2006-05-03 13:30 A | 2006-05-03 14:00 A |  | 0% → 100% | 0.23d → none |
| 31 | **Install and perform tests on GC B Side** | 2006-05-03 14:00 A | 2006-05-04 09:30 A |  | 0% → 100% | 0.23d → none |
| 32 | **Install GC "B" side** | 2006-05-03 14:00 A | 2006-05-04 09:30 A |  | 0% → 100% | 0.23d → none |
| 33 | Cleanup, createCurrentBusinessDay,starting all GC Processes on B side | 2006-05-03 14:00 A | 2006-05-03 17:00 A |  | 0% → 100% | 0.23d → none |
| 34 | ITG Checkout script (for W_MAIN and ONE_MAIN Session) | 2006-05-04 08:00 A | 2006-05-04 08:40 A |  | 0% → 100% | 0.23d → none |
| 35 | Backup for GC Upgrade and ITG Checkout | 2006-05-04 08:40 A | 2006-05-04 09:00 A |  | 0% → 100% | 0.23d → none |
| 36 | Check: Sign Off on Checkout Scripts, Logs and Results | 2006-05-04 09:00 A | 2006-05-04 09:30 A |  | 0% → 100% | 0.23d → none |
| 37 | **Install and Perform Tests on Hybrid BC A Side** | 2006-05-04 09:30 A | 2006-05-09 10:25 → 2006-05-05 17:00 (-4d) | 3.11d → 1.81d | 0% → 91% | 0d → 5.85d |
| 38 | **Install Hybrid BC (A)** | 2006-05-04 09:30 A | 2006-05-04 13:10 A |  | 0% → 100% | 0.23d → none |
| 39 | Configuration and starting processes | 2006-05-04 09:30 A | 2006-05-04 11:00 A |  | 0% → 100% | 0.23d → none |
| 40 | ITG Checkout script (W_MAIN Session) | 2006-05-04 11:00 A | 2006-05-04 11:20 A |  | 0% → 100% | 0.23d → none |
| 41 | Backup and Reporting | 2006-05-04 11:20 A | 2006-05-04 11:40 A |  | 0% → 100% | 0.23d → none |
| 42 | Check: Sign Off on Checkout Scripts, Logs and Results | 2006-05-04 11:40 A | 2006-05-04 13:10 A |  | 0% → 100% | 0.23d → none |
| 44 | **Global Dependency Test** | 2006-05-05 08:00 A | 2006-05-05 09:20 A |  | 0% → 100% | 0d → none |
| 45 | Test Execution | 2006-05-05 08:00 A | 2006-05-05 08:30 A |  | 0% → 100% | 0d → none |
| 46 | Log Backup and Reporting | 2006-05-05 08:30 A | 2006-05-05 08:50 A |  | 0% → 100% | 0d → none |
| 47 | Check:Log and Results verification | 2006-05-05 08:50 A | 2006-05-05 09:20 A |  | 0% → 100% | 0d → none |
| 48 | **Mult Class Quote Step-up with Quotes only (Scenario 0)** | 2006-05-05 09:20 A | 2006-05-05 11:55 A |  | 0% → 100% | 0d → none |
| 49 | BC Cleanup, Initial Driver Setup, | 2006-05-05 09:20 A | 2006-05-05 09:40 A |  | 0% → 100% | 0d → none |
| 50 | Test Execution for No BOTR | 2006-05-05 09:40 A | 2006-05-05 10:40 A |  | 0% → 100% | 0d → none |
| 51 | endOfPerformance and Backup | 2006-05-05 10:40 A | 2006-05-05 11:10 A |  | 0% → 100% | 0d → none |
| 52 | Reporting through KR site | 2006-05-05 11:10 A | 2006-05-05 11:25 A |  | 0% → 100% | 0d → none |
| 53 | Check: Sign Off on Logs and Results | 2006-05-05 11:25 A | 2006-05-05 11:55 A |  | 0% → 100% | 0d → none |
| 54 | **Hybrid test scenario 5 (Product State Change Test)** | 2006-05-05 11:55 A | 2006-05-05 14:55 A |  | 0% → 100% | 0d → none |
| 55 | BC Cleanup, Initial Driver Setup, | 2006-05-05 11:55 A | 2006-05-05 13:15 A |  | 0% → 100% | 0d → none |
| 56 | Test Execution - Global Server Bounce | 2006-05-05 13:15 A | 2006-05-05 13:55 A |  | 0% → 100% | 0d → none |
| 57 | Monitor and Backup logs | 2006-05-05 13:55 A | 2006-05-05 14:15 A |  | 0% → 100% | 0d → none |
| 58 | Reporting through KR site | 2006-05-05 14:15 A | 2006-05-05 14:25 A |  | 0% → 100% | 0d → none |
| 59 | Check: Sign Off on Logs and Results | 2006-05-05 14:25 A | 2006-05-05 14:55 A |  | 0% → 100% | 0d → none |
| 60 | **Multi-class Quote step-up test with BOTR [Scenario 3]** | 2006-05-05 14:55 A | 2006-05-08 09:30 → 2006-05-05 17:00 A (-3d) | 0.45d → 0.26d | 0% → 100% | 0d → none |
| 61 | BC Cleanup, Initial Driver Setup, | 2006-05-05 14:55 A | 2006-05-05 15:15 A |  | 0% → 100% | 0d → none |
| 62 | Test Execution for No BOTR | 2006-05-05 15:15 A | 2006-05-05 16:15 A |  | 0% → 100% | 0d → none |
| 63 | BOTR from 4000 to 16000 | 2006-05-05 16:15 A | 2006-05-05 16:45 A |  | 0% → 100% | 0d → none |
| 64 | endOfPerformance and Backup | 2006-05-05 16:45 A | 2006-05-08 08:30 → 2006-05-05 17:00 A (-3d) | 45min → 15min | 0% → 100% | 0d → none |
| 65 | Reporting through KR site | 2006-05-08 08:30 → 2006-05-05 17:00 A (-3d) | 2006-05-08 09:00 → 2006-05-05 17:00 A (-3d) | 30min → 0min | 0% → 100% | 0d → none |
| 66 | Check: Sign Off on Logs and Results | 2006-05-08 09:00 → 2006-05-05 17:00 A (-3d) | 2006-05-08 09:30 → 2006-05-05 17:00 A (-3d) | 30min → 0min | 0% → 100% | 0d → none |
| 67 | **Single-class Quote step-up test with BOTR [Scenario 1]** | 2006-05-08 09:30 → 2006-05-05 08:00 A (-3d) | 2006-05-08 13:45 → 2006-05-05 10:00 A (-3d) | 0.41d → 0.25d | 0% → 100% | 0d → none |
| 68 | BC Cleanup, Initial Driver Setup, | 2006-05-08 09:30 → 2006-05-05 08:00 A (-3d) | 2006-05-08 09:50 → 2006-05-05 10:00 A (-3d) | 20min → 120min | 0% → 100% | 0d → none |
| 69 | Test Execution for No BOTR | 2006-05-08 09:50 → 2006-05-05 08:00 A (-3d) | 2006-05-08 10:50 → 2006-05-05 09:00 A (-3d) |  | 0% → 100% | 0d → none |
| 70 | BOTR 16000 | 2006-05-08 10:50 → 2006-05-05 08:00 A (-3d) | 2006-05-08 11:00 → 2006-05-05 08:10 A (-3d) |  | 0% → 100% | 0d → none |
| 71 | endOfPerformance and Backup | 2006-05-08 11:00 → 2006-05-05 08:00 A (-3d) | 2006-05-08 11:45 → 2006-05-05 08:45 A (-3d) |  | 0% → 100% | 0d → none |

| ID | Task | Start | Finish | Complete | Total float | Other |
| --- | --- | --- | --- | --- | --- | --- |
| 72 | Reporting through KR site | 2006-05-08 11:45 → 2006-05-05 08:00 A (-3d) | 2006-05-08 13:15 → 2006-05-05 08:30 A (-3d) | 0% → 100% | 0d → none |  |
| 73 | Check: Sign Off On Logs and Results | 2006-05-08 13:15 → 2006-05-05 08:00 A (-3d) | 2006-05-08 13:45 → 2006-05-05 08:30 A (-3d) | 0% → 100% | 0d → none |  |
| 74 | **Multi-class Order step-up test [Scenario 4]** | 2006-05-08 13:45 → 2006-05-05 10:00 A (-3d) | 2006-05-08 15:40 → 2006-05-05 11:55 A (-3d) | 0% → 100% | 0d → none |  |
| 75 | BC Cleanup, Initial Driver Setup, | 2006-05-08 13:45 → 2006-05-05 10:00 A (-3d) | 2006-05-08 14:05 → 2006-05-05 10:20 A (-3d) | 0% → 100% | 0d → none |  |
| 76 | Test Execution for No BOTR | 2006-05-08 14:05 → 2006-05-05 10:20 A (-3d) | 2006-05-08 15:05 → 2006-05-05 11:20 A (-3d) | 0% → 100% | 0d → none |  |
| 77 | endOfPerformance and Backup | 2006-05-08 15:05 → 2006-05-05 11:20 A (-3d) | 2006-05-08 15:25 → 2006-05-05 11:40 A (-3d) | 0% → 100% | 0d → none |  |
| 78 | Reporting through KR site | 2006-05-08 15:25 → 2006-05-05 11:40 A (-3d) | 2006-05-08 15:40 → 2006-05-05 11:55 A (-3d) | 0% → 100% | 0d → none |  |
| 79 | Check: Sign Off on Logs and Results | 2006-05-08 15:40 → 2006-05-05 11:55 A (-3d) | 2006-05-08 15:40 → 2006-05-05 11:55 A (-3d) | 0% → 100% | 0d → none |  |
| 80 | **Hybrid BC failover (new release to old release)** | 2006-05-08 15:40 → 2006-05-05 11:55 A (-3d) | 2006-05-09 10:25 → 2006-05-05 16:40 A (-4d) | 0% → 100% | 0d → none |  |
| 81 | BC Cleanup start A Side as Master | 2006-05-08 15:40 → 2006-05-05 11:55 A (-3d) | 2006-05-08 16:00 → 2006-05-05 13:15 A (-3d) | 0% → 100% | 0d → none |  |
| 82 | Initial setup for test Drivers (starting processes on BC Slave.) | 2006-05-08 16:00 → 2006-05-05 13:15 A (-3d) | 2006-05-08 16:25 → 2006-05-05 13:40 A (-3d) | 0% → 100% | 0d → none |  |
| 83 | Quote/Order BC20 Hybrid traffic going before/during/after failover. Test Execution | 2006-05-08 16:25 → 2006-05-05 13:40 A (-3d) | 2006-05-09 08:25 → 2006-05-05 14:40 A (-4d) | 0% → 100% | 0d → none |  |
| 84 | ITG Checkout script (for W_MAIN and ONE_MAIN Session) | 2006-05-09 08:25 → 2006-05-05 14:40 A (-4d) | 2006-05-09 09:05 → 2006-05-05 15:20 A (-4d) | 0% → 100% | 0d → none |  |
| 85 | Backup for Failover and ITG Checkout | 2006-05-09 09:05 → 2006-05-05 15:20 A (-4d) | 2006-05-09 09:25 → 2006-05-05 15:40 A (-4d) | 0% → 100% | 0d → none |  |
| 86 | Generate Report for Failover Timings for all BC Processes (taking time from log files) | 2006-05-09 09:25 → 2006-05-05 15:40 A (-4d) | 2006-05-09 09:55 → 2006-05-05 16:10 A (-4d) | 0% → 100% | 0d → none |  |
| 87 | Check: Sign Off on Checkout Scripts, Logs and Results | 2006-05-09 09:55 → 2006-05-05 16:10 A (-4d) | 2006-05-09 10:25 → 2006-05-05 16:40 A (-4d) | 0% → 100% | 0d → none |  |
| 88 | **Install and Perform Failoveron Hybrid BC B Side** | 2006-05-09 10:25 → 2006-05-08 08:00 A (-1d) | 2006-05-10 08:30 → 2006-05-08 15:05 A (-2d) | 0% → 100% | 0d → none |  |
| 89 | **Install Hybrid BC "B" side** | 2006-05-09 10:25 → 2006-05-08 08:00 A (-1d) | 2006-05-09 14:25 → 2006-05-08 11:00 A (-1d) | 0% → 100% | 0d → none |  |
| 90 | Cleanup | 2006-05-09 10:25 → 2006-05-08 08:00 A (-1d) | 2006-05-09 10:45 → 2006-05-08 08:20 A (-1d) | 0% → 100% | 0d → none |  |
| 91 | Configuration and starting processes | 2006-05-09 10:45 → 2006-05-08 08:20 A (-1d) | 2006-05-09 13:15 → 2006-05-08 09:50 A (-1d) | 0% → 100% | 0d → none |  |
| 92 | ITG Checkout script (W_MAIN Session) | 2006-05-09 13:15 → 2006-05-08 09:50 A (-1d) | 2006-05-09 13:35 → 2006-05-08 10:10 A (-1d) | 0% → 100% | 0d → none |  |
| 93 | Backup and Reporting | 2006-05-09 13:35 → 2006-05-08 10:10 A (-1d) | 2006-05-09 13:55 → 2006-05-08 10:30 A (-1d) | 0% → 100% | 0d → none |  |
| 94 | Check: Sign Off on Checkout Scripts, Logs and Results | 2006-05-09 13:55 → 2006-05-08 10:30 A (-1d) | 2006-05-09 14:25 → 2006-05-08 11:00 A (-1d) | 0% → 100% | 0d → none |  |
| 95 | **Hybrid BC failover (new release to new release)** | 2006-05-09 14:25 → 2006-05-08 11:00 A (-1d) | 2006-05-10 08:30 → 2006-05-08 15:05 A (-2d) | 0% → 100% | 0d → none |  |
| 96 | Initial setup for test Drivers (starting processes on BC Slave.) | 2006-05-09 14:25 → 2006-05-08 11:00 A (-1d) | 2006-05-09 14:50 → 2006-05-08 11:25 A (-1d) | 0% → 100% | 0d → none |  |
| 97 | Quote/Order BC20 Hybrid traffic going before/during/after failover. Test Execution | 2006-05-09 14:50 → 2006-05-08 11:25 A (-1d) | 2006-05-09 15:50 → 2006-05-08 13:25 A (-1d) | 0% → 100% | 0d → none |  |
| 98 | ITG Checkout script (for W_MAIN Session) | 2006-05-09 15:50 → 2006-05-08 13:25 A (-1d) | 2006-05-09 16:10 → 2006-05-08 13:45 A (-1d) | 0% → 100% | 0d → none |  |
| 99 | Backup for Failover and ITG Checkout | 2006-05-09 16:10 → 2006-05-08 13:45 A (-1d) | 2006-05-09 16:30 → 2006-05-08 14:05 A (-1d) | 0% → 100% | 0d → none |  |
| 100 | Generate Report for Failover Timings for all BC Processes (taking time from log files) | 2006-05-09 16:30 → 2006-05-08 14:05 A (-1d) | 2006-05-09 17:00 → 2006-05-08 14:35 A (-1d) | 0% → 100% | 0d → none |  |
| 101 | Check: Sign Off on Checkout Scripts,Logs and Results | 2006-05-10 08:00 → 2006-05-08 14:35 A (-2d) | 2006-05-10 08:30 → 2006-05-08 15:05 A (-2d) | 0% → 100% | 0d → none |  |
| 102 | **Install and Perform Tests on ONE_MAIN BC A Side** | 2006-05-10 08:30 → 2006-05-08 15:05 A (-2d) | 2006-05-11 11:05 → 2006-05-10 08:40 A (-1d) | 0% → 100% | 0d → none |  |
| 103 | **Install ONE_MAIN BC (A)** | 2006-05-10 08:30 → 2006-05-08 15:05 A (-2d) | 2006-05-10 11:10 → 2006-05-09 08:45 A (-1d) | 0% → 100% | 0d → none |  |
| 104 | Configuration and starting processes | 2006-05-10 08:30 → 2006-05-08 15:05 A (-2d) | 2006-05-10 10:00 → 2006-05-08 16:35 A (-2d) | 0% → 100% | 0d → none |  |
| 105 | ITG Checkout script (ONE_MAIN Session) | 2006-05-10 10:00 → 2006-05-08 16:35 A (-2d) | 2006-05-10 10:20 → 2006-05-08 16:55 A (-2d) | 0% → 100% | 0d → none |  |
| 106 | Backup and Reporting | 2006-05-10 10:20 → 2006-05-08 16:55 A (-2d) | 2006-05-10 10:40 → 2006-05-09 08:15 A (-1d) | 0% → 100% | 0d → none |  |
| 107 | Check: Sign Off on Checkout Scripts, Logs and Results | 2006-05-10 10:40 → 2006-05-09 08:15 A (-1d) | 2006-05-10 11:10 → 2006-05-09 08:45 A (-1d) | 0% → 100% | 0d → none |  |
| 108 | **Multi-class Order step-up test for ONE_MAIN [Scenario 2]** | 2006-05-10 11:10 → 2006-05-09 08:45 A (-1d) | 2006-05-10 14:30 → 2006-05-09 11:05 A (-1d) | 0% → 100% | 0d → none |  |
| 109 | BC Cleanup, Initial Driver Setup, | 2006-05-10 11:10 → 2006-05-09 08:45 A (-1d) | 2006-05-10 11:30 → 2006-05-09 09:05 A (-1d) | 0% → 100% | 0d → none |  |
| 110 | Test Execution for No BOTR | 2006-05-10 11:30 → 2006-05-09 09:05 A (-1d) | 2006-05-10 13:30 → 2006-05-09 10:05 A (-1d) | 0% → 100% | 0d → none |  |
| 111 | endOfPerformance and Backup | 2006-05-10 13:30 → 2006-05-09 10:05 A (-1d) | 2006-05-10 13:45 → 2006-05-09 10:20 A (-1d) | 0% → 100% | 0d → none |  |
| 112 | Reporting through KR site | 2006-05-10 13:45 → 2006-05-09 10:20 A (-1d) | 2006-05-10 14:00 → 2006-05-09 10:35 A (-1d) | 0% → 100% | 0d → none |  |
| 113 | Check: Sign Off on Logs and Results | 2006-05-10 14:00 → 2006-05-09 10:35 A (-1d) | 2006-05-10 14:30 → 2006-05-09 11:05 A (-1d) | 0% → 100% | 0d → none |  |
| 114 | **Multi-class Quote step-up test [Scenario 1]** | 2006-05-10 14:30 → 2006-05-09 11:05 A (-1d) | 2006-05-11 08:10 → 2006-05-09 14:45 A (-2d) | 0% → 100% | 0d → none |  |
| 115 | BC Cleanup, Initial Driver Setup, | 2006-05-10 14:30 → 2006-05-09 11:05 A (-1d) | 2006-05-10 14:50 → 2006-05-09 11:25 A (-1d) | 0% → 100% | 0d → none |  |
| 116 | Test Execution for No BOTR | 2006-05-10 14:50 → 2006-05-09 11:25 A (-1d) | 2006-05-10 15:50 → 2006-05-09 13:25 A (-1d) | 0% → 100% | 0d → none |  |
| 117 | endOfPerformance and Backup | 2006-05-10 15:50 → 2006-05-09 13:25 A (-1d) | 2006-05-10 16:20 → 2006-05-09 13:55 A (-1d) | 0% → 100% | 0d → none |  |
| 118 | Reporting through KR site | 2006-05-10 16:20 → 2006-05-09 13:55 A (-1d) | 2006-05-10 16:40 → 2006-05-09 14:15 A (-1d) | 0% → 100% | 0d → none |  |
| 119 | Check: Sign Off on Logs and Results | 2006-05-10 16:40 → 2006-05-09 14:15 A (-1d) | 2006-05-11 08:10 → 2006-05-09 14:45 A (-2d) | 0% → 100% | 0d → none |  |
| 120 | **Failover ONE_MAIN BC (New to Old)** | 2006-05-11 08:10 → 2006-05-09 14:45 A (-2d) | 2006-05-11 11:05 → 2006-05-10 08:40 A (-1d) | 0% → 100% | 0d → none | was named Failover ONE_MAIN BC (Old to New) |
| 121 | Cleanup | 2006-05-11 08:10 → 2006-05-09 14:45 A (-2d) | 2006-05-11 08:30 → 2006-05-09 15:05 A (-2d) | 0% → 100% | 0d → none |  |
| 122 | Initial setup for test Drivers (starting processes on BC Slave.) | 2006-05-11 08:30 → 2006-05-09 15:05 A (-2d) | 2006-05-11 08:55 → 2006-05-09 15:30 A (-2d) | 0% → 100% | 0d → none |  |
| 123 | Quote/Order ONE_MAIN traffic going before/during/after failover. Test Execution | 2006-05-11 08:55 → 2006-05-09 15:30 A (-2d) | 2006-05-11 09:25 → 2006-05-09 16:00 A (-2d) | 0% → 100% | 0d → none |  |
| 124 | ITG Checkout script (for ONE_MAIN Session) | 2006-05-11 09:25 → 2006-05-09 16:00 A (-2d) | 2006-05-11 09:45 → 2006-05-09 16:20 A (-2d) | 0% → 100% | 0d → none |  |
| 125 | Backup for Failover and ITG Checkout | 2006-05-11 09:45 → 2006-05-09 16:20 A (-2d) | 2006-05-11 10:05 → 2006-05-09 16:40 A (-2d) | 0% → 100% | 0d → none |  |
| 126 | Generate Report for Failover Timings for all BC Processes (taking time from log files) | 2006-05-11 10:05 → 2006-05-09 16:40 A (-2d) | 2006-05-11 10:35 → 2006-05-10 08:10 A (-1d) | 0% → 100% | 0d → none |  |
| 127 | Check: Sign Off on Checkout Scripts,Logs and Results | 2006-05-11 10:35 → 2006-05-10 08:10 A (-1d) | 2006-05-11 11:05 → 2006-05-10 08:40 A (-1d) | 0% → 100% | 0d → none |  |
| 128 | **Install and Perform failover on ONE_MAIN BC B Side** | 2006-05-11 11:05 → 2006-05-10 08:40 (-1d) | 2006-05-12 08:40 → 2006-05-10 15:15 (-2d) |  |  |  |
| 129 | **Install ONE_MAIN BC (B)** | 2006-05-11 11:05 → 2006-05-10 08:40 (-1d) | 2006-05-11 14:45 → 2006-05-10 11:20 (-1d) |  |  |  |
| 130 | Configuration and starting processes | 2006-05-11 11:05 → 2006-05-10 08:40 (-1d) | 2006-05-11 13:35 → 2006-05-10 10:10 (-1d) |  |  |  |
| 131 | ITG Checkout script ( ONE_MAIN Session) | 2006-05-11 13:35 → 2006-05-10 10:10 (-1d) | 2006-05-11 13:55 → 2006-05-10 10:30 (-1d) |  |  |  |
| 132 | Backup and Reporting | 2006-05-11 13:55 → 2006-05-10 10:30 (-1d) | 2006-05-11 14:15 → 2006-05-10 10:50 (-1d) |  |  |  |
| 133 | Check: Sign Off on Checkout Scripts, Logs and Results | 2006-05-11 14:15 → 2006-05-10 10:50 (-1d) | 2006-05-11 14:45 → 2006-05-10 11:20 (-1d) |  |  |  |
| 134 | **Failover ONE_MAIN BC (New to New)** | 2006-05-11 14:45 → 2006-05-10 11:20 (-1d) | 2006-05-12 08:40 → 2006-05-10 15:15 (-2d) |  |  |  |
| 135 | Cleanup | 2006-05-11 14:45 → 2006-05-10 11:20 (-1d) | 2006-05-11 15:05 → 2006-05-10 11:40 (-1d) |  |  |  |
| 136 | Initial setup for test Drivers (starting processes on BC Slave.) | 2006-05-11 15:05 → 2006-05-10 11:40 (-1d) | 2006-05-11 15:30 → 2006-05-10 13:05 (-1d) |  |  |  |
| 137 | Quote/Order ONE_MAIN traffic going before/during/after failover. Test Execution | 2006-05-11 15:30 → 2006-05-10 13:05 (-1d) | 2006-05-11 16:00 → 2006-05-10 13:35 (-1d) |  |  |  |
| 138 | ITG Checkout script (for ONE_MAIN Session) | 2006-05-11 16:00 → 2006-05-10 13:35 (-1d) | 2006-05-11 16:20 → 2006-05-10 13:55 (-1d) |  |  |  |
| 139 | Backup for Failover and ITG Checkout | 2006-05-11 16:20 → 2006-05-10 13:55 (-1d) | 2006-05-11 16:40 → 2006-05-10 14:15 (-1d) |  |  |  |
| 140 | Generate Report for Failover Timings for all BC Processes (taking time from log files) | 2006-05-11 16:40 → 2006-05-10 14:15 (-1d) | 2006-05-12 08:10 → 2006-05-10 14:45 (-2d) |  |  |  |
| 141 | Check: Sign Off on Checkout Scripts,Logs and Results | 2006-05-12 08:10 → 2006-05-10 14:45 (-2d) | 2006-05-12 08:40 → 2006-05-10 15:15 (-2d) |  |  |  |

| ID | Task | Start | Finish |
| --- | --- | --- | --- |
| 142 | **4 Hour Endurance Test** | 2006-05-12 08:40 → 2006-05-10 15:15 (-2d) | 2006-05-12 16:10 → 2006-05-11 13:45 (-1d) |
| 143 | Cleanup for W_MAIN and ONE_MAIN BC | 2006-05-12 08:40 → 2006-05-10 15:15 (-2d) | 2006-05-12 09:00 → 2006-05-10 15:35 (-2d) |
| 144 | Driver setup | 2006-05-12 09:00 → 2006-05-10 15:35 (-2d) | 2006-05-12 09:20 → 2006-05-10 15:55 (-2d) |
| 145 | CAS bounce | 2006-05-12 09:20 → 2006-05-10 15:55 (-2d) | 2006-05-12 09:40 → 2006-05-10 16:15 (-2d) |
| 146 | 4 hour Sanity Check | 2006-05-12 09:40 → 2006-05-10 16:15 (-2d) | 2006-05-12 14:40 → 2006-05-11 11:15 (-1d) |
| 147 | endOfPerformance and Backup and Reporting | 2006-05-12 14:40 → 2006-05-11 11:15 (-1d) | 2006-05-12 15:40 → 2006-05-11 13:15 (-1d) |
| 148 | Check: Sign Off on Logs and Results | 2006-05-12 15:40 → 2006-05-11 13:15 (-1d) | 2006-05-12 16:10 → 2006-05-11 13:45 (-1d) |
| 149 | **Install and Perform tests on FE A Side** | 2006-05-12 16:10 → 2006-05-11 13:45 (-1d) | 2006-05-15 16:05 → 2006-05-12 13:40 (-3d) |
| 150 | **Install FE A** | 2006-05-12 16:10 → 2006-05-11 13:45 (-1d) | 2006-05-15 10:10 → 2006-05-11 16:45 (-4d) |
| 151 | Configuration and starting processes | 2006-05-12 16:10 → 2006-05-11 13:45 (-1d) | 2006-05-15 08:40 → 2006-05-11 15:15 (-4d) |
| 152 | ITG Checkout script (W_MAIN and ONE_MAIN Session) | 2006-05-15 08:40 → 2006-05-11 15:15 (-4d) | 2006-05-15 09:20 → 2006-05-11 15:55 (-4d) |
| 153 | Backup and Reporting | 2006-05-15 09:20 → 2006-05-11 15:55 (-4d) | 2006-05-15 09:40 → 2006-05-11 16:15 (-4d) |
| 154 | Check: Sign Off on Checkout Scripts, Logs and Results | 2006-05-15 09:40 → 2006-05-11 16:15 (-4d) | 2006-05-15 10:10 → 2006-05-11 16:45 (-4d) |
| 155 | **Mult Class Quote Step-up with Quotes only (Scenario 0)** | 2006-05-15 10:10 → 2006-05-11 16:45 (-4d) | 2006-05-15 13:45 → 2006-05-12 10:20 (-3d) |
| 156 | BC Cleanup, Initial Driver Setup, | 2006-05-15 10:10 → 2006-05-11 16:45 (-4d) | 2006-05-15 10:30 → 2006-05-12 08:05 (-3d) |
| 157 | Test Execution for No BOTR | 2006-05-15 10:30 → 2006-05-12 08:05 (-3d) | 2006-05-15 11:30 → 2006-05-12 09:05 (-3d) |
| 158 | endOfPerformance and Backup | 2006-05-15 11:30 → 2006-05-12 09:05 (-3d) | 2006-05-15 12:00 → 2006-05-12 09:35 (-3d) |
| 159 | Reporting through KR site | 2006-05-15 13:00 → 2006-05-12 09:35 (-3d) | 2006-05-15 13:15 → 2006-05-12 09:50 (-3d) |
| 160 | Check: Sign Off on Logs and Results | 2006-05-15 13:15 → 2006-05-12 09:50 (-3d) | 2006-05-15 13:45 → 2006-05-12 10:20 (-3d) |
| 161 | **FE Failover - New to Old** | 2006-05-15 13:45 → 2006-05-12 10:20 (-3d) | 2006-05-15 16:05 → 2006-05-12 13:40 (-3d) |
| 162 | initial cleanup and driver setup | 2006-05-15 13:45 → 2006-05-12 10:20 (-3d) | 2006-05-15 14:05 → 2006-05-12 10:40 (-3d) |
| 163 | Quote and order traffic | 2006-05-15 14:05 → 2006-05-12 10:40 (-3d) | 2006-05-15 14:25 → 2006-05-12 11:00 (-3d) |
| 164 | stop A side FE processes and see effect on traffic | 2006-05-15 14:25 → 2006-05-12 11:00 (-3d) | 2006-05-15 14:35 → 2006-05-12 11:10 (-3d) |
| 165 | ITG Checkout with only Old FE processes up | 2006-05-15 14:35 → 2006-05-12 11:10 (-3d) | 2006-05-15 15:15 → 2006-05-12 11:50 (-3d) |
| 166 | Log backup | 2006-05-15 15:15 → 2006-05-12 11:50 (-3d) | 2006-05-15 15:35 → 2006-05-12 13:10 (-3d) |
| 167 | Check: Sign Off on Checkout Scripts, Logs and Results | 2006-05-15 15:35 → 2006-05-12 13:10 (-3d) | 2006-05-15 16:05 → 2006-05-12 13:40 (-3d) |
| 168 | **Install and Perform tests on FE B Side** | 2006-05-15 16:05 → 2006-05-12 13:40 (-3d) | 2006-05-16 13:25 → 2006-05-15 10:00 (-1d) |
| 169 | **Install FE B** | 2006-05-15 16:05 → 2006-05-12 13:40 (-3d) | 2006-05-16 10:05 → 2006-05-12 16:40 (-4d) |
| 170 | Configuration and starting processes | 2006-05-15 16:05 → 2006-05-12 13:40 (-3d) | 2006-05-16 08:35 → 2006-05-12 15:10 (-4d) |
| 171 | ITG Checkout script (W_MAIN and ONE_MAIN Session) | 2006-05-16 08:35 → 2006-05-12 15:10 (-4d) | 2006-05-16 09:15 → 2006-05-12 15:50 (-4d) |
| 172 | Backup and Reporting | 2006-05-16 09:15 → 2006-05-12 15:50 (-4d) | 2006-05-16 09:35 → 2006-05-12 16:10 (-4d) |
| 173 | Check: Sign Off on Checkout Scripts, Logs and Results | 2006-05-16 09:35 → 2006-05-12 16:10 (-4d) | 2006-05-16 10:05 → 2006-05-12 16:40 (-4d) |
| 174 | **FE Failover - New to New** | 2006-05-16 10:05 → 2006-05-12 16:40 (-4d) | 2006-05-16 13:25 → 2006-05-15 10:00 (-1d) |
| 175 | initial cleanup and driver setup | 2006-05-16 10:05 → 2006-05-12 16:40 (-4d) | 2006-05-16 10:25 → 2006-05-12 17:00 (-4d) |
| 176 | Quote and order traffic | 2006-05-16 10:25 → 2006-05-15 08:00 (-1d) | 2006-05-16 10:45 → 2006-05-15 08:20 (-1d) |
| 177 | stop A side FE processes and see effect on traffic | 2006-05-16 10:45 → 2006-05-15 08:20 (-1d) | 2006-05-16 10:55 → 2006-05-15 08:30 (-1d) |
| 178 | ITG Checkout with only Old FE processes up | 2006-05-16 10:55 → 2006-05-15 08:30 (-1d) | 2006-05-16 11:35 → 2006-05-15 09:10 (-1d) |
| 179 | Log backup | 2006-05-16 11:35 → 2006-05-15 09:10 (-1d) | 2006-05-16 11:55 → 2006-05-15 09:30 (-1d) |
| 180 | Check: Sign Off on Checkout Scripts, Logs and Results | 2006-05-16 11:55 → 2006-05-15 09:30 (-1d) | 2006-05-16 13:25 → 2006-05-15 10:00 (-1d) |
| 181 | **Server Side Full Cleanup after All Server upgrades.** | 2006-05-16 13:25 → 2006-05-15 10:00 (-1d) | 2006-05-17 09:15 → 2006-05-15 15:50 (-2d) |
| 182 | Time server full startup after cleanup (See Server Startup Timing Page) | 2006-05-16 13:25 → 2006-05-15 10:00 (-1d) | 2006-05-17 08:25 → 2006-05-15 15:00 (-2d) |
| 183 | Backup for server Timings | 2006-05-17 08:25 → 2006-05-15 15:00 (-2d) | 2006-05-17 08:45 → 2006-05-15 15:20 (-2d) |
| 184 | Check: Sign Off on Logs and Results | 2006-05-17 08:45 → 2006-05-15 15:20 (-2d) | 2006-05-17 09:15 → 2006-05-15 15:50 (-2d) |
| 185 | **Check: Overall Verification** | 2006-05-17 08:45 → 2006-05-15 15:20 (-2d) | 2006-05-17 08:45 → 2006-05-15 15:20 (-2d) |
| 186 | All Results Signed Off | 2006-05-17 08:45 → 2006-05-15 15:20 (-2d) | 2006-05-17 08:45 → 2006-05-15 15:20 (-2d) |
| 187 | All Tests Completed | 2006-05-17 08:45 → 2006-05-15 15:20 (-2d) | 2006-05-17 08:45 → 2006-05-15 15:20 (-2d) |
| 188 | Results approved by Paul and Respective Groups | 2006-05-17 08:45 → 2006-05-15 15:20 (-2d) | 2006-05-17 08:45 → 2006-05-15 15:20 (-2d) |
