How a schedule from MS Project changed from version to version. A marks actual dates.

## Version 1 (saved 2006-04-21, file Original_ IOC_ProjectPlan.mpp)

| ID | WBS | Task | Duration | Start | Finish | Predecessors | Total float | Constraint |
| --- | --- | --- | --- | --- | --- | --- | --- | --- |
| 1 | 1 | **Rollout Task** | 7.85d | 2006-04-24 08:00 | 2006-05-03 15:50 |  | 0d |  |
| 2 | 1.1 | **Pre-Rollout Verification/Changes [If required]** | 0d | 2006-04-24 08:00 | 2006-04-24 08:00 |  | 0.89d |  |
| 3 |  | Database changes | 0h | 2006-04-24 08:00 | 2006-04-24 08:00 |  | 0.65d | start no earlier than 2006-04-24 08:00 |
| 4 |  | Extent Map changes | 0h | 2006-04-24 08:00 | 2006-04-24 08:00 | 3 | 0.65d |  |
| 5 |  | Version label verification on all boxes | 0h | 2006-04-24 08:00 | 2006-04-24 08:00 | 4 | 0.65d |  |
| 6 |  | Check: Tier Lead has verified information and obtained a sign off | 0h | 2006-04-24 08:00 | 2006-04-24 08:00 | 3, 4, 5 | 0.65d |  |
| 7 | 1.4 | **Install & perform tests on Hybrid BC A Side** | 4.42d | 2006-04-24 08:00 | 2006-04-28 11:20 | 2 | 0.08d |  |
| 8 | 1.10 | **Install Hybrid BC (A)** | 0.25d | 2006-04-24 08:00 | 2006-04-24 10:00 | 6 | 0.89d |  |
| 9 |  | Configuration and starting processes | 1h | 2006-04-24 08:00 | 2006-04-24 09:00 | 6 | 0.89d | start no earlier than 2006-04-24 08:00 |
| 10 |  | ITG Checkout script (W_MAIN Session) | 20min | 2006-04-24 09:00 | 2006-04-24 09:20 | 9 | 0.89d |  |
| 11 |  | Backup and Reporting | 20min | 2006-04-24 09:20 | 2006-04-24 09:40 | 10 | 0.89d |  |
| 12 |  | Check: Sign Off on Checkout Scripts, Logs and Results | 20min | 2006-04-24 09:40 | 2006-04-24 10:00 | 11 | 0.89d |  |
| 13 | 1.2.2 | **Global Dependency Test** | 0.17d | 2006-04-24 10:00 | 2006-04-24 11:20 | 8 | 0.89d |  |
| 14 |  | Test Execution | 40min | 2006-04-24 10:00 | 2006-04-24 10:40 | 12 | 0.65d |  |
| 15 |  | Log Backup and Reporting | 20min | 2006-04-24 10:40 | 2006-04-24 11:00 | 14 | 0.65d |  |
| 16 |  | Check:Log and Results verification | 20min | 2006-04-24 11:00 | 2006-04-24 11:20 | 15 | 0.65d |  |
| 17 | 1.2.3 | **Mult Class Quote Step-up with Quotes only (Scenario 0)** | 0.3d | 2006-04-24 11:20 | 2006-04-24 14:45 | 13 | 0.89d |  |
| 18 |  | BC Cleanup, Initial Driver Setup, | 20min | 2006-04-24 11:20 | 2006-04-24 11:40 | 16 | 0.65d | start no earlier than 2006-04-24 08:00 |
| 19 |  | Test Execution for No BOTR | 1h | 2006-04-24 11:40 | 2006-04-24 13:40 | 18 | 0.65d | start no earlier than 2006-04-24 08:00 |
| 20 |  | endOfPerformance and Backup | 30min | 2006-04-24 13:40 | 2006-04-24 14:10 | 19 | 0.65d |  |
| 21 |  | Reporting through KR site | 15min | 2006-04-24 14:10 | 2006-04-24 14:25 | 20 | 0.65d |  |
| 22 |  | Check: Sign Off on Logs and Results | 20min | 2006-04-24 14:25 | 2006-04-24 14:45 | 21 | 0.65d |  |
| 23 | 1.2.4 | **Hybrid test scenario 5 (Product State Change Test)** | 0.23d | 2006-04-24 14:45 | 2006-04-24 16:35 | 17 | 0.89d |  |
| 24 |  | BC Cleanup, Initial Driver Setup, | 20min | 2006-04-24 14:45 | 2006-04-24 15:05 | 22 | 0.65d |  |
| 25 |  | Test Execution - Global Server Bounce | 40min | 2006-04-24 15:05 | 2006-04-24 15:45 | 24 | 0.65d |  |
| 26 |  | Monitor and Backup logs | 20min | 2006-04-24 15:45 | 2006-04-24 16:05 | 25 | 0.65d |  |
| 27 |  | Reporting through KR site | 10min | 2006-04-24 16:05 | 2006-04-24 16:15 | 26 | 0.65d |  |
| 28 |  | Check: Sign Off on Logs and Results | 20min | 2006-04-24 16:15 | 2006-04-24 16:35 | 27 | 0.65d |  |
| 29 | 1.12 | **Multi-class Quote step-up test with BOTR [Scenario 3]** | 0.43d | 2006-04-24 16:35 | 2006-04-25 11:00 | 23 | 0.89d |  |
| 30 |  | BC Cleanup, Initial Driver Setup, | 20min | 2006-04-24 16:35 | 2006-04-24 16:55 | 28 | 0.65d |  |
| 31 |  | Test Execution for No BOTR | 1h | 2006-04-24 16:55 | 2006-04-25 08:55 | 30 | 0.65d |  |
| 32 |  | BOTR from 4000 to 16000 | 30min | 2006-04-25 08:55 | 2006-04-25 09:25 | 31 | 0.65d |  |
| 33 |  | endOfPerformance and Backup | 45min | 2006-04-25 09:25 | 2006-04-25 10:10 | 32 | 0.65d |  |
| 34 |  | Reporting through KR site | 30min | 2006-04-25 10:10 | 2006-04-25 10:40 | 33 | 0.65d |  |
| 35 |  | Check: Sign Off on Logs and Results | 20min | 2006-04-25 10:40 | 2006-04-25 11:00 | 34 | 0.65d |  |
| 36 | 1.13 | **Single-class Quote step-up test with BOTR [Scenario 1]** | 0.39d | 2006-04-25 11:00 | 2006-04-25 15:05 | 29 | 0.89d |  |
| 37 |  | BC Cleanup, Initial Driver Setup, | 20min | 2006-04-25 11:00 | 2006-04-25 11:20 | 35 | 0.65d |  |
| 38 |  | Test Execution for No BOTR | 1h | 2006-04-25 11:20 | 2006-04-25 13:20 | 37 | 0.65d |  |
| 39 |  | BOTR 16000 | 10min | 2006-04-25 13:20 | 2006-04-25 13:30 | 38 | 0.65d |  |
| 40 |  | endOfPerformance and Backup | 45min | 2006-04-25 13:30 | 2006-04-25 14:15 | 39 | 0.65d |  |
| 41 |  | Reporting through KR site | 30min | 2006-04-25 14:15 | 2006-04-25 14:45 | 40 | 0.65d |  |
| 42 |  | Check: Sign Off On Logs and Results | 20min | 2006-04-25 14:45 | 2006-04-25 15:05 | 41 | 0.65d |  |
| 43 | 1.14 | **Multi-class Order step-up test [Scenario 4]** | 0.28d | 2006-04-26 08:00 | 2006-04-26 10:15 | 36 | 0.65d |  |
| 44 |  | BC Cleanup, Initial Driver Setup, | 20min | 2006-04-26 08:00 | 2006-04-26 08:20 | 42 | 0.65d | start no earlier than 2006-04-26 08:00 |
| 45 |  | Test Execution for No BOTR | 1h | 2006-04-26 08:20 | 2006-04-26 09:20 | 44 | 0.65d |  |
| 46 |  | endOfPerformance and Backup | 20min | 2006-04-26 09:20 | 2006-04-26 09:40 | 45 | 0.65d |  |
| 47 |  | Reporting through KR site | 15min | 2006-04-26 09:40 | 2006-04-26 09:55 | 46 | 0.65d |  |
| 48 |  | Check: Sign Off on Logs and Results | 20min | 2006-04-26 09:55 | 2006-04-26 10:15 | 47 | 0.65d |  |
| 49 | 1.15 | **Hybrid BC failover (new release to old release)** | 0.31d | 2006-04-26 10:15 | 2006-04-26 13:45 | 43 | 0.65d |  |
| 50 |  | BC Cleanup start A Side as Master | 20min | 2006-04-26 10:15 | 2006-04-26 10:35 | 48 | 0.65d |  |
| 51 |  | Initial setup for test Drivers (starting processes on BC Slave.) | 20min | 2006-04-26 10:35 | 2006-04-26 10:55 | 50 | 0.65d |  |
| 52 |  | Quote/Order BC20 Hybrid traffic going before/during/after failover. Test Execution | 20min | 2006-04-26 10:55 | 2006-04-26 11:15 | 51 | 0.65d |  |
| 53 |  | ITG Checkout script for W_MAIN | 20min | 2006-04-26 11:15 | 2006-04-26 11:35 | 52 | 0.65d |  |
| 54 |  | Backup for Failover and ITG Checkout | 20min | 2006-04-26 11:35 | 2006-04-26 11:55 | 53 | 0.65d |  |
| 55 |  | Generate Report for Failover Timings for all BC Processes (taking time from log files) | 30min | 2006-04-26 11:55 | 2006-04-26 13:25 | 54 | 0.65d |  |
| 56 |  | Check: Sign Off on Checkout Scripts, Logs and Results | 20min | 2006-04-26 13:25 | 2006-04-26 13:45 | 55 | 0.65d |  |
| 57 | 1.15 | **Hybrid BC double failover (new to old to new release)** | 0.47d | 2006-04-27 08:00 | 2006-04-27 11:45 | 49 | 0.24d |  |
| 58 |  | BC Cleanup start A Side as Master | 20min | 2006-04-27 08:00 | 2006-04-27 08:20 | 56 | 0.24d | start no earlier than 2006-04-27 08:00 |
| 59 |  | Initial setup for test Drivers (starting processes on BC Slave.) | 20min | 2006-04-27 08:20 | 2006-04-27 08:40 | 58 | 0.24d |  |
| 60 |  | Quote/Order BC20 Hybrid traffic going before/during/after failover. Test Execution | 20min | 2006-04-27 08:40 | 2006-04-27 09:00 | 59 | 0.24d |  |
| 61 |  | ITG Checkout script for W_MAIN | 20min | 2006-04-27 09:00 | 2006-04-27 09:20 | 60 | 0.24d |  |
| 62 |  | Start A side as slave | 20min | 2006-04-27 09:20 | 2006-04-27 09:40 | 61 | 0.24d |  |
| 63 |  | Quote/Order BC20 Hybrid traffic going before/during/after failover. Test Execution | 20min | 2006-04-27 09:40 | 2006-04-27 10:00 | 62 | 0.24d |  |
| 64 |  | ITG Checkout script for W_MAIN | 20min | 2006-04-27 10:00 | 2006-04-27 10:20 | 63 | 0.24d |  |
| 65 |  | Backup for Failover and ITG Checkout | 20min | 2006-04-27 10:20 | 2006-04-27 10:40 | 64 | 0.24d |  |
| 66 |  | Generate Report for Failover Timings for all BC Processes (taking time from log files) | 45min | 2006-04-27 10:40 | 2006-04-27 11:25 | 65 | 0.24d |  |
| 67 |  | Check: Sign Off on Checkout Scripts, Logs and Results | 20min | 2006-04-27 11:25 | 2006-04-27 11:45 | 66 | 0.24d |  |
| 68 | 1.2.10 | **HAL Scenarios** | 0.95d | 2006-04-27 11:45 | 2006-04-28 11:20 | 57 | 0.08d |  |
| 69 |  | Scenario 1: All Orders Trade - Baseline | 1.5h | 2006-04-27 11:45 | 2006-04-27 14:15 | 67 | 0.24d |  |
| 70 |  | Scenario 2: All Orders Book No Trade - Baseline | 1.5h | 2006-04-27 14:15 | 2006-04-27 15:45 | 69 | 0.24d |  |

| ID | WBS | Task | Duration | Start | Finish | Predecessors | Total float | Constraint |
| --- | --- | --- | --- | --- | --- | --- | --- | --- |
| 71 |  | Scenario 3: All Orders Auction But No Trades | 1.5h | 2006-04-28 08:00 | 2006-04-28 09:30 | 70 | 0.08d | start no earlier than 2006-04-28 08:00 |
| 72 |  | Scenario 4: All Orders Auction and Trade | 1.5h | 2006-04-28 09:30 | 2006-04-28 11:00 | 71 | 0.08d |  |
| 73 |  | Check: Sign Off on Logs and Results | 20min | 2006-04-28 11:00 | 2006-04-28 11:20 | 72 | 0.08d |  |
| 74 | 1.5 | **Install & perform tests on Hybrid BC B Side** | 0.94d | 2006-04-28 11:20 | 2006-05-01 10:50 | 7 | 0d |  |
| 75 | 1.16 | **Install Hybrid BC "B" side** | 0.33d | 2006-04-28 11:20 | 2006-04-28 15:00 | 68 | 0.08d |  |
| 76 |  | Cleanup | 20min | 2006-04-28 11:20 | 2006-04-28 11:40 | 73 | 0.08d |  |
| 77 |  | Configuration and starting processes | 1h | 2006-04-28 11:40 | 2006-04-28 13:40 | 76 | 0.08d |  |
| 78 |  | ITG Checkout script (W_MAIN and ONE_MAIN Session) | 40min | 2006-04-28 13:40 | 2006-04-28 14:20 | 77 | 0.08d |  |
| 79 |  | Backup and Reporting | 20min | 2006-04-28 14:20 | 2006-04-28 14:40 | 78 | 0.08d |  |
| 80 |  | Check: Sign Off on Checkout Scripts, Logs and Results | 20min | 2006-04-28 14:40 | 2006-04-28 15:00 | 79 | 0.08d |  |
| 81 | 1.17 | **Hybrid BC failover (new release to new release)** | 0.35d | 2006-04-28 15:00 | 2006-05-01 08:50 | 75 | 0d |  |
| 82 |  | Initial setup for test Drivers (starting processes on BC Slave.) | 20min | 2006-04-28 15:00 | 2006-04-28 15:20 | 80 | 0.08d |  |
| 83 |  | Quote/Order BC20 Hybrid traffic going before/during/after failover. Test Execution | 20min | 2006-04-28 15:20 | 2006-04-28 15:40 | 82 | 0.08d |  |
| 84 |  | ITG Checkout script (for W_MAIN Session) | 20min | 2006-04-28 15:40 | 2006-04-28 16:00 | 83 | 0.08d |  |
| 85 |  | Backup for Failover and ITG Checkout | 20min | 2006-04-28 16:00 | 2006-04-28 16:20 | 84 | 0.08d |  |
| 86 |  | Generate Report for Failover Timings for all BC Processes (taking time from log files) | 30min | 2006-05-01 08:00 | 2006-05-01 08:30 | 85 | 0d | start no earlier than 2006-05-01 08:00 |
| 87 |  | Check: Sign Off on Checkout Scripts,Logs and Results | 20min | 2006-05-01 08:30 | 2006-05-01 08:50 | 86 | 0d |  |
| 88 |  | Start/End session and Failover Timings - BC Failover Test scenario | 2h | 2006-05-01 08:50 | 2006-05-01 10:50 | 81 | 0d |  |
| 89 | 1.6 | **Install & perform tests on ONE_MAIN BC A Side** | 1.15d | 2006-05-01 10:50 | 2006-05-02 12:00 | 74 | 0d |  |
| 90 | 1.26 | **Install ONE_MAIN BC (A)** | 0.25d | 2006-05-01 10:50 | 2006-05-01 13:50 | 88 | 0d |  |
| 91 |  | Configuration and starting processes | 1h | 2006-05-01 10:50 | 2006-05-01 11:50 | 88 | 0d |  |
| 92 |  | ITG Checkout script (ONE_MAIN Session) | 20min | 2006-05-01 11:50 | 2006-05-01 13:10 | 91 | 0d |  |
| 93 |  | Backup and Reporting | 20min | 2006-05-01 13:10 | 2006-05-01 13:30 | 92 | 0d |  |
| 94 |  | Check: Sign Off on Checkout Scripts, Logs and Results | 20min | 2006-05-01 13:30 | 2006-05-01 13:50 | 93 | 0d |  |
| 95 | 1.27 | **Multi-class Order step-up test for ONE_MAIN [Scenario 2]** | 0.27d | 2006-05-01 13:50 | 2006-05-01 16:00 | 90 | 0d |  |
| 96 |  | BC Cleanup, Initial Driver Setup, | 20min | 2006-05-01 13:50 | 2006-05-01 14:10 | 94 | 0d |  |
| 97 |  | Test Execution for No BOTR | 1h | 2006-05-01 14:10 | 2006-05-01 15:10 | 96 | 0d |  |
| 98 |  | endOfPerformance and Backup | 15min | 2006-05-01 15:10 | 2006-05-01 15:25 | 97 | 0d |  |
| 99 |  | Reporting through KR site | 15min | 2006-05-01 15:25 | 2006-05-01 15:40 | 98 | 0d |  |
| 100 |  | Check: Sign Off on Logs and Results | 20min | 2006-05-01 15:40 | 2006-05-01 16:00 | 99 | 0d |  |
| 101 | 1.28 | **Multi-class Quote step-up test [Scenario 1]** | 0.31d | 2006-05-01 16:00 | 2006-05-02 09:30 | 95 | 0d |  |
| 102 |  | BC Cleanup, Initial Driver Setup, | 20min | 2006-05-01 16:00 | 2006-05-01 16:20 | 100 | 0d |  |
| 103 |  | Test Execution for No BOTR | 1h | 2006-05-01 16:20 | 2006-05-02 08:20 | 102 | 0d |  |
| 104 |  | endOfPerformance and Backup | 30min | 2006-05-02 08:20 | 2006-05-02 08:50 | 103 | 0d |  |
| 105 |  | Reporting through KR site | 20min | 2006-05-02 08:50 | 2006-05-02 09:10 | 104 | 0d |  |
| 106 |  | Check: Sign Off on Logs and Results | 20min | 2006-05-02 09:10 | 2006-05-02 09:30 | 105 | 0d |  |
| 107 | 1.30 | **Failover ONE_MAIN BC (New to Old)** | 0.31d | 2006-05-02 09:30 | 2006-05-02 12:00 | 101 | 0d |  |
| 108 |  | Cleanup | 20min | 2006-05-02 09:30 | 2006-05-02 09:50 | 106 | 0d |  |
| 109 |  | Initial setup for test Drivers (starting processes on BC Slave.) | 20min | 2006-05-02 09:50 | 2006-05-02 10:10 | 108 | 0d |  |
| 110 |  | Quote/Order ONE_MAIN traffic going before/during/after failover. Test Execution | 20min | 2006-05-02 10:10 | 2006-05-02 10:30 | 109 | 0d |  |
| 111 |  | ITG Checkout script (for ONE_MAIN Session) | 20min | 2006-05-02 10:30 | 2006-05-02 10:50 | 110 | 0d |  |
| 112 |  | Backup for Failover and ITG Checkout | 20min | 2006-05-02 10:50 | 2006-05-02 11:10 | 111 | 0d |  |
| 113 |  | Generate Report for Failover Timings for all BC Processes (taking time from log files) | 30min | 2006-05-02 11:10 | 2006-05-02 11:40 | 112 | 0d |  |
| 114 |  | Check: Sign Off on Checkout Scripts,Logs and Results | 20min | 2006-05-02 11:40 | 2006-05-02 12:00 | 113 | 0d |  |
| 115 | 1.7 | **Install & perform tests on ONE_MAIN BC B Side** | 0.56d | 2006-05-02 13:00 | 2006-05-03 08:30 | 89 | 0d |  |
| 116 | 1.31 | **Install ONE_MAIN BC (B)** | 0.25d | 2006-05-02 13:00 | 2006-05-02 15:00 | 107 | 0d |  |
| 117 |  | Configuration and starting processes | 1h | 2006-05-02 13:00 | 2006-05-02 14:00 | 114 | 0d |  |
| 118 |  | ITG Checkout script (ONE_MAIN Session) | 20min | 2006-05-02 14:00 | 2006-05-02 14:20 | 117 | 0d |  |
| 119 |  | Backup and Reporting | 20min | 2006-05-02 14:20 | 2006-05-02 14:40 | 118 | 0d |  |
| 120 |  | Check: Sign Off on Checkout Scripts, Logs and Results | 20min | 2006-05-02 14:40 | 2006-05-02 15:00 | 119 | 0d |  |
| 121 | 1.5.2 | **Failover ONE_MAIN BC (New to New)** | 0.31d | 2006-05-02 15:00 | 2006-05-03 08:30 | 116 | 0d |  |
| 122 |  | Cleanup | 20min | 2006-05-02 15:00 | 2006-05-02 15:20 | 120 | 0d |  |
| 123 |  | Initial setup for test Drivers (starting processes on BC Slave.) | 20min | 2006-05-02 15:20 | 2006-05-02 15:40 | 122 | 0d |  |
| 124 |  | Quote/Order ONE_MAIN traffic going before/during/after failover. Test Execution | 20min | 2006-05-02 15:40 | 2006-05-02 16:00 | 123 | 0d |  |
| 125 |  | ITG Checkout script (ONE_MAIN Session) | 20min | 2006-05-02 16:00 | 2006-05-02 16:20 | 124 | 0d |  |
| 126 |  | Backup for Failover and ITG Checkout | 20min | 2006-05-02 16:20 | 2006-05-02 16:40 | 125 | 0d |  |
| 127 |  | Generate Report for Failover Timings for all BC Processes (taking time from log files) | 30min | 2006-05-02 16:40 | 2006-05-03 08:10 | 126 | 0d |  |
| 128 |  | Check: Sign Off on Checkout Scripts,Logs and Results | 20min | 2006-05-03 08:10 | 2006-05-03 08:30 | 127 | 0d |  |
| 129 | 1.6 | **4 Hour Endurance Test** | 0.79d | 2006-05-03 08:30 | 2006-05-03 15:50 | 115 | 0d |  |
| 130 |  | Cleanup for W_MAIN and ONE_MAIN BC | 20min | 2006-05-03 08:30 | 2006-05-03 08:50 | 128 | 0d |  |
| 131 |  | Driver setup | 20min | 2006-05-03 08:50 | 2006-05-03 09:10 | 130 | 0d |  |
| 132 |  | CAS bounce | 20min | 2006-05-03 09:10 | 2006-05-03 09:30 | 131 | 0d |  |
| 133 |  | 4 hour Sanity Check | 4h | 2006-05-03 09:30 | 2006-05-03 14:30 | 132 | 0d |  |
| 134 |  | endOfPerformance and Backup and Reporting | 1h | 2006-05-03 14:30 | 2006-05-03 15:30 | 133 | 0d |  |
| 135 |  | Check: Sign Off on Logs and Results | 20min | 2006-05-03 15:30 | 2006-05-03 15:50 | 134 | 0d |  |
| 136 | 1.7 | **Check: Overall Verification** | 0d | 2006-05-03 15:50 | 2006-05-03 15:50 | 129 | 0d |  |
| 137 |  | All Results Signed Off | 0h | 2006-05-03 15:50 | 2006-05-03 15:50 | 135 | 0d |  |
| 138 |  | All Tests Completed | 0h | 2006-05-03 15:50 | 2006-05-03 15:50 | 137 | 0d |  |
| 139 |  | Results Approved by Paul and Respective Groups | 0h | 2006-05-03 15:50 | 2006-05-03 15:50 | 138 | 0d |  |

## Version 2 (saved 2006-04-28, file IOC_ProjectPlan.mpp)

Last finish 2006-05-03 → 2006-05-30 (+27d). Complete tasks 0 → 110.

Changed:

| ID | Task | Start | Finish | Duration | Complete | Total float |
| --- | --- | --- | --- | --- | --- | --- |
| 1 | **Rollout Task** | 2006-04-24 08:00 A | 2006-05-03 15:50 → 2006-05-30 10:10 (+27d) | 7.85d → 26.27d | 0% → 99% |  |
| 2 | **Pre-Rollout Verification/Changes [If required]** | 2006-04-24 08:00 A | 2006-04-24 08:00 A |  | 0% → 100% | 0.89d → none |
| 3 | Database changes | 2006-04-24 08:00 A | 2006-04-24 08:00 A |  | 0% → 100% | 0.65d → none |
| 4 | Extent Map changes | 2006-04-24 08:00 A | 2006-04-24 08:00 A |  | 0% → 100% | 0.65d → none |
| 5 | Version label verification on all boxes | 2006-04-24 08:00 A | 2006-04-24 08:00 A |  | 0% → 100% | 0.65d → none |
| 6 | Check: Tier Lead has verified information and obtained a sign off | 2006-04-24 08:00 A | 2006-04-24 08:00 A |  | 0% → 100% | 0.65d → none |
| 7 | **Install & perform tests on Hybrid BC A Side** | 2006-04-24 08:00 A | 2006-04-28 11:20 A |  | 0% → 100% | 0.08d → none |
| 8 | **Install Hybrid BC (A)** | 2006-04-24 08:00 A | 2006-04-24 10:00 A |  | 0% → 100% | 0.89d → none |
| 9 | Configuration and starting processes | 2006-04-24 08:00 A | 2006-04-24 09:00 A |  | 0% → 100% | 0.89d → none |
| 10 | ITG Checkout script (W_MAIN Session) | 2006-04-24 09:00 A | 2006-04-24 09:20 A |  | 0% → 100% | 0.89d → none |
| 11 | Backup and Reporting | 2006-04-24 09:20 A | 2006-04-24 09:40 A |  | 0% → 100% | 0.89d → none |
| 12 | Check: Sign Off on Checkout Scripts, Logs and Results | 2006-04-24 09:40 A | 2006-04-24 10:00 A |  | 0% → 100% | 0.89d → none |
| 13 | **Global Dependency Test** | 2006-04-24 10:00 A | 2006-04-24 11:20 A |  | 0% → 100% | 0.89d → none |
| 14 | Test Execution | 2006-04-24 10:00 A | 2006-04-24 10:40 A |  | 0% → 100% | 0.65d → none |
| 15 | Log Backup and Reporting | 2006-04-24 10:40 A | 2006-04-24 11:00 A |  | 0% → 100% | 0.65d → none |
| 16 | Check:Log and Results verification | 2006-04-24 11:00 A | 2006-04-24 11:20 A |  | 0% → 100% | 0.65d → none |
| 17 | **Mult Class Quote Step-up with Quotes only (Scenario 0)** | 2006-04-24 11:20 A | 2006-04-24 14:45 A |  | 0% → 100% | 0.89d → none |
| 18 | BC Cleanup, Initial Driver Setup, | 2006-04-24 11:20 A | 2006-04-24 11:40 A |  | 0% → 100% | 0.65d → none |
| 19 | Test Execution for No BOTR | 2006-04-24 11:40 A | 2006-04-24 13:40 A |  | 0% → 100% | 0.65d → none |
| 20 | endOfPerformance and Backup | 2006-04-24 13:40 A | 2006-04-24 14:10 A |  | 0% → 100% | 0.65d → none |
| 21 | Reporting through KR site | 2006-04-24 14:10 A | 2006-04-24 14:25 A |  | 0% → 100% | 0.65d → none |
| 22 | Check: Sign Off on Logs and Results | 2006-04-24 14:25 A | 2006-04-24 14:45 A |  | 0% → 100% | 0.65d → none |
| 23 | **Hybrid test scenario 5 (Product State Change Test)** | 2006-04-24 14:45 A | 2006-04-24 16:35 A |  | 0% → 100% | 0.89d → none |
| 24 | BC Cleanup, Initial Driver Setup, | 2006-04-24 14:45 A | 2006-04-24 15:05 A |  | 0% → 100% | 0.65d → none |
| 25 | Test Execution - Global Server Bounce | 2006-04-24 15:05 A | 2006-04-24 15:45 A |  | 0% → 100% | 0.65d → none |
| 26 | Monitor and Backup logs | 2006-04-24 15:45 A | 2006-04-24 16:05 A |  | 0% → 100% | 0.65d → none |
| 27 | Reporting through KR site | 2006-04-24 16:05 A | 2006-04-24 16:15 A |  | 0% → 100% | 0.65d → none |
| 28 | Check: Sign Off on Logs and Results | 2006-04-24 16:15 A | 2006-04-24 16:35 A |  | 0% → 100% | 0.65d → none |
| 29 | **Multi-class Quote step-up test with BOTR [Scenario 3]** | 2006-04-24 16:35 A | 2006-04-25 11:00 A |  | 0% → 100% | 0.89d → none |
| 30 | BC Cleanup, Initial Driver Setup, | 2006-04-24 16:35 A | 2006-04-24 16:55 A |  | 0% → 100% | 0.65d → none |
| 31 | Test Execution for No BOTR | 2006-04-24 16:55 A | 2006-04-25 08:55 A |  | 0% → 100% | 0.65d → none |
| 32 | BOTR from 4000 to 16000 | 2006-04-25 08:55 A | 2006-04-25 09:25 A |  | 0% → 100% | 0.65d → none |
| 33 | endOfPerformance and Backup | 2006-04-25 09:25 A | 2006-04-25 10:10 A |  | 0% → 100% | 0.65d → none |
| 34 | Reporting through KR site | 2006-04-25 10:10 A | 2006-04-25 10:40 A |  | 0% → 100% | 0.65d → none |
| 35 | Check: Sign Off on Logs and Results | 2006-04-25 10:40 A | 2006-04-25 11:00 A |  | 0% → 100% | 0.65d → none |
| 36 | **Single-class Quote step-up test with BOTR [Scenario 1]** | 2006-04-25 11:00 A | 2006-04-25 15:05 A |  | 0% → 100% | 0.89d → none |
| 37 | BC Cleanup, Initial Driver Setup, | 2006-04-25 11:00 A | 2006-04-25 11:20 A |  | 0% → 100% | 0.65d → none |
| 38 | Test Execution for No BOTR | 2006-04-25 11:20 A | 2006-04-25 13:20 A |  | 0% → 100% | 0.65d → none |
| 39 | BOTR 16000 | 2006-04-25 13:20 A | 2006-04-25 13:30 A |  | 0% → 100% | 0.65d → none |
| 40 | endOfPerformance and Backup | 2006-04-25 13:30 A | 2006-04-25 14:15 A |  | 0% → 100% | 0.65d → none |
| 41 | Reporting through KR site | 2006-04-25 14:15 A | 2006-04-25 14:45 A |  | 0% → 100% | 0.65d → none |
| 42 | Check: Sign Off On Logs and Results | 2006-04-25 14:45 A | 2006-04-25 15:05 A |  | 0% → 100% | 0.65d → none |
| 43 | **Multi-class Order step-up test [Scenario 4]** | 2006-04-26 08:00 → 2006-04-24 08:00 A (-2d) | 2006-04-26 10:15 → 2006-04-24 17:00 A (-2d) | 0.28d → 1d | 0% → 100% | 0.65d → none |
| 44 | BC Cleanup, Initial Driver Setup, | 2006-04-26 08:00 → 2006-04-24 08:00 A (-2d) | 2006-04-26 08:20 → 2006-04-24 08:20 A (-2d) |  | 0% → 100% | 0.65d → none |
| 45 | Test Execution for No BOTR | 2006-04-26 08:20 → 2006-04-24 08:00 A (-2d) | 2006-04-26 09:20 → 2006-04-24 09:00 A (-2d) |  | 0% → 100% | 0.65d → none |
| 46 | endOfPerformance and Backup | 2006-04-26 09:20 → 2006-04-24 17:00 A (-2d) | 2006-04-26 09:40 → 2006-04-24 17:00 A (-2d) | 20min → 0min | 0% → 100% | 0.65d → none |
| 47 | Reporting through KR site | 2006-04-26 09:40 → 2006-04-24 17:00 A (-2d) | 2006-04-26 09:55 → 2006-04-24 17:00 A (-2d) | 15min → 0min | 0% → 100% | 0.65d → none |
| 48 | Check: Sign Off on Logs and Results | 2006-04-26 09:55 → 2006-04-24 17:00 A (-2d) | 2006-04-26 10:15 → 2006-04-24 17:00 A (-2d) | 20min → 0min | 0% → 100% | 0.65d → none |
| 49 | **Hybrid BC failover (new release to old release)** | 2006-04-26 10:15 → 2006-04-24 08:00 A (-2d) | 2006-04-26 13:45 → 2006-04-24 17:00 A (-2d) | 0.31d → 1d | 0% → 100% | 0.65d → none |
| 50 | BC Cleanup start A Side as Master | 2006-04-26 10:15 → 2006-04-24 08:00 A (-2d) | 2006-04-26 10:35 → 2006-04-24 08:20 A (-2d) |  | 0% → 100% | 0.65d → none |
| 51 | Initial setup for test Drivers (starting processes on BC Slave.) | 2006-04-26 10:35 → 2006-04-24 08:00 A (-2d) | 2006-04-26 10:55 → 2006-04-24 08:20 A (-2d) |  | 0% → 100% | 0.65d → none |
| 52 | Quote/Order BC20 Hybrid traffic going before/during/after failover. Test Execution | 2006-04-26 10:55 → 2006-04-24 17:00 A (-2d) | 2006-04-26 11:15 → 2006-04-24 17:00 A (-2d) | 20min → 0min | 0% → 100% | 0.65d → none |
| 53 | ITG Checkout script for W_MAIN | 2006-04-26 11:15 → 2006-04-24 17:00 A (-2d) | 2006-04-26 11:35 → 2006-04-24 17:00 A (-2d) | 20min → 0min | 0% → 100% | 0.65d → none |
| 54 | Backup for Failover and ITG Checkout | 2006-04-26 11:35 → 2006-04-24 17:00 A (-2d) | 2006-04-26 11:55 → 2006-04-24 17:00 A (-2d) | 20min → 0min | 0% → 100% | 0.65d → none |
| 55 | Generate Report for Failover Timings for all BC Processes (taking time from log files) | 2006-04-26 11:55 → 2006-04-24 17:00 A (-2d) | 2006-04-26 13:25 → 2006-04-24 17:00 A (-2d) | 30min → 0min | 0% → 100% | 0.65d → none |
| 56 | Check: Sign Off on Checkout Scripts, Logs and Results | 2006-04-26 13:25 → 2006-04-24 17:00 A (-2d) | 2006-04-26 13:45 → 2006-04-24 17:00 A (-2d) | 20min → 0min | 0% → 100% | 0.65d → none |
| 57 | **Hybrid BC double failover (new to old to new release)** | 2006-04-27 08:00 → 2006-04-24 17:00 A (-3d) | 2006-04-27 11:45 → 2006-04-24 17:00 A (-3d) | 0.47d → 0d | 0% → 100% | 0.24d → none |
| 58 | BC Cleanup start A Side as Master | 2006-04-27 08:00 → 2006-04-24 17:00 A (-3d) | 2006-04-27 08:20 → 2006-04-24 17:00 A (-3d) | 20min → 0min | 0% → 100% | 0.24d → none |
| 59 | Initial setup for test Drivers (starting processes on BC Slave.) | 2006-04-27 08:20 → 2006-04-24 17:00 A (-3d) | 2006-04-27 08:40 → 2006-04-24 17:00 A (-3d) | 20min → 0min | 0% → 100% | 0.24d → none |
| 60 | Quote/Order BC20 Hybrid traffic going before/during/after failover. Test Execution | 2006-04-27 08:40 → 2006-04-24 17:00 A (-3d) | 2006-04-27 09:00 → 2006-04-24 17:00 A (-3d) | 20min → 0min | 0% → 100% | 0.24d → none |
| 61 | ITG Checkout script for W_MAIN | 2006-04-27 09:00 → 2006-04-24 17:00 A (-3d) | 2006-04-27 09:20 → 2006-04-24 17:00 A (-3d) | 20min → 0min | 0% → 100% | 0.24d → none |
| 62 | Start A side as slave | 2006-04-27 09:20 → 2006-04-24 17:00 A (-3d) | 2006-04-27 09:40 → 2006-04-24 17:00 A (-3d) | 20min → 0min | 0% → 100% | 0.24d → none |
| 63 | Quote/Order BC20 Hybrid traffic going before/during/after failover. Test Execution | 2006-04-27 09:40 → 2006-04-24 17:00 A (-3d) | 2006-04-27 10:00 → 2006-04-24 17:00 A (-3d) | 20min → 0min | 0% → 100% | 0.24d → none |
| 64 | ITG Checkout script for W_MAIN | 2006-04-27 10:00 → 2006-04-24 17:00 A (-3d) | 2006-04-27 10:20 → 2006-04-24 17:00 A (-3d) | 20min → 0min | 0% → 100% | 0.24d → none |
| 65 | Backup for Failover and ITG Checkout | 2006-04-27 10:20 → 2006-04-24 17:00 A (-3d) | 2006-04-27 10:40 → 2006-04-24 17:00 A (-3d) | 20min → 0min | 0% → 100% | 0.24d → none |
| 66 | Generate Report for Failover Timings for all BC Processes (taking time from log files) | 2006-04-27 10:40 → 2006-04-24 17:00 A (-3d) | 2006-04-27 11:25 → 2006-04-24 17:00 A (-3d) | 45min → 0min | 0% → 100% | 0.24d → none |
| 67 | Check: Sign Off on Checkout Scripts, Logs and Results | 2006-04-27 11:25 → 2006-04-24 17:00 A (-3d) | 2006-04-27 11:45 → 2006-04-24 17:00 A (-3d) | 20min → 0min | 0% → 100% | 0.24d → none |
| 68 | **HAL Scenarios** | 2006-04-27 11:45 → 2006-04-25 08:00 A (-2d) | 2006-04-28 11:20 A | 0.95d → 3.42d | 0% → 100% | 0.08d → none |
| 69 | Scenario 1: All Orders Trade - Baseline | 2006-04-27 11:45 → 2006-04-25 08:00 A (-2d) | 2006-04-27 14:15 → 2006-04-25 09:30 A (-2d) |  | 0% → 100% | 0.24d → none |
| 70 | Scenario 2: All Orders Book No Trade - Baseline | 2006-04-27 14:15 → 2006-04-25 09:30 A (-2d) | 2006-04-27 15:45 → 2006-04-25 11:00 A (-2d) |  | 0% → 100% | 0.24d → none |

| ID | Task | Start | Finish | Duration | Complete | Total float | Other |
| --- | --- | --- | --- | --- | --- | --- | --- |
| 71 | Scenario 3: All Orders Auction But No Trades | 2006-04-28 08:00 A | 2006-04-28 09:30 A |  | 0% → 100% | 0.08d → none |  |
| 72 | Scenario 4: All Orders Auction and Trade | 2006-04-28 09:30 A | 2006-04-28 11:00 A |  | 0% → 100% | 0.08d → none |  |
| 73 | Check: Sign Off on Logs and Results | 2006-04-28 11:00 A | 2006-04-28 11:20 A |  | 0% → 100% | 0.08d → none |  |
| 74 | **Install & perform tests on Hybrid BC B Side** | 2006-04-28 11:20 → 2006-04-25 08:00 A (-3d) | 2006-05-01 10:50 → 2006-05-25 17:00 A (+24d) | 0.94d → 23d | 0% → 100% | 0d → none |  |
| 75 | **Install Hybrid BC "B" side** | 2006-04-28 11:20 → 2006-04-25 08:00 A (-3d) | 2006-04-28 15:00 → 2006-04-25 17:00 A (-3d) | 0.33d → 1d | 0% → 100% | 0.08d → none |  |
| 76 | Cleanup | 2006-04-28 11:20 → 2006-04-25 08:00 A (-3d) | 2006-04-28 11:40 → 2006-04-25 08:20 A (-3d) |  | 0% → 100% | 0.08d → none |  |
| 77 | Configuration and starting processes | 2006-04-28 11:40 → 2006-04-25 17:00 A (-3d) | 2006-04-28 13:40 → 2006-04-25 17:00 A (-3d) | 1h → 0h | 0% → 100% | 0.08d → none |  |
| 78 | ITG Checkout script (W_MAIN and ONE_MAIN Session) | 2006-04-28 13:40 → 2006-04-25 17:00 A (-3d) | 2006-04-28 14:20 → 2006-04-25 17:00 A (-3d) | 40min → 0min | 0% → 100% | 0.08d → none |  |
| 79 | Backup and Reporting | 2006-04-28 14:20 → 2006-04-25 17:00 A (-3d) | 2006-04-28 14:40 → 2006-04-25 17:00 A (-3d) | 20min → 0min | 0% → 100% | 0.08d → none |  |
| 80 | Check: Sign Off on Checkout Scripts, Logs and Results | 2006-04-28 14:40 → 2006-04-25 17:00 A (-3d) | 2006-04-28 15:00 → 2006-04-25 17:00 A (-3d) | 20min → 0min | 0% → 100% | 0.08d → none |  |
| 81 | **Hybrid BC failover (new release to new release)** | 2006-04-28 15:00 → 2006-04-25 17:00 A (-3d) | 2006-05-01 08:50 → 2006-05-25 17:00 A (+24d) | 0.35d → 22d | 0% → 100% | 0d → none |  |
| 82 | Initial setup for test Drivers (starting processes on BC Slave.) | 2006-04-28 15:00 → 2006-04-25 17:00 A (-3d) | 2006-04-28 15:20 → 2006-04-25 17:00 A (-3d) | 20min → 0min | 0% → 100% | 0.08d → none |  |
| 83 | Quote/Order BC20 Hybrid traffic going before/during/after failover. Test Execution | 2006-04-28 15:20 → 2006-04-25 17:00 A (-3d) | 2006-04-28 15:40 → 2006-04-25 17:00 A (-3d) | 20min → 0min | 0% → 100% | 0.08d → none |  |
| 84 | ITG Checkout script (for W_MAIN Session) | 2006-04-28 15:40 → 2006-04-25 17:00 A (-3d) | 2006-04-28 16:00 → 2006-04-25 17:00 A (-3d) | 20min → 0min | 0% → 100% | 0.08d → none |  |
| 85 | Backup for Failover and ITG Checkout | 2006-04-28 16:00 → 2006-04-25 17:00 A (-3d) | 2006-04-28 16:20 → 2006-04-25 17:00 A (-3d) | 20min → 0min | 0% → 100% | 0.08d → none |  |
| 86 | Generate Report for Failover Timings for all BC Processes (taking time from log files) | 2006-05-01 08:00 A | 2006-05-01 08:30 → 2006-05-25 17:00 A (+24d) | 30min → 9120min | 0% → 100% | 0d → none |  |
| 87 | Check: Sign Off on Checkout Scripts,Logs and Results | 2006-05-01 08:30 → 2006-04-25 17:00 A (-6d) | 2006-05-01 08:50 → 2006-04-25 17:00 A (-6d) | 20min → 0min | 0% → 100% | 0d → none |  |
| 88 | Start/End session and Failover Timings - BC Failover Test scenario | 2006-05-01 08:50 → 2006-04-25 17:00 A (-6d) | 2006-05-01 10:50 → 2006-04-25 17:00 A (-6d) | 2h → 0h | 0% → 100% | 0d → none |  |
| 89 | **Install & perform tests on ONE_MAIN BC A Side** | 2006-05-01 10:50 → 2006-05-26 08:00 A (+25d) | 2006-05-02 12:00 → 2006-05-29 09:10 A (+27d) |  | 0% → 100% | 0d → none |  |
| 90 | **Install ONE_MAIN BC (A)** | 2006-05-01 10:50 → 2006-05-26 08:00 A (+25d) | 2006-05-01 13:50 → 2006-05-26 10:00 A (+25d) |  | 0% → 100% | 0d → none |  |
| 91 | Configuration and starting processes | 2006-05-01 10:50 → 2006-05-26 08:00 A (+25d) | 2006-05-01 11:50 → 2006-05-26 09:00 A (+25d) |  | 0% → 100% | 0d → none |  |
| 92 | ITG Checkout script (ONE_MAIN Session) | 2006-05-01 11:50 → 2006-05-26 09:00 A (+25d) | 2006-05-01 13:10 → 2006-05-26 09:20 A (+25d) |  | 0% → 100% | 0d → none |  |
| 93 | Backup and Reporting | 2006-05-01 13:10 → 2006-05-26 09:20 A (+25d) | 2006-05-01 13:30 → 2006-05-26 09:40 A (+25d) |  | 0% → 100% | 0d → none |  |
| 94 | Check: Sign Off on Checkout Scripts, Logs and Results | 2006-05-01 13:30 → 2006-05-26 09:40 A (+25d) | 2006-05-01 13:50 → 2006-05-26 10:00 A (+25d) |  | 0% → 100% | 0d → none |  |
| 95 | **Multi-class Order step-up test for ONE_MAIN [Scenario 2]** | 2006-05-01 13:50 → 2006-05-26 10:00 A (+25d) | 2006-05-01 16:00 → 2006-05-26 13:10 A (+25d) |  | 0% → 100% | 0d → none |  |
| 96 | BC Cleanup, Initial Driver Setup, | 2006-05-01 13:50 → 2006-05-26 10:00 A (+25d) | 2006-05-01 14:10 → 2006-05-26 10:20 A (+25d) |  | 0% → 100% | 0d → none |  |
| 97 | Test Execution for No BOTR | 2006-05-01 14:10 → 2006-05-26 10:20 A (+25d) | 2006-05-01 15:10 → 2006-05-26 11:20 A (+25d) |  | 0% → 100% | 0d → none |  |
| 98 | endOfPerformance and Backup | 2006-05-01 15:10 → 2006-05-26 11:20 A (+25d) | 2006-05-01 15:25 → 2006-05-26 11:35 A (+25d) |  | 0% → 100% | 0d → none |  |
| 99 | Reporting through KR site | 2006-05-01 15:25 → 2006-05-26 11:35 A (+25d) | 2006-05-01 15:40 → 2006-05-26 11:50 A (+25d) |  | 0% → 100% | 0d → none |  |
| 100 | Check: Sign Off on Logs and Results | 2006-05-01 15:40 → 2006-05-26 11:50 A (+25d) | 2006-05-01 16:00 → 2006-05-26 13:10 A (+25d) |  | 0% → 100% | 0d → none |  |
| 101 | **Multi-class Quote step-up test [Scenario 1]** | 2006-05-01 16:00 → 2006-05-26 13:10 A (+25d) | 2006-05-02 09:30 → 2006-05-26 15:40 A (+24d) |  | 0% → 100% | 0d → none |  |
| 102 | BC Cleanup, Initial Driver Setup, | 2006-05-01 16:00 → 2006-05-26 13:10 A (+25d) | 2006-05-01 16:20 → 2006-05-26 13:30 A (+25d) |  | 0% → 100% | 0d → none |  |
| 103 | Test Execution for No BOTR | 2006-05-01 16:20 → 2006-05-26 13:30 A (+25d) | 2006-05-02 08:20 → 2006-05-26 14:30 A (+24d) |  | 0% → 100% | 0d → none |  |
| 104 | endOfPerformance and Backup | 2006-05-02 08:20 → 2006-05-26 14:30 A (+24d) | 2006-05-02 08:50 → 2006-05-26 15:00 A (+24d) |  | 0% → 100% | 0d → none |  |
| 105 | Reporting through KR site | 2006-05-02 08:50 → 2006-05-26 15:00 A (+24d) | 2006-05-02 09:10 → 2006-05-26 15:20 A (+24d) |  | 0% → 100% | 0d → none |  |
| 106 | Check: Sign Off on Logs and Results | 2006-05-02 09:10 → 2006-05-26 15:20 A (+24d) | 2006-05-02 09:30 → 2006-05-26 15:40 A (+24d) |  | 0% → 100% | 0d → none |  |
| 107 | **Failover ONE_MAIN BC (New to Old)** | 2006-05-02 09:30 → 2006-05-26 15:40 A (+24d) | 2006-05-02 12:00 → 2006-05-29 09:10 A (+27d) |  | 0% → 100% | 0d → none |  |
| 108 | Cleanup | 2006-05-02 09:30 → 2006-05-26 15:40 A (+24d) | 2006-05-02 09:50 → 2006-05-26 16:00 A (+24d) |  | 0% → 100% | 0d → none |  |
| 109 | Initial setup for test Drivers (starting processes on BC Slave.) | 2006-05-02 09:50 → 2006-05-26 16:00 A (+24d) | 2006-05-02 10:10 → 2006-05-26 16:20 A (+24d) |  | 0% → 100% | 0d → none |  |
| 110 | Quote/Order ONE_MAIN traffic going before/during/after failover. Test Execution | 2006-05-02 10:10 → 2006-05-26 16:20 A (+24d) | 2006-05-02 10:30 → 2006-05-26 16:40 A (+24d) |  | 0% → 100% | 0d → none |  |
| 111 | ITG Checkout script (for ONE_MAIN Session) | 2006-05-02 10:30 → 2006-05-26 16:40 A (+24d) | 2006-05-02 10:50 → 2006-05-26 17:00 A (+24d) |  | 0% → 100% | 0d → none |  |
| 112 | Backup for Failover and ITG Checkout | 2006-05-02 10:50 → 2006-05-29 08:00 A (+27d) | 2006-05-02 11:10 → 2006-05-29 08:20 A (+27d) |  | 0% → 100% | 0d → none |  |
| 113 | Generate Report for Failover Timings for all BC Processes (taking time from log files) | 2006-05-02 11:10 → 2006-05-29 08:20 A (+27d) | 2006-05-02 11:40 → 2006-05-29 08:50 A (+27d) |  | 0% → 100% | 0d → none |  |
| 114 | Check: Sign Off on Checkout Scripts,Logs and Results | 2006-05-02 11:40 → 2006-05-29 08:50 A (+27d) | 2006-05-02 12:00 → 2006-05-29 09:10 A (+27d) |  | 0% → 100% | 0d → none |  |
| 115 | **Install & perform tests on ONE_MAIN BC B Side** | 2006-05-02 13:00 → 2006-05-29 09:10 A (+27d) | 2006-05-03 08:30 → 2006-05-30 10:10 A (+27d) | 0.56d → 1.12d | 0% → 100% | 0d → none |  |
| 116 | **Install ONE_MAIN BC (B)** | 2006-05-02 13:00 → 2006-05-29 09:10 A (+27d) | 2006-05-02 15:00 → 2006-05-29 11:10 A (+27d) |  | 0% → 100% | 0d → none |  |
| 117 | Configuration and starting processes | 2006-05-02 13:00 → 2006-05-29 09:10 A (+27d) | 2006-05-02 14:00 → 2006-05-29 10:10 A (+27d) |  | 0% → 100% | 0d → none | constraint none → finish no earlier than 2006-04-26 17:00 |
| 118 | ITG Checkout script (ONE_MAIN Session) | 2006-05-02 14:00 → 2006-05-29 10:10 A (+27d) | 2006-05-02 14:20 → 2006-05-29 10:30 A (+27d) |  | 0% → 100% | 0d → none |  |
| 119 | Backup and Reporting | 2006-05-02 14:20 → 2006-05-29 10:30 A (+27d) | 2006-05-02 14:40 → 2006-05-29 10:50 A (+27d) |  | 0% → 100% | 0d → none |  |
| 120 | Check: Sign Off on Checkout Scripts, Logs and Results | 2006-05-02 14:40 → 2006-05-29 10:50 A (+27d) | 2006-05-02 15:00 → 2006-05-29 11:10 A (+27d) |  | 0% → 100% | 0d → none |  |
| 121 | **Failover ONE_MAIN BC (New to New)** | 2006-05-02 15:00 → 2006-05-29 11:10 A (+27d) | 2006-05-03 08:30 → 2006-05-30 10:10 A (+27d) | 0.31d → 0.88d | 0% → 100% | 0d → none |  |
| 122 | Cleanup | 2006-05-02 15:00 → 2006-05-29 11:10 A (+27d) | 2006-05-02 15:20 → 2006-05-29 17:00 A (+27d) | 20min → 290min | 0% → 100% | 0d → none | constraint none → finish no earlier than 2006-05-29 17:00 |
| 123 | Initial setup for test Drivers (starting processes on BC Slave.) | 2006-05-02 15:20 → 2006-05-30 08:00 A (+28d) | 2006-05-02 15:40 → 2006-05-30 08:20 A (+28d) |  | 0% → 100% | 0d → none |  |
| 124 | Quote/Order ONE_MAIN traffic going before/during/after failover. Test Execution | 2006-05-02 15:40 → 2006-05-30 08:20 A (+28d) | 2006-05-02 16:00 → 2006-05-30 08:40 A (+28d) |  | 0% → 100% | 0d → none | constraint none → start no earlier than 2006-04-26 08:00 |
| 125 | ITG Checkout script (ONE_MAIN Session) | 2006-05-02 16:00 → 2006-05-30 08:40 A (+28d) | 2006-05-02 16:20 → 2006-05-30 09:00 A (+28d) |  | 0% → 100% | 0d → none |  |
| 126 | Backup for Failover and ITG Checkout | 2006-05-02 16:20 → 2006-05-30 09:00 A (+28d) | 2006-05-02 16:40 → 2006-05-30 09:20 A (+28d) |  | 0% → 100% | 0d → none |  |
| 127 | Generate Report for Failover Timings for all BC Processes (taking time from log files) | 2006-05-02 16:40 → 2006-05-30 09:20 A (+28d) | 2006-05-03 08:10 → 2006-05-30 09:50 A (+27d) |  | 0% → 100% | 0d → none |  |
| 128 | Check: Sign Off on Checkout Scripts,Logs and Results | 2006-05-03 08:10 → 2006-05-30 09:50 A (+27d) | 2006-05-03 08:30 → 2006-05-30 10:10 A (+27d) |  | 0% → 100% | 0d → none |  |
| 129 | **4 Hour Endurance Test** | 2006-05-03 08:30 → 2006-04-26 08:00 A (-7d) | 2006-05-03 15:50 → 2006-04-26 12:00 A (-7d) | 0.79d → 0.5d | 0% → 100% | 0d → none |  |
| 130 | Cleanup for W_MAIN and ONE_MAIN BC | 2006-05-03 08:30 → 2006-04-26 08:00 A (-7d) | 2006-05-03 08:50 → 2006-04-26 08:20 A (-7d) |  | 0% → 100% | 0d → none |  |
| 131 | Driver setup | 2006-05-03 08:50 → 2006-04-26 08:00 A (-7d) | 2006-05-03 09:10 → 2006-04-26 08:10 A (-7d) | 20min → 10min | 0% → 100% | 0d → none |  |
| 132 | CAS bounce | 2006-05-03 09:10 → 2006-04-26 08:00 A (-7d) | 2006-05-03 09:30 → 2006-04-26 08:30 A (-7d) | 20min → 30min | 0% → 100% | 0d → none |  |
| 133 | 4 hour Sanity Check | 2006-05-03 09:30 → 2006-04-26 08:00 A (-7d) | 2006-05-03 14:30 → 2006-04-26 12:00 A (-7d) |  | 0% → 100% | 0d → none |  |
| 134 | endOfPerformance and Backup and Reporting | 2006-05-03 14:30 → 2006-04-26 08:00 A (-7d) | 2006-05-03 15:30 → 2006-04-26 08:30 A (-7d) | 1h → 30min | 0% → 100% | 0d → none |  |
| 135 | Check: Sign Off on Logs and Results | 2006-05-03 15:30 → 2006-04-26 08:00 A (-7d) | 2006-05-03 15:50 → 2006-04-26 08:30 A (-7d) | 20min → 30min | 0% → 100% | 0d → none |  |
| 136 | **Check: Overall Verification** | 2006-05-03 15:50 → 2006-04-26 12:00 (-7d) | 2006-05-03 15:50 → 2006-04-26 12:00 (-7d) |  |  | 0d → 23.77d |  |
| 137 | All Results Signed Off | 2006-05-03 15:50 → 2006-04-26 12:00 (-7d) | 2006-05-03 15:50 → 2006-04-26 12:00 (-7d) |  |  | 0d → 23.77d |  |
| 138 | All Tests Completed | 2006-05-03 15:50 → 2006-04-26 12:00 (-7d) | 2006-05-03 15:50 → 2006-04-26 12:00 (-7d) |  |  | 0d → 23.77d |  |
| 139 | Results Approved by Paul and Respective Groups | 2006-05-03 15:50 → 2006-04-26 12:00 (-7d) | 2006-05-03 15:50 → 2006-04-26 12:00 (-7d) |  |  | 0d → 23.77d |  |
