How a schedule from MS Project changed from version to version. A marks actual dates.

## Version 1 (saved 2006-05-15, file Original_OT2_ProjectPlan.mpp)

| ID | WBS | Task | Duration | Start | Finish | Predecessors | Total float | Constraint |
| --- | --- | --- | --- | --- | --- | --- | --- | --- |
| 1 | 1 | **Rollout Task** | 7.88d | 2006-05-15 08:00 | 2006-05-24 16:00 |  | 0d |  |
| 2 | 1.1 | **Pre-Rollout Verification/Changes [If required]** | 0d | 2006-05-15 08:00 | 2006-05-15 08:00 |  | 1d |  |
| 3 |  | Database changes | 0h | 2006-05-15 08:00 | 2006-05-15 08:00 |  | 1d | start no earlier than 2006-05-15 08:00 |
| 4 |  | Extent Map changes | 0h | 2006-05-15 08:00 | 2006-05-15 08:00 | 3 | 1d |  |
| 5 |  | Version label verification on all boxes | 0h | 2006-05-15 08:00 | 2006-05-15 08:00 | 4 | 1d |  |
| 6 |  | Check: Tier Lead has verified information and obtained a sign off | 0h | 2006-05-15 08:00 | 2006-05-15 08:00 | 3, 4, 5 | 1d |  |
| 7 | 1.4 | **Install and Perform Tests on Hybrid BC A Side** | 2.84d | 2006-05-16 08:00 | 2006-05-18 15:45 | 2 | 0d |  |
| 8 | 1.10 | **Install Hybrid BC (A)** | 0.27d | 2006-05-16 08:00 | 2006-05-16 10:10 |  | 0d |  |
| 9 |  | Configuration and starting processes | 1h | 2006-05-16 08:00 | 2006-05-16 09:00 |  | 0d | start no earlier than 2006-05-16 08:00 |
| 10 |  | ITG Checkout script (W_MAIN Session) | 20min | 2006-05-16 09:00 | 2006-05-16 09:20 | 9 | 0d |  |
| 11 |  | Backup and Reporting | 20min | 2006-05-16 09:20 | 2006-05-16 09:40 | 10 | 0d |  |
| 12 |  | Check: Sign Off on Checkout Scripts, Logs and Results | 30min | 2006-05-16 09:40 | 2006-05-16 10:10 | 11 | 0d |  |
| 13 |  | FIX Strategy Order Test | 2h | 2006-05-16 10:10 | 2006-05-16 13:10 | 8 | 0d |  |
| 14 | 1.2.3 | **Global Dependency Test** | 0.17d | 2006-05-16 13:10 | 2006-05-16 14:30 | 13 | 0d |  |
| 15 |  | Test Execution | 30min | 2006-05-16 13:10 | 2006-05-16 13:40 | 12 | 0d | start no earlier than 2006-05-05 08:00 |
| 16 |  | Log Backup and Reporting | 20min | 2006-05-16 13:40 | 2006-05-16 14:00 | 15 | 0d |  |
| 17 |  | Check:Log and Results verification | 30min | 2006-05-16 14:00 | 2006-05-16 14:30 | 16 | 0d |  |
| 18 | 1.2.4 | **Mult Class Quote Step-up with Quotes only (Scenario 0)** | 0.32d | 2006-05-16 14:30 | 2006-05-17 08:05 | 14 | 0d |  |
| 19 |  | BC Cleanup, Initial Driver Setup, | 20min | 2006-05-16 14:30 | 2006-05-16 14:50 | 17 | 0d | start no earlier than 2006-04-24 08:00 |
| 20 |  | Test Execution for No BOTR | 1h | 2006-05-16 14:50 | 2006-05-16 15:50 | 19 | 0d | start no earlier than 2006-04-24 08:00 |
| 21 |  | endOfPerformance and Backup | 30min | 2006-05-16 15:50 | 2006-05-16 16:20 | 20 | 0d |  |
| 22 |  | Reporting through KR site | 15min | 2006-05-16 16:20 | 2006-05-16 16:35 | 21 | 0d |  |
| 23 |  | Check: Sign Off on Logs and Results | 30min | 2006-05-16 16:35 | 2006-05-17 08:05 | 22 | 0d |  |
| 24 | 1.2.5 | **Hybrid test scenario 5 (Product State Change Test)** | 0.25d | 2006-05-17 08:05 | 2006-05-17 10:05 | 18 | 0d |  |
| 25 |  | BC Cleanup, Initial Driver Setup, | 20min | 2006-05-17 08:05 | 2006-05-17 08:25 | 17 | 0d |  |
| 26 |  | Test Execution - Global Server Bounce | 40min | 2006-05-17 08:25 | 2006-05-17 09:05 | 25 | 0d |  |
| 27 |  | Monitor and Backup logs | 20min | 2006-05-17 09:05 | 2006-05-17 09:25 | 26 | 0d |  |
| 28 |  | Reporting through KR site | 10min | 2006-05-17 09:25 | 2006-05-17 09:35 | 27 | 0d |  |
| 29 |  | Check: Sign Off on Logs and Results | 30min | 2006-05-17 09:35 | 2006-05-17 10:05 | 28 | 0d |  |
| 30 | 1.12 | **Multi-class Quote step-up test with BOTR [Scenario 3]** | 0.45d | 2006-05-17 10:05 | 2006-05-17 14:40 | 24 | 0d |  |
| 31 |  | BC Cleanup, Initial Driver Setup, | 20min | 2006-05-17 10:05 | 2006-05-17 10:25 | 29 | 0d |  |
| 32 |  | Test Execution for No BOTR | 1h | 2006-05-17 10:25 | 2006-05-17 11:25 | 31 | 0d |  |
| 33 |  | BOTR from 4000 to 16000 | 30min | 2006-05-17 11:25 | 2006-05-17 11:55 | 32 | 0d |  |
| 34 |  | endOfPerformance and Backup | 45min | 2006-05-17 11:55 | 2006-05-17 13:40 | 33 | 0d |  |
| 35 |  | Reporting through KR site | 30min | 2006-05-17 13:40 | 2006-05-17 14:10 | 34 | 0d |  |
| 36 |  | Check: Sign Off on Logs and Results | 30min | 2006-05-17 14:10 | 2006-05-17 14:40 | 35 | 0d |  |
| 37 | 1.13 | **Single-class Quote step-up test with BOTR [Scenario 1]** | 0.41d | 2006-05-17 14:40 | 2006-05-18 08:55 | 30 | 0d |  |
| 38 |  | BC Cleanup, Initial Driver Setup, | 20min | 2006-05-17 14:40 | 2006-05-17 15:00 | 36 | 0d |  |
| 39 |  | Test Execution for No BOTR | 1h | 2006-05-17 15:00 | 2006-05-17 16:00 | 38 | 0d |  |
| 40 |  | BOTR 16000 | 10min | 2006-05-17 16:00 | 2006-05-17 16:10 | 39 | 0d |  |
| 41 |  | endOfPerformance and Backup | 45min | 2006-05-17 16:10 | 2006-05-17 16:55 | 40 | 0d |  |
| 42 |  | Reporting through KR site | 30min | 2006-05-17 16:55 | 2006-05-18 08:25 | 41 | 0d |  |
| 43 |  | Check: Sign Off On Logs and Results | 30min | 2006-05-18 08:25 | 2006-05-18 08:55 | 42 | 0d |  |
| 44 | 1.14 | **Multi-class Order step-up test [Scenario 4]** | 0.24d | 2006-05-18 08:55 | 2006-05-18 10:50 | 37 | 0d |  |
| 45 |  | BC Cleanup, Initial Driver Setup, | 20min | 2006-05-18 08:55 | 2006-05-18 09:15 | 43 | 0d |  |
| 46 |  | Test Execution for No BOTR | 1h | 2006-05-18 09:15 | 2006-05-18 10:15 | 45 | 0d |  |
| 47 |  | endOfPerformance and Backup | 20min | 2006-05-18 10:15 | 2006-05-18 10:35 | 46 | 0d |  |
| 48 |  | Reporting through KR site | 15min | 2006-05-18 10:35 | 2006-05-18 10:50 | 47 | 0d |  |
| 49 |  | Check: Sign Off on Logs and Results | 0h | 2006-05-18 10:50 | 2006-05-18 10:50 | 48 | 0d |  |
| 50 | 1.15 | **Hybrid BC failover (new release to old release)** | 0.49d | 2006-05-18 10:50 | 2006-05-18 15:45 | 44 | 0d |  |
| 51 |  | BC Cleanup start A Side as Master | 20min | 2006-05-18 10:50 | 2006-05-18 11:10 | 49 | 0d |  |
| 52 |  | Manual Testing by Mark Sabor | 1h | 2006-05-18 11:10 | 2006-05-18 13:10 | 51 | 0d |  |
| 53 |  | Initial setup for test Drivers (starting processes on BC Slave.) | 25min | 2006-05-18 13:10 | 2006-05-18 13:35 | 52 | 0d |  |
| 54 |  | Quote/Order BC20 Hybrid traffic going before/during/after failover. Test Execution | 40min | 2006-05-18 13:35 | 2006-05-18 14:15 | 53 | 0d |  |
| 55 |  | ITG Checkout script (for W_MAIN Session) | 20min | 2006-05-18 14:15 | 2006-05-18 14:35 | 54 | 0d |  |
| 56 |  | Backup for Failover and ITG Checkout | 20min | 2006-05-18 14:35 | 2006-05-18 14:55 | 55 | 0d |  |
| 57 |  | Generate Report for Failover Timings for all BC Processes (taking time from log files) | 20min | 2006-05-18 14:55 | 2006-05-18 15:15 | 56 | 0d |  |
| 58 |  | Check: Sign Off on Checkout Scripts, Logs and Results | 30min | 2006-05-18 15:15 | 2006-05-18 15:45 | 57 | 0d |  |
| 59 | 1.5 | **Install and Perform Failover on Hybrid BC B Side** | 0.76d | 2006-05-18 15:45 | 2006-05-19 13:50 | 7 | 0d |  |
| 60 | 1.16 | **Install Hybrid BC "B" side** | 0.31d | 2006-05-18 15:45 | 2006-05-19 09:15 | 50 | 0d |  |
| 61 |  | Cleanup | 20min | 2006-05-18 15:45 | 2006-05-18 16:05 | 58 | 0d |  |
| 62 |  | Configuration and starting processes | 1h | 2006-05-18 16:05 | 2006-05-19 08:05 | 61 | 0d |  |
| 63 |  | ITG Checkout script (W_MAIN Session) | 20min | 2006-05-19 08:05 | 2006-05-19 08:25 | 62 | 0d |  |
| 64 |  | Backup and Reporting | 20min | 2006-05-19 08:25 | 2006-05-19 08:45 | 63 | 0d |  |
| 65 |  | Check: Sign Off on Checkout Scripts, Logs and Results | 30min | 2006-05-19 08:45 | 2006-05-19 09:15 | 64 | 0d |  |
| 66 | 1.17 | **Hybrid BC failover (new release to new release)** | 0.45d | 2006-05-19 09:15 | 2006-05-19 13:50 | 60 | 0d |  |
| 67 |  | Initial setup for test Drivers (starting processes on BC Slave.) | 25min | 2006-05-19 09:15 | 2006-05-19 09:40 | 65 | 0d |  |
| 68 |  | Manual Testing by Mark Sabor | 1h | 2006-05-19 09:40 | 2006-05-19 10:40 | 67 | 0d |  |
| 69 |  | Quote/Order BC20 Hybrid traffic going before/during/after failover. Test Execution | 40min | 2006-05-19 10:40 | 2006-05-19 11:20 | 68 | 0d |  |
| 70 |  | ITG Checkout script (for W_MAIN Session) | 20min | 2006-05-19 11:20 | 2006-05-19 11:40 | 69 | 0d |  |

| ID | WBS | Task | Duration | Start | Finish | Predecessors | Total float |
| --- | --- | --- | --- | --- | --- | --- | --- |
| 71 |  | Backup for Failover and ITG Checkout | 20min | 2006-05-19 11:40 | 2006-05-19 12:00 | 70 | 0d |
| 72 |  | Generate Report for Failover Timings for all BC Processes (taking time from log files) | 20min | 2006-05-19 13:00 | 2006-05-19 13:20 | 71 | 0d |
| 73 |  | Check: Sign Off on Checkout Scripts,Logs and Results | 30min | 2006-05-19 13:20 | 2006-05-19 13:50 | 72 | 0d |
| 74 | 1.6 | **Install and Perform Tests on ONE_MAIN BC A Side** | 1.26d | 2006-05-19 13:50 | 2006-05-22 15:55 | 59 | 0d |
| 75 | 1.26 | **Install ONE_MAIN BC (A)** | 0.27d | 2006-05-19 13:50 | 2006-05-19 16:00 | 66 | 0d |
| 76 |  | Configuration and starting processes | 1h | 2006-05-19 13:50 | 2006-05-19 14:50 | 73 | 0d |
| 77 |  | ITG Checkout script (ONE_MAIN Session) | 20min | 2006-05-19 14:50 | 2006-05-19 15:10 | 76 | 0d |
| 78 |  | Backup and Reporting | 20min | 2006-05-19 15:10 | 2006-05-19 15:30 | 77 | 0d |
| 79 |  | Check: Sign Off on Checkout Scripts, Logs and Results | 30min | 2006-05-19 15:30 | 2006-05-19 16:00 | 78 | 0d |
| 80 | 1.27 | **Multi-class Order step-up test for ONE_MAIN [Scenario 2]** | 0.29d | 2006-05-19 16:00 | 2006-05-22 09:20 | 75 | 0d |
| 81 |  | BC Cleanup, Initial Driver Setup, | 20min | 2006-05-19 16:00 | 2006-05-19 16:20 |  | 0d |
| 82 |  | Test Execution for No BOTR | 1h | 2006-05-19 16:20 | 2006-05-22 08:20 | 81 | 0d |
| 83 |  | endOfPerformance and Backup | 15min | 2006-05-22 08:20 | 2006-05-22 08:35 | 82 | 0d |
| 84 |  | Reporting through KR site | 15min | 2006-05-22 08:35 | 2006-05-22 08:50 | 83 | 0d |
| 85 |  | Check: Sign Off on Logs and Results | 30min | 2006-05-22 08:50 | 2006-05-22 09:20 | 84 | 0d |
| 86 | 1.28 | **Multi-class Quote step-up test [Scenario 1]** | 0.33d | 2006-05-22 09:20 | 2006-05-22 12:00 | 80 | 0d |
| 87 |  | BC Cleanup, Initial Driver Setup, | 20min | 2006-05-22 09:20 | 2006-05-22 09:40 |  | 0d |
| 88 |  | Test Execution for No BOTR | 1h | 2006-05-22 09:40 | 2006-05-22 10:40 | 87 | 0d |
| 89 |  | endOfPerformance and Backup | 30min | 2006-05-22 10:40 | 2006-05-22 11:10 | 88 | 0d |
| 90 |  | Reporting through KR site | 20min | 2006-05-22 11:10 | 2006-05-22 11:30 | 89 | 0d |
| 91 |  | Check: Sign Off on Logs and Results | 30min | 2006-05-22 11:30 | 2006-05-22 12:00 | 90 | 0d |
| 92 | 1.30 | **Failover ONE_MAIN BC (Old to New)** | 0.36d | 2006-05-22 13:00 | 2006-05-22 15:55 | 86 | 0d |
| 93 |  | Cleanup | 20min | 2006-05-22 13:00 | 2006-05-22 13:20 | 91 | 0d |
| 94 |  | Initial setup for test Drivers (starting processes on BC Slave.) | 25min | 2006-05-22 13:20 | 2006-05-22 13:45 | 93 | 0d |
| 95 |  | Quote/Order ONE_MAIN traffic going before/during/after failover. Test Execution | 40min | 2006-05-22 13:45 | 2006-05-22 14:25 | 94 | 0d |
| 96 |  | ITG Checkout script (for ONE_MAIN Session) | 20min | 2006-05-22 14:25 | 2006-05-22 14:45 | 95 | 0d |
| 97 |  | Backup for Failover and ITG Checkout | 20min | 2006-05-22 14:45 | 2006-05-22 15:05 | 96 | 0d |
| 98 |  | Generate Report for Failover Timings for all BC Processes (taking time from log files) | 20min | 2006-05-22 15:05 | 2006-05-22 15:25 | 97 | 0d |
| 99 |  | Check: Sign Off on Checkout Scripts,Logs and Results | 30min | 2006-05-22 15:25 | 2006-05-22 15:55 | 98 | 0d |
| 100 | 1.7 | **Install and Perform failover on ONE_MAIN BC B Side** | 0.59d | 2006-05-22 15:55 | 2006-05-23 11:40 | 74 | 0d |
| 101 | 1.31 | **Install ONE_MAIN BC (B)** | 0.27d | 2006-05-22 15:55 | 2006-05-23 09:05 | 92 | 0d |
| 102 |  | Configuration and starting processes | 1h | 2006-05-22 15:55 | 2006-05-22 16:55 | 99 | 0d |
| 103 |  | ITG Checkout script ( ONE_MAIN Session) | 20min | 2006-05-22 16:55 | 2006-05-23 08:15 | 102 | 0d |
| 104 |  | Backup and Reporting | 20min | 2006-05-23 08:15 | 2006-05-23 08:35 | 103 | 0d |
| 105 |  | Check: Sign Off on Checkout Scripts, Logs and Results | 30min | 2006-05-23 08:35 | 2006-05-23 09:05 | 104 | 0d |
| 106 | 1.5.2 | **Failover ONE_MAIN BC (New to New)** | 0.32d | 2006-05-23 09:05 | 2006-05-23 11:40 | 101 | 0d |
| 107 |  | Initial setup for test Drivers (starting processes on BC Slave.) | 25min | 2006-05-23 09:05 | 2006-05-23 09:30 | 105 | 0d |
| 108 |  | Quote/Order ONE_MAIN traffic going before/during/after failover. Test Execution | 40min | 2006-05-23 09:30 | 2006-05-23 10:10 | 107 | 0d |
| 109 |  | ITG Checkout script (for ONE_MAIN Session) | 20min | 2006-05-23 10:10 | 2006-05-23 10:30 | 108 | 0d |
| 110 |  | Backup for Failover and ITG Checkout | 20min | 2006-05-23 10:30 | 2006-05-23 10:50 | 109 | 0d |
| 111 |  | Generate Report for Failover Timings for all BC Processes (taking time from log files) | 20min | 2006-05-23 10:50 | 2006-05-23 11:10 | 110 | 0d |
| 112 |  | Check: Sign Off on Checkout Scripts,Logs and Results | 30min | 2006-05-23 11:10 | 2006-05-23 11:40 | 111 | 0d |
| 113 | 1.6 | **4 Hour Endurance Test** | 0.81d | 2006-05-23 11:40 | 2006-05-24 10:10 | 100 | 0d |
| 114 |  | Cleanup for W_MAIN and ONE_MAIN BC | 20min | 2006-05-23 11:40 | 2006-05-23 12:00 |  | 0d |
| 115 |  | Driver setup | 20min | 2006-05-23 13:00 | 2006-05-23 13:20 | 114 | 0d |
| 116 |  | CAS bounce | 20min | 2006-05-23 13:20 | 2006-05-23 13:40 | 115 | 0d |
| 117 |  | 4 hour Sanity Check | 4h | 2006-05-23 13:40 | 2006-05-24 08:40 | 116 | 0d |
| 118 |  | endOfPerformance and Backup and Reporting | 1h | 2006-05-24 08:40 | 2006-05-24 09:40 | 117 | 0d |
| 119 |  | Check: Sign Off on Logs and Results | 30min | 2006-05-24 09:40 | 2006-05-24 10:10 | 118 | 0d |
| 120 | 1.42 | **Server Side Full Cleanup after All Server upgrades.** | 0.6d | 2006-05-24 10:10 | 2006-05-24 16:00 | 113 | 0d |
| 121 |  | Time server full startup after cleanup (See Server Startup Timing Page) | 4h | 2006-05-24 10:10 | 2006-05-24 15:10 | 119 | 0d |
| 122 |  | Backup for server Timings | 20min | 2006-05-24 15:10 | 2006-05-24 15:30 | 121 | 0d |
| 123 |  | Check: Sign Off on Logs and Results | 30min | 2006-05-24 15:30 | 2006-05-24 16:00 | 122 | 0d |
| 124 | 1.8 | **Check: Overall Verification** | 0d | 2006-05-24 15:30 | 2006-05-24 15:30 |  | 0.06d |
| 125 |  | All Results Signed Off | 0h | 2006-05-24 15:30 | 2006-05-24 15:30 | 122 | 0.06d |
| 126 |  | All Tests Completed | 0h | 2006-05-24 15:30 | 2006-05-24 15:30 | 122 | 0.06d |
| 127 |  | Results approved by Paul and Respective Groups | 0h | 2006-05-24 15:30 | 2006-05-24 15:30 | 122 | 0.06d |

## Version 2 (saved 2006-05-24, file OT2_ProjectPlan.mpp)

Last finish stays 2006-05-24. Complete tasks 0 → 81.

Removed: 14 Global Dependency Test; 15 Test Execution; 16 Log Backup and Reporting; 17 Check:Log and Results verification; 24 Hybrid test scenario 5 (Product State Change Test); 25 BC Cleanup, Initial Driver Setup,; 26 Test Execution - Global Server Bounce; 27 Monitor and Backup logs; 28 Reporting through KR site; 29 Check: Sign Off on Logs and Results

Changed:

| ID | Task | Start | Finish | Duration | Complete | Total float | Predecessors |
| --- | --- | --- | --- | --- | --- | --- | --- |
| 1 | **Rollout Task** | 2006-05-15 08:00 A |  |  | 0% → 74% |  |  |
| 2 | **Pre-Rollout Verification/Changes [If required]** | 2006-05-15 08:00 A | 2006-05-15 08:00 A |  | 0% → 100% | 1d → none |  |
| 3 | Database changes | 2006-05-15 08:00 A | 2006-05-15 08:00 A |  | 0% → 100% | 1d → none |  |
| 4 | Extent Map changes | 2006-05-15 08:00 A | 2006-05-15 08:00 A |  | 0% → 100% | 1d → none |  |
| 5 | Version label verification on all boxes | 2006-05-15 08:00 A | 2006-05-15 08:00 A |  | 0% → 100% | 1d → none |  |
| 6 | Check: Tier Lead has verified information and obtained a sign off | 2006-05-15 08:00 A | 2006-05-15 08:00 A |  | 0% → 100% | 1d → none |  |
| 7 | **Install and Perform Tests on Hybrid BC A Side** | 2006-05-16 08:00 A | 2006-05-18 15:45 → 2006-05-18 11:25 | 2.84d → 2.43d | 0% → 90% | 0d → 4.45d |  |
| 8 | **Install Hybrid BC (A)** | 2006-05-16 08:00 A | 2006-05-16 10:10 A |  | 0% → 100% | 0d → none |  |
| 9 | Configuration and starting processes | 2006-05-16 08:00 A | 2006-05-16 09:00 A |  | 0% → 100% | 0d → none |  |
| 10 | ITG Checkout script (W_MAIN Session) | 2006-05-16 09:00 A | 2006-05-16 09:20 A |  | 0% → 100% | 0d → none |  |
| 11 | Backup and Reporting | 2006-05-16 09:20 A | 2006-05-16 09:40 A |  | 0% → 100% | 0d → none |  |
| 12 | Check: Sign Off on Checkout Scripts, Logs and Results | 2006-05-16 09:40 A | 2006-05-16 10:10 A |  | 0% → 100% | 0d → none |  |
| 14 | **Mult Class Quote Step-up with Quotes only (Scenario 0)** | 2006-05-16 14:30 → 2006-05-16 13:10 A | 2006-05-17 08:05 → 2006-05-16 15:45 A (-1d) |  | 0% → 100% | 0d → none | Global Dependency Test → 13 |
| 15 | BC Cleanup, Initial Driver Setup, | 2006-05-16 14:30 → 2006-05-16 13:10 A | 2006-05-16 14:50 → 2006-05-16 13:30 A |  | 0% → 100% | 0d → none | Check:Log and Results verification → none |
| 16 | Test Execution for No BOTR | 2006-05-16 14:50 → 2006-05-16 13:30 A | 2006-05-16 15:50 → 2006-05-16 14:30 A |  | 0% → 100% | 0d → none |  |
| 17 | endOfPerformance and Backup | 2006-05-16 15:50 → 2006-05-16 14:30 A | 2006-05-16 16:20 → 2006-05-16 15:00 A |  | 0% → 100% | 0d → none |  |
| 18 | Reporting through KR site | 2006-05-16 16:20 → 2006-05-16 15:00 A | 2006-05-16 16:35 → 2006-05-16 15:15 A |  | 0% → 100% | 0d → none |  |
| 19 | Check: Sign Off on Logs and Results | 2006-05-16 16:35 → 2006-05-16 15:15 A | 2006-05-17 08:05 → 2006-05-16 15:45 A (-1d) |  | 0% → 100% | 0d → none |  |
| 20 | **Multi-class Quote step-up test with BOTR [Scenario 3]** | 2006-05-17 10:05 → 2006-05-16 15:45 A (-1d) | 2006-05-17 14:40 → 2006-05-17 10:20 A |  | 0% → 100% | 0d → none | Hybrid test scenario 5 (Product State Change Test) → 14 |
| 21 | BC Cleanup, Initial Driver Setup, | 2006-05-17 10:05 → 2006-05-16 15:45 A (-1d) | 2006-05-17 10:25 → 2006-05-16 16:05 A (-1d) |  | 0% → 100% | 0d → none | Check: Sign Off on Logs and Results → none |
| 22 | Test Execution for No BOTR | 2006-05-17 10:25 → 2006-05-16 16:05 A (-1d) | 2006-05-17 11:25 → 2006-05-17 08:05 A |  | 0% → 100% | 0d → none |  |
| 23 | BOTR from 4000 to 16000 | 2006-05-17 11:25 → 2006-05-17 08:05 A | 2006-05-17 11:55 → 2006-05-17 08:35 A |  | 0% → 100% | 0d → none |  |
| 24 | endOfPerformance and Backup | 2006-05-17 11:55 → 2006-05-17 08:35 A | 2006-05-17 13:40 → 2006-05-17 09:20 A |  | 0% → 100% | 0d → none |  |
| 25 | Reporting through KR site | 2006-05-17 13:40 → 2006-05-17 09:20 A | 2006-05-17 14:10 → 2006-05-17 09:50 A |  | 0% → 100% | 0d → none |  |
| 26 | Check: Sign Off on Logs and Results | 2006-05-17 14:10 → 2006-05-17 09:50 A | 2006-05-17 14:40 → 2006-05-17 10:20 A |  | 0% → 100% | 0d → none |  |
| 27 | **Single-class Quote step-up test with BOTR [Scenario 1]** | 2006-05-17 14:40 → 2006-05-17 10:20 A | 2006-05-18 08:55 → 2006-05-17 14:35 A (-1d) |  | 0% → 100% | 0d → none |  |
| 28 | BC Cleanup, Initial Driver Setup, | 2006-05-17 14:40 → 2006-05-17 10:20 A | 2006-05-17 15:00 → 2006-05-17 10:40 A |  | 0% → 100% | 0d → none |  |
| 29 | Test Execution for No BOTR | 2006-05-17 15:00 → 2006-05-17 10:40 A | 2006-05-17 16:00 → 2006-05-17 11:40 A |  | 0% → 100% | 0d → none |  |
| 30 | BOTR 16000 | 2006-05-17 16:00 → 2006-05-17 11:40 A | 2006-05-17 16:10 → 2006-05-17 11:50 A |  | 0% → 100% | 0d → none |  |
| 31 | endOfPerformance and Backup | 2006-05-17 16:10 → 2006-05-17 11:50 A | 2006-05-17 16:55 → 2006-05-17 13:35 A |  | 0% → 100% | 0d → none |  |
| 32 | Reporting through KR site | 2006-05-17 16:55 → 2006-05-17 13:35 A | 2006-05-18 08:25 → 2006-05-17 14:05 A (-1d) |  | 0% → 100% | 0d → none |  |
| 33 | Check: Sign Off On Logs and Results | 2006-05-18 08:25 → 2006-05-17 14:05 A (-1d) | 2006-05-18 08:55 → 2006-05-17 14:35 A (-1d) |  | 0% → 100% | 0d → none |  |
| 34 | **Multi-class Order step-up test [Scenario 4]** | 2006-05-18 08:55 → 2006-05-17 14:35 A (-1d) | 2006-05-18 10:50 → 2006-05-17 16:30 A (-1d) |  | 0% → 100% | 0d → none |  |
| 35 | BC Cleanup, Initial Driver Setup, | 2006-05-18 08:55 → 2006-05-17 14:35 A (-1d) | 2006-05-18 09:15 → 2006-05-17 14:55 A (-1d) |  | 0% → 100% | 0d → none |  |
| 36 | Test Execution for No BOTR | 2006-05-18 09:15 → 2006-05-17 14:55 A (-1d) | 2006-05-18 10:15 → 2006-05-17 15:55 A (-1d) |  | 0% → 100% | 0d → none |  |
| 37 | endOfPerformance and Backup | 2006-05-18 10:15 → 2006-05-17 15:55 A (-1d) | 2006-05-18 10:35 → 2006-05-17 16:15 A (-1d) |  | 0% → 100% | 0d → none |  |
| 38 | Reporting through KR site | 2006-05-18 10:35 → 2006-05-17 16:15 A (-1d) | 2006-05-18 10:50 → 2006-05-17 16:30 A (-1d) |  | 0% → 100% | 0d → none |  |
| 39 | Check: Sign Off on Logs and Results | 2006-05-18 10:50 → 2006-05-17 16:30 A (-1d) | 2006-05-18 10:50 → 2006-05-17 16:30 A (-1d) |  | 0% → 100% | 0d → none |  |
| 40 | **Hybrid BC failover (new release to old release)** | 2006-05-18 10:50 → 2006-05-17 16:30 A (-1d) | 2006-05-18 15:45 → 2006-05-18 11:25 A |  | 0% → 100% | 0d → none |  |
| 41 | BC Cleanup start A Side as Master | 2006-05-18 10:50 → 2006-05-17 16:30 A (-1d) | 2006-05-18 11:10 → 2006-05-17 16:50 A (-1d) |  | 0% → 100% | 0d → none |  |
| 42 | Manual Testing by Mark Sabor | 2006-05-18 11:10 → 2006-05-17 16:50 A (-1d) | 2006-05-18 13:10 → 2006-05-18 08:50 A |  | 0% → 100% | 0d → none |  |
| 43 | Initial setup for test Drivers (starting processes on BC Slave.) | 2006-05-18 13:10 → 2006-05-18 08:50 A | 2006-05-18 13:35 → 2006-05-18 09:15 A |  | 0% → 100% | 0d → none |  |
| 44 | Quote/Order BC20 Hybrid traffic going before/during/after failover. Test Execution | 2006-05-18 13:35 → 2006-05-18 09:15 A | 2006-05-18 14:15 → 2006-05-18 09:55 A |  | 0% → 100% | 0d → none |  |
| 45 | ITG Checkout script (for W_MAIN Session) | 2006-05-18 14:15 → 2006-05-18 09:55 A | 2006-05-18 14:35 → 2006-05-18 10:15 A |  | 0% → 100% | 0d → none |  |
| 46 | Backup for Failover and ITG Checkout | 2006-05-18 14:35 → 2006-05-18 10:15 A | 2006-05-18 14:55 → 2006-05-18 10:35 A |  | 0% → 100% | 0d → none |  |
| 47 | Generate Report for Failover Timings for all BC Processes (taking time from log files) | 2006-05-18 14:55 → 2006-05-18 10:35 A | 2006-05-18 15:15 → 2006-05-18 10:55 A |  | 0% → 100% | 0d → none |  |
| 48 | Check: Sign Off on Checkout Scripts, Logs and Results | 2006-05-18 15:15 → 2006-05-18 10:55 A | 2006-05-18 15:45 → 2006-05-18 11:25 A |  | 0% → 100% | 0d → none |  |
| 49 | **Install and Perform Failover on Hybrid BC B Side** | 2006-05-18 15:45 → 2006-05-18 11:25 A | 2006-05-19 13:50 → 2006-05-19 09:30 A |  | 0% → 100% | 0d → none |  |
| 50 | **Install Hybrid BC "B" side** | 2006-05-18 15:45 → 2006-05-18 11:25 A | 2006-05-19 09:15 → 2006-05-18 14:55 A (-1d) |  | 0% → 100% | 0d → none |  |
| 51 | Cleanup | 2006-05-18 15:45 → 2006-05-18 11:25 A | 2006-05-18 16:05 → 2006-05-18 11:45 A |  | 0% → 100% | 0d → none |  |
| 52 | Configuration and starting processes | 2006-05-18 16:05 → 2006-05-18 11:45 A | 2006-05-19 08:05 → 2006-05-18 13:45 A (-1d) |  | 0% → 100% | 0d → none |  |
| 53 | ITG Checkout script (W_MAIN Session) | 2006-05-19 08:05 → 2006-05-18 13:45 A (-1d) | 2006-05-19 08:25 → 2006-05-18 14:05 A (-1d) |  | 0% → 100% | 0d → none |  |
| 54 | Backup and Reporting | 2006-05-19 08:25 → 2006-05-18 14:05 A (-1d) | 2006-05-19 08:45 → 2006-05-18 14:25 A (-1d) |  | 0% → 100% | 0d → none |  |
| 55 | Check: Sign Off on Checkout Scripts, Logs and Results | 2006-05-19 08:45 → 2006-05-18 14:25 A (-1d) | 2006-05-19 09:15 → 2006-05-18 14:55 A (-1d) |  | 0% → 100% | 0d → none |  |
| 56 | **Hybrid BC failover (new release to new release)** | 2006-05-19 09:15 → 2006-05-18 14:55 A (-1d) | 2006-05-19 13:50 → 2006-05-19 09:30 A |  | 0% → 100% | 0d → none |  |
| 57 | Initial setup for test Drivers (starting processes on BC Slave.) | 2006-05-19 09:15 → 2006-05-18 14:55 A (-1d) | 2006-05-19 09:40 → 2006-05-18 15:20 A (-1d) |  | 0% → 100% | 0d → none |  |
| 58 | Manual Testing by Mark Sabor | 2006-05-19 09:40 → 2006-05-18 15:20 A (-1d) | 2006-05-19 10:40 → 2006-05-18 16:20 A (-1d) |  | 0% → 100% | 0d → none |  |
| 59 | Quote/Order BC20 Hybrid traffic going before/during/after failover. Test Execution | 2006-05-19 10:40 → 2006-05-18 16:20 A (-1d) | 2006-05-19 11:20 → 2006-05-18 17:00 A (-1d) |  | 0% → 100% | 0d → none |  |
| 60 | ITG Checkout script (for W_MAIN Session) | 2006-05-19 11:20 → 2006-05-19 08:00 A | 2006-05-19 11:40 → 2006-05-19 08:20 A |  | 0% → 100% | 0d → none |  |
| 61 | Backup for Failover and ITG Checkout | 2006-05-19 11:40 → 2006-05-19 08:20 A | 2006-05-19 12:00 → 2006-05-19 08:40 A |  | 0% → 100% | 0d → none |  |
| 62 | Generate Report for Failover Timings for all BC Processes (taking time from log files) | 2006-05-19 13:00 → 2006-05-19 08:40 A | 2006-05-19 13:20 → 2006-05-19 09:00 A |  | 0% → 100% | 0d → none |  |
| 63 | Check: Sign Off on Checkout Scripts,Logs and Results | 2006-05-19 13:20 → 2006-05-19 09:00 A | 2006-05-19 13:50 → 2006-05-19 09:30 A |  | 0% → 100% | 0d → none |  |
| 64 | **Install and Perform Tests on ONE_MAIN BC A Side** | 2006-05-19 13:50 A | 2006-05-22 15:55 A |  | 0% → 100% | 0d → none |  |
| 65 | **Install ONE_MAIN BC (A)** | 2006-05-19 13:50 A | 2006-05-19 16:00 A |  | 0% → 100% | 0d → none |  |
| 66 | Configuration and starting processes | 2006-05-19 13:50 A | 2006-05-19 14:50 A |  | 0% → 100% | 0d → none |  |
| 67 | ITG Checkout script (ONE_MAIN Session) | 2006-05-19 14:50 A | 2006-05-19 15:10 A |  | 0% → 100% | 0d → none |  |
| 68 | Backup and Reporting | 2006-05-19 15:10 A | 2006-05-19 15:30 A |  | 0% → 100% | 0d → none |  |
| 69 | Check: Sign Off on Checkout Scripts, Logs and Results | 2006-05-19 15:30 A | 2006-05-19 16:00 A |  | 0% → 100% | 0d → none |  |
| 70 | **Multi-class Order step-up test for ONE_MAIN [Scenario 2]** | 2006-05-19 16:00 A | 2006-05-22 09:20 A |  | 0% → 100% | 0d → none |  |
| 71 | BC Cleanup, Initial Driver Setup, | 2006-05-19 16:00 A | 2006-05-19 16:20 A |  | 0% → 100% | 0d → none |  |

| ID | Task | Start | Finish | Complete | Total float |
| --- | --- | --- | --- | --- | --- |
| 72 | Test Execution for No BOTR | 2006-05-19 16:20 A | 2006-05-22 08:20 A | 0% → 100% | 0d → none |
| 73 | endOfPerformance and Backup | 2006-05-22 08:20 A | 2006-05-22 08:35 A | 0% → 100% | 0d → none |
| 74 | Reporting through KR site | 2006-05-22 08:35 A | 2006-05-22 08:50 A | 0% → 100% | 0d → none |
| 75 | Check: Sign Off on Logs and Results | 2006-05-22 08:50 A | 2006-05-22 09:20 A | 0% → 100% | 0d → none |
| 76 | **Multi-class Quote step-up test [Scenario 1]** | 2006-05-22 09:20 A | 2006-05-22 12:00 A | 0% → 100% | 0d → none |
| 77 | BC Cleanup, Initial Driver Setup, | 2006-05-22 09:20 A | 2006-05-22 09:40 A | 0% → 100% | 0d → none |
| 78 | Test Execution for No BOTR | 2006-05-22 09:40 A | 2006-05-22 10:40 A | 0% → 100% | 0d → none |
| 79 | endOfPerformance and Backup | 2006-05-22 10:40 A | 2006-05-22 11:10 A | 0% → 100% | 0d → none |
| 80 | Reporting through KR site | 2006-05-22 11:10 A | 2006-05-22 11:30 A | 0% → 100% | 0d → none |
| 81 | Check: Sign Off on Logs and Results | 2006-05-22 11:30 A | 2006-05-22 12:00 A | 0% → 100% | 0d → none |
| 82 | **Failover ONE_MAIN BC (Old to New)** | 2006-05-22 13:00 A | 2006-05-22 15:55 A | 0% → 100% | 0d → none |
| 83 | Cleanup | 2006-05-22 13:00 A | 2006-05-22 13:20 A | 0% → 100% | 0d → none |
| 84 | Initial setup for test Drivers (starting processes on BC Slave.) | 2006-05-22 13:20 A | 2006-05-22 13:45 A | 0% → 100% | 0d → none |
| 85 | Quote/Order ONE_MAIN traffic going before/during/after failover. Test Execution | 2006-05-22 13:45 A | 2006-05-22 14:25 A | 0% → 100% | 0d → none |
| 86 | ITG Checkout script (for ONE_MAIN Session) | 2006-05-22 14:25 A | 2006-05-22 14:45 A | 0% → 100% | 0d → none |
| 87 | Backup for Failover and ITG Checkout | 2006-05-22 14:45 A | 2006-05-22 15:05 A | 0% → 100% | 0d → none |
| 88 | Generate Report for Failover Timings for all BC Processes (taking time from log files) | 2006-05-22 15:05 A | 2006-05-22 15:25 A | 0% → 100% | 0d → none |
| 89 | Check: Sign Off on Checkout Scripts,Logs and Results | 2006-05-22 15:25 A | 2006-05-22 15:55 A | 0% → 100% | 0d → none |
| 90 | **Install and Perform failover on ONE_MAIN BC B Side** | 2006-05-22 15:55 A | 2006-05-23 11:40 A | 0% → 100% | 0d → none |
| 91 | **Install ONE_MAIN BC (B)** | 2006-05-22 15:55 A | 2006-05-23 09:05 A | 0% → 100% | 0d → none |
| 92 | Configuration and starting processes | 2006-05-22 15:55 A | 2006-05-22 16:55 A | 0% → 100% | 0d → none |
| 93 | ITG Checkout script ( ONE_MAIN Session) | 2006-05-22 16:55 A | 2006-05-23 08:15 A | 0% → 100% | 0d → none |
| 94 | Backup and Reporting | 2006-05-23 08:15 A | 2006-05-23 08:35 A | 0% → 100% | 0d → none |
| 95 | Check: Sign Off on Checkout Scripts, Logs and Results | 2006-05-23 08:35 A | 2006-05-23 09:05 A | 0% → 100% | 0d → none |
| 96 | **Failover ONE_MAIN BC (New to New)** | 2006-05-23 09:05 A | 2006-05-23 11:40 A | 0% → 100% | 0d → none |
| 97 | Initial setup for test Drivers (starting processes on BC Slave.) | 2006-05-23 09:05 A | 2006-05-23 09:30 A | 0% → 100% | 0d → none |
| 98 | Quote/Order ONE_MAIN traffic going before/during/after failover. Test Execution | 2006-05-23 09:30 A | 2006-05-23 10:10 A | 0% → 100% | 0d → none |
| 99 | ITG Checkout script (for ONE_MAIN Session) | 2006-05-23 10:10 A | 2006-05-23 10:30 A | 0% → 100% | 0d → none |
| 100 | Backup for Failover and ITG Checkout | 2006-05-23 10:30 A | 2006-05-23 10:50 A | 0% → 100% | 0d → none |
| 101 | Generate Report for Failover Timings for all BC Processes (taking time from log files) | 2006-05-23 10:50 A | 2006-05-23 11:10 A | 0% → 100% | 0d → none |
| 102 | Check: Sign Off on Checkout Scripts,Logs and Results | 2006-05-23 11:10 A | 2006-05-23 11:40 A | 0% → 100% | 0d → none |
