How a schedule from MS Project changed from version to version. A marks actual dates.

## Version 1 (saved 2006-03-31, file OT1_ProjectPlan.mpp)

| ID | WBS | Task | Duration | Start | Finish | Predecessors | Complete | Total float |
| --- | --- | --- | --- | --- | --- | --- | --- | --- |
| 1 | 1 | **Rollout Task** | 10.05d | 2006-03-17 08:00 A | 2006-03-31 08:25 |  | 99% | 0d |
| 2 | 1.1 | **Pre-Rollout Verification/Changes [If required]** | 1.5d | 2006-03-17 08:00 A | 2006-03-20 12:00 A |  | 100% |  |
| 3 |  | Database changes | 0h | 2006-03-17 08:00 A | 2006-03-17 08:00 A |  | 100% |  |
| 4 |  | Extent Map changes | 0h | 2006-03-17 08:00 A | 2006-03-17 08:00 A | 3 | 100% |  |
| 5 |  | Version label verification on all boxes | 12h | 2006-03-17 08:00 A | 2006-03-20 12:00 A | 4 | 100% |  |
| 6 |  | Check: Tier Lead has verified information and obtained a sign off | 0h | 2006-03-20 12:00 A | 2006-03-20 12:00 A | 3, 4, 5 | 100% |  |
| 7 | 1.2 | **Install GC A Side** | 1.5d | 2006-03-20 08:00 A | 2006-03-21 12:00 A | 2 | 100% |  |
| 8 | 1.2.1 | **Install GC "A" side with new release – load idl, create EC** | 0.5d | 2006-03-20 08:00 A | 2006-03-20 12:00 A |  | 100% |  |
| 9 |  | Generate XML, build Localrep, load All IFR and other Installation steps. | 1h | 2006-03-20 08:00 A | 2006-03-20 09:00 A |  | 100% |  |
| 10 |  | Server Side Full Cleanup | 2.5h | 2006-03-20 08:00 A | 2006-03-20 10:30 A | 9 | 100% |  |
| 11 |  | Time server full startup after cleanup (See Server Startup Timing Page) | 1h | 2006-03-20 08:00 A | 2006-03-20 09:00 A | 10 | 100% |  |
| 12 |  | Backup for server Timings | 20min | 2006-03-20 08:00 A | 2006-03-20 08:20 A | 11 | 100% |  |
| 13 |  | Check: Sign off on Server Timings | 0h | 2006-03-20 12:00 A | 2006-03-20 12:00 A | 12 | 100% |  |
| 14 | 1.2.2 | **ITG Checkout Script** | 0.46d | 2006-03-20 13:40 A | 2006-03-21 08:20 A | 8 | 100% |  |
| 15 |  | W_MAIN session | 20min | 2006-03-21 08:00 A | 2006-03-21 08:20 A |  | 100% |  |
| 16 |  | ONE_MAIN Session | 20min | 2006-03-21 08:00 A | 2006-03-21 08:20 A | 15 | 100% |  |
| 17 |  | COF_MAIN Session | 0min | 2006-03-21 08:00 A | 2006-03-21 08:00 A | 16 | 100% |  |
| 18 |  | CFE_MAIN Session | 0min | 2006-03-21 08:00 A | 2006-03-21 08:00 A | 17 | 100% |  |
| 19 |  | Backup for ITG Checkout (endOfPerformanceReport) | 20min | 2006-03-21 08:00 A | 2006-03-21 08:20 A | 18 | 100% |  |
| 20 |  | Check: Sign off on Checkout Scripts | 0h | 2006-03-20 13:40 A | 2006-03-20 13:40 A | 19 | 100% |  |
| 21 | 1.2.3 | **User Login test1** | 0.14d | 2006-03-21 08:20 A | 2006-03-21 09:25 A | 14 | 100% |  |
| 22 |  | Initial setup like bouncing Global Server and SACAS. | 20min | 2006-03-21 08:20 A | 2006-03-21 08:40 A |  | 100% |  |
| 23 |  | Login Test for 1 and 2 Users | 15min | 2006-03-21 08:35 A | 2006-03-21 08:50 A | 22 | 100% |  |
| 24 |  | Product State Update to CLOSE on VLO (visually timing Single class CLOSED with SAGUI) | 15min | 2006-03-21 08:50 A | 2006-03-21 09:05 A | 23 | 100% |  |
| 25 |  | Backup for Login User Test and Product state Update through SAGUI | 20min | 2006-03-21 09:05 A | 2006-03-21 09:25 A | 24 | 100% |  |
| 26 |  | Check: Sign Off on Logs and Results | 0h | 2006-03-21 09:25 A | 2006-03-21 09:25 A | 25 | 100% |  |
| 27 | 1.2.4 | **GC failover to "B" side** | 0.32d | 2006-03-21 09:25 A | 2006-03-21 12:00 A | 21 | 100% |  |
| 28 |  | Initial setup for test Drivers (starting processes on GC Slave.) | 30min | 2006-03-21 09:25 A | 2006-03-21 09:55 A |  | 100% |  |
| 29 |  | Quote/Order BC20 Hybrid and ONE_MAIN traffic going before/during/after failover. Should not hang to verify no Global Dependency introduced. Test Execution | 45min | 2006-03-21 09:55 A | 2006-03-21 10:40 A | 28 | 100% |  |
| 30 |  | ITG Checkout script (for W_MAIN and ONE_MAIN Session) | 40min | 2006-03-21 10:40 A | 2006-03-21 11:20 A | 29 | 100% |  |
| 31 |  | Backup for Failover and ITG Checkout | 20min | 2006-03-21 11:10 A | 2006-03-21 11:30 A | 30 | 100% |  |
| 32 |  | Generate Report for Failover Timings for all GC Processes (taking time from log files) | 30min | 2006-03-21 11:30 A | 2006-03-21 12:00 A | 31 | 100% |  |
| 33 |  | Check: Sign Off on Checkout Scripts, Logs and Results | 0h | 2006-03-21 12:00 A | 2006-03-21 12:00 A | 32 | 100% |  |
| 34 |  | 60 User Login Test with Old GC | 3h | 2006-03-21 08:00 A | 2006-03-21 11:00 A | 27 | 100% |  |
| 35 | 1.3 | **Install GC B Side** | 0.73d | 2006-03-22 08:00 A | 2006-03-22 14:50 A | 34 | 100% |  |
| 36 | 1.3.1 | **Install GC "B" side** | 0.25d | 2006-03-22 08:00 A | 2006-03-22 10:00 A |  | 100% |  |
| 37 |  | Cleanup, createCurrentBusinessDay,starting all GC Processes on B side | 2h | 2006-03-22 08:00 A | 2006-03-22 10:00 A |  | 100% |  |
| 38 |  | ITG Checkout script (for W_MAIN and ONE_MAIN Session) | 40min | 2006-03-22 08:00 A | 2006-03-22 08:40 A | 37 | 100% |  |
| 39 |  | Backup for GC Upgrade and ITG Checkout | 20min | 2006-03-22 08:00 A | 2006-03-22 08:20 A | 38 | 100% |  |
| 40 |  | Check: Sign Off on Checkout Scripts, Logs and Results | 0h | 2006-03-22 08:00 A | 2006-03-22 08:00 A | 39 | 100% |  |
| 41 | 1.3.2 | **GC fail over to "A" side** | 0.31d | 2006-03-22 08:00 A | 2006-03-22 10:30 A | 36 | 100% |  |
| 42 |  | Initial setup for test Drivers (starting processes on GC Slave.) | 30min | 2006-03-22 08:00 A | 2006-03-22 08:30 A |  | 100% |  |
| 43 |  | Quote/Order BC20 Hybrid and ONE_MAIN traffic going before/during/after failover. Should not hang to verify no Global Dependency introduced. Test Execution | 30min | 2006-03-22 08:30 A | 2006-03-22 09:00 A | 42 | 100% |  |
| 44 |  | ITG Checkout script (for W_MAIN and ONE_MAIN Session) | 40min | 2006-03-22 09:00 A | 2006-03-22 09:40 A | 43 | 100% |  |
| 45 |  | Backup for Failover and ITG Checkout | 20min | 2006-03-22 09:40 A | 2006-03-22 10:00 A | 44 | 100% |  |
| 46 |  | Generate Report for Failover Timings for all GC Processes (taking time from log files) | 30min | 2006-03-22 10:00 A | 2006-03-22 10:30 A | 45 | 100% |  |
| 47 |  | Check: Sign Off on Checkout Scripts, Logs and Results | 0h | 2006-03-22 10:30 A | 2006-03-22 10:30 A | 46 | 100% |  |
| 48 | 1.3.3 | **Login User and 60 User Login** | 0.42d | 2006-03-22 10:30 A | 2006-03-22 14:50 A | 41 | 100% |  |
| 49 |  | bouncing Global Server process, SACAS and all other CASes for 60 User login Test and SAGUI login test | 35min | 2006-03-22 10:30 A | 2006-03-22 11:05 A |  | 100% |  |
| 50 |  | Driver Setup | 15min | 2006-03-22 11:05 A | 2006-03-22 11:20 A | 49 | 100% |  |
| 51 |  | User login test and 60 user login test, test execution | 2.5h | 2006-03-22 11:20 A | 2006-03-22 14:50 A | 50 | 100% |  |
| 52 |  | Backup and Reporting | 30min | 2006-03-22 11:50 A | 2006-03-22 13:20 A | 51 | 100% |  |
| 53 |  | Check: Sign Off on Logs and Results | 0h | 2006-03-22 13:20 A | 2006-03-22 13:20 A | 52 | 100% |  |
| 54 | 1.4 | **Install Hybrid BC A Side** | 2.27d | 2006-03-22 14:50 A | 2006-03-24 17:00 A | 35 | 100% |  |
| 55 | 1.10 | **Install Hybrid BC (A)** | 0.25d | 2006-03-22 14:50 A | 2006-03-22 16:50 A |  | 100% |  |
| 56 |  | Configuration and starting processes | 1h | 2006-03-22 14:50 A | 2006-03-22 15:50 A |  | 100% |  |
| 57 |  | ITG Checkout script (W_MAIN and ONE_MAIN Session) | 40min | 2006-03-22 15:50 A | 2006-03-22 16:30 A | 56 | 100% |  |
| 58 |  | Backup and Reporting | 20min | 2006-03-22 16:30 A | 2006-03-22 16:50 A | 57 | 100% |  |
| 59 |  | Check: Sign Off on Checkout Scripts, Logs and Results | 0h | 2006-03-22 16:50 A | 2006-03-22 16:50 A | 58 | 100% |  |
| 60 | 1.4.2 | **Global Dependency Test** | 0.1d | 2006-03-22 16:50 A | 2006-03-23 08:40 A | 55 | 100% |  |
| 61 |  | Test Execution | 30min | 2006-03-22 16:50 A | 2006-03-23 08:20 A | 59 | 100% |  |
| 62 |  | Log Backup and Reporting | 20min | 2006-03-23 08:20 A | 2006-03-23 08:40 A | 61 | 100% |  |
| 63 |  | Check:Log and Results verification | 0h | 2006-03-23 08:40 A | 2006-03-23 08:40 A | 62 | 100% |  |
| 64 | 1.4.3 | **Hybrid test scenario 5 (Product State Change Test)** | 0.19d | 2006-03-23 08:40 A | 2006-03-23 10:10 A | 60 | 100% |  |
| 65 |  | BC Cleanup, Initial Driver Setup, | 20min | 2006-03-23 08:40 A | 2006-03-23 09:00 A |  | 100% |  |
| 66 |  | Test Execution - Global Server Bounce | 40min | 2006-03-23 09:00 A | 2006-03-23 09:40 A | 65 | 100% |  |
| 67 |  | Monitor and Backup logs | 20min | 2006-03-23 09:40 A | 2006-03-23 10:00 A | 66 | 100% |  |
| 68 |  | Reporting through KR site | 10min | 2006-03-23 10:00 A | 2006-03-23 10:10 A | 67 | 100% |  |
| 69 |  | Check: Sign Off on Logs and Results | 0h | 2006-03-23 10:10 A | 2006-03-23 10:10 A | 68 | 100% |  |
| 70 | 1.12 | **Multi-class Quote step-up test with BOTR [Scenario 3]** | 0.39d | 2006-03-23 10:10 A | 2006-03-23 14:15 A | 64 | 100% |  |

| ID | WBS | Task | Duration | Start | Finish | Predecessors | Complete |
| --- | --- | --- | --- | --- | --- | --- | --- |
| 71 |  | BC Cleanup, Initial Driver Setup, | 20min | 2006-03-23 10:10 A | 2006-03-23 10:30 A |  | 100% |
| 72 |  | Test Execution for No BOTR | 1h | 2006-03-23 10:30 A | 2006-03-23 11:30 A | 71 | 100% |
| 73 |  | BOTR from 4000 to 16000 | 30min | 2006-03-23 11:30 A | 2006-03-23 12:00 A | 72 | 100% |
| 74 |  | endOfPerformance and Backup | 45min | 2006-03-23 13:00 A | 2006-03-23 13:45 A | 73 | 100% |
| 75 |  | Reporting through KR site | 30min | 2006-03-23 13:45 A | 2006-03-23 14:15 A | 74 | 100% |
| 76 |  | Check: Sign Off on Logs and Results | 0h | 2006-03-23 14:15 A | 2006-03-23 14:15 A | 75 | 100% |
| 77 | 1.13 | **Single-class Quote step-up test with BOTR [Scenario 1]** | 0.34d | 2006-03-23 14:15 A | 2006-03-23 17:00 A | 70 | 100% |
| 78 |  | BC Cleanup, Initial Driver Setup, | 20min | 2006-03-23 14:15 A | 2006-03-23 14:35 A |  | 100% |
| 79 |  | Test Execution for No BOTR | 1h | 2006-03-23 14:35 A | 2006-03-23 15:35 A | 78 | 100% |
| 80 |  | BOTR 16000 | 10min | 2006-03-23 15:35 A | 2006-03-23 15:45 A | 79 | 100% |
| 81 |  | endOfPerformance and Backup | 45min | 2006-03-23 15:45 A | 2006-03-23 16:30 A | 80 | 100% |
| 82 |  | Reporting through KR site | 30min | 2006-03-23 16:30 A | 2006-03-23 17:00 A | 81 | 100% |
| 83 |  | Check: Sign Off On Logs and Results | 0h | 2006-03-23 17:00 A | 2006-03-23 17:00 A | 82 | 100% |
| 84 | 1.14 | **Multi-class Order step-up test [Scenario 4]** | 1d | 2006-03-23 08:00 A | 2006-03-23 17:00 A | 77 | 100% |
| 85 |  | BC Cleanup, Initial Driver Setup, | 20min | 2006-03-23 08:00 A | 2006-03-23 08:20 A |  | 100% |
| 86 |  | Test Execution for No BOTR | 0h | 2006-03-23 17:00 A | 2006-03-23 17:00 A | 85 | 100% |
| 87 |  | endOfPerformance and Backup | 0min | 2006-03-23 17:00 A | 2006-03-23 17:00 A | 86 | 100% |
| 88 |  | Reporting through KR site | 0min | 2006-03-23 17:00 A | 2006-03-23 17:00 A | 87 | 100% |
| 89 |  | Check: Sign Off on Logs and Results | 0h | 2006-03-23 17:00 A | 2006-03-23 17:00 A | 88 | 100% |
| 90 | 1.4.7 | **HAL Scenarios** | 1d | 2006-03-24 08:00 A | 2006-03-24 17:00 A | 84 | 100% |
| 91 |  | Scenario 1: All Orders Trade - Baseline | 2h | 2006-03-24 08:00 A | 2006-03-24 10:00 A |  | 100% |
| 92 |  | Scenario 2: All Orders Book No Trade - Baseline | 2h | 2006-03-24 10:00 A | 2006-03-24 12:00 A | 91 | 100% |
| 93 |  | Scenario 3: All Orders Auction But No Trades | 2h | 2006-03-24 13:00 A | 2006-03-24 15:00 A | 92 | 100% |
| 94 |  | Scenario 4: All Orders Auction and Trade | 2h | 2006-03-24 15:00 A | 2006-03-24 17:00 A | 93 | 100% |
| 95 |  | Check: Sign Off on Logs and Results | 0h | 2006-03-24 17:00 A | 2006-03-24 17:00 A | 94 | 100% |
| 96 | 1.15 | **Hybrid BC failover (new release to old release)** | 0.07d | 2006-03-23 08:00 A | 2006-03-23 08:35 A | 84 | 100% |
| 97 |  | BC Cleanup start A Side as Master | 20min | 2006-03-23 08:00 A | 2006-03-23 08:20 A |  | 100% |
| 98 |  | Initial setup for test Drivers (starting processes on BC Slave.) | 35min | 2006-03-23 08:00 A | 2006-03-23 08:35 A | 97 | 100% |
| 99 |  | Quote/Order BC20 Hybrid traffic going before/during/after failover. Test Execution | 30min | 2006-03-23 08:00 A | 2006-03-23 08:30 A | 98 | 100% |
| 100 |  | ITG Checkout script (for W_MAIN and ONE_MAIN Session) | 20min | 2006-03-23 08:00 A | 2006-03-23 08:20 A | 99 | 100% |
| 101 |  | Backup for Failover and ITG Checkout | 20min | 2006-03-23 08:00 A | 2006-03-23 08:20 A | 100 | 100% |
| 102 |  | Generate Report for Failover Timings for all BC Processes (taking time from log files) | 20min | 2006-03-23 08:00 A | 2006-03-23 08:20 A | 101 | 100% |
| 103 |  | Check: Sign Off on Checkout Scripts, Logs and Results | 0h | 2006-03-23 08:00 A | 2006-03-23 08:00 A | 102 | 100% |
| 104 | 1.5 | **MDGC Rollout** | 0.1d | 2006-03-27 08:00 A | 2006-03-27 08:50 A | 54 | 100% |
| 105 |  | MDGC A Upgrade | 50min | 2006-03-27 08:00 A | 2006-03-27 08:50 A |  | 100% |
| 106 |  | ITG Checkout for W_MAIN. ONE_MAIN and Log backup | 50min | 2006-03-27 08:00 A | 2006-03-27 08:50 A |  | 100% |
| 107 |  | Product State Change Test | 50min | 2006-03-27 08:00 A | 2006-03-27 08:50 A |  | 100% |
| 108 | 1.5 | **Install Hybrid BC B Side** | 0.12d | 2006-03-29 08:00 A | 2006-03-29 09:00 A | 104 | 100% |
| 109 | 1.16 | **Install Hybrid BC "B" side** | 0.12d | 2006-03-29 08:00 A | 2006-03-29 09:00 A |  | 100% |
| 110 |  | Cleanup | 20min | 2006-03-29 08:00 A | 2006-03-29 08:20 A |  | 100% |
| 111 |  | Configuration and starting processes | 1h | 2006-03-29 08:00 A | 2006-03-29 09:00 A | 110 | 100% |
| 112 |  | ITG Checkout script (W_MAIN and ONE_MAIN Session) | 40min | 2006-03-29 08:00 A | 2006-03-29 08:40 A | 111 | 100% |
| 113 |  | Backup and Reporting | 20min | 2006-03-29 08:00 A | 2006-03-29 08:20 A | 112 | 100% |
| 114 |  | Check: Sign Off on Checkout Scripts, Logs and Results | 0h | 2006-03-29 08:00 A | 2006-03-29 08:00 A | 113 | 100% |
| 115 | 1.17 | **Hybrid BC failover (new release to new release)** | 0.08d | 2006-03-29 08:00 A | 2006-03-29 08:40 A | 109 | 100% |
| 116 |  | Initial setup for test Drivers (starting processes on BC Slave.) | 25min | 2006-03-29 08:00 A | 2006-03-29 08:25 A |  | 100% |
| 117 |  | Quote/Order BC20 Hybrid traffic going before/during/after failover. Test Execution | 30min | 2006-03-29 08:00 A | 2006-03-29 08:30 A | 116 | 100% |
| 118 |  | ITG Checkout script (for W_MAIN and ONE_MAIN Session) | 40min | 2006-03-29 08:00 A | 2006-03-29 08:40 A | 117 | 100% |
| 119 |  | Backup for Failover and ITG Checkout | 20min | 2006-03-29 08:00 A | 2006-03-29 08:20 A | 118 | 100% |
| 120 |  | Generate Report for Failover Timings for all BC Processes (taking time from log files) | 30min | 2006-03-29 08:00 A | 2006-03-29 08:30 A | 119 | 100% |
| 121 |  | Check: Sign Off on Checkout Scripts,Logs and Results | 0h | 2006-03-29 08:00 A | 2006-03-29 08:00 A | 120 | 100% |
| 122 | 1.6 | **Install ONE_MAIN BC A Side** | 0.79d | 2006-03-28 08:00 A | 2006-03-28 15:20 A | 108 | 100% |
| 123 | 1.26 | **Install ONE_MAIN BC (A)** | 0.12d | 2006-03-28 08:00 A | 2006-03-28 09:00 A |  | 100% |
| 124 |  | Configuration and starting processes | 1h | 2006-03-28 08:00 A | 2006-03-28 09:00 A |  | 100% |
| 125 |  | ITG Checkout script (W_MAIN and ONE_MAIN Session) | 40min | 2006-03-28 08:00 A | 2006-03-28 08:40 A | 124 | 100% |
| 126 |  | Backup and Reporting | 20min | 2006-03-28 08:00 A | 2006-03-28 08:20 A | 125 | 100% |
| 127 |  | Check: Sign Off on Checkout Scripts, Logs and Results | 0h | 2006-03-28 08:00 A | 2006-03-28 08:00 A | 126 | 100% |
| 128 | 1.27 | **Multi-class Order step-up test for ONE_MAIN [Scenario 2]** | 0.18d | 2006-03-28 08:00 A | 2006-03-28 09:25 A | 123 | 100% |
| 129 |  | BC Cleanup, Initial Driver Setup, | 20min | 2006-03-28 08:00 A | 2006-03-28 08:20 A |  | 100% |
| 130 |  | Test Execution for No BOTR | 1h | 2006-03-28 08:00 A | 2006-03-28 09:00 A | 129 | 100% |
| 131 |  | endOfPerformance and Backup | 15min | 2006-03-28 08:00 A | 2006-03-28 08:15 A | 130 | 100% |
| 132 |  | Reporting through KR site | 15min | 2006-03-28 08:00 A | 2006-03-28 08:15 A | 131 | 100% |
| 133 |  | Check: Sign Off on Logs and Results | 0h | 2006-03-28 09:25 A | 2006-03-28 09:25 A | 132 | 100% |
| 134 | 1.28 | **Multi-class Quote step-up test [Scenario 1]** | 0.27d | 2006-03-28 09:25 A | 2006-03-28 11:35 A | 128 | 100% |
| 135 |  | BC Cleanup, Initial Driver Setup, | 20min | 2006-03-28 09:25 A | 2006-03-28 09:45 A |  | 100% |
| 136 |  | Test Execution for No BOTR | 1h | 2006-03-28 09:45 A | 2006-03-28 10:45 A | 135 | 100% |
| 137 |  | endOfPerformance and Backup | 30min | 2006-03-28 10:45 A | 2006-03-28 11:15 A | 136 | 100% |
| 138 |  | Reporting through KR site | 20min | 2006-03-28 11:15 A | 2006-03-28 11:35 A | 137 | 100% |
| 139 |  | Check: Sign Off on Logs and Results | 0h | 2006-03-28 11:35 A | 2006-03-28 11:35 A | 138 | 100% |
| 140 | 1.30 | **Failover ONE_MAIN BC (Old to New)** | 0.34d | 2006-03-28 11:35 A | 2006-03-28 15:20 A | 134 | 100% |

| ID | WBS | Task | Duration | Start | Finish | Predecessors | Complete | Total float |
| --- | --- | --- | --- | --- | --- | --- | --- | --- |
| 141 |  | Cleanup | 20min | 2006-03-28 11:35 A | 2006-03-28 11:55 A |  | 100% |  |
| 142 |  | Initial setup for test Drivers (starting processes on BC Slave.) | 25min | 2006-03-28 11:55 A | 2006-03-28 13:20 A | 141 | 100% |  |
| 143 |  | Quote/Order ONE_MAIN traffic going before/during/after failover. Test Execution | 30min | 2006-03-28 13:20 A | 2006-03-28 13:50 A | 142 | 100% |  |
| 144 |  | ITG Checkout script (for W_MAIN and ONE_MAIN Session) | 40min | 2006-03-28 13:50 A | 2006-03-28 14:30 A | 143 | 100% |  |
| 145 |  | Backup for Failover and ITG Checkout | 20min | 2006-03-28 14:30 A | 2006-03-28 14:50 A | 144 | 100% |  |
| 146 |  | Generate Report for Failover Timings for all BC Processes (taking time from log files) | 30min | 2006-03-28 14:50 A | 2006-03-28 15:20 A | 145 | 100% |  |
| 147 |  | Check: Sign Off on Checkout Scripts,Logs and Results | 0h | 2006-03-28 15:20 A | 2006-03-28 15:20 A | 146 | 100% |  |
| 148 | 1.7 | **Install ONE_MAIN BC B Side** | 0.39d | 2006-03-29 08:00 A | 2006-03-29 11:05 A | 122 | 100% |  |
| 149 | 1.31 | **Install ONE_MAIN BC (B)** | 0.12d | 2006-03-29 08:00 A | 2006-03-29 09:00 A |  | 100% |  |
| 150 |  | Configuration and starting processes | 1h | 2006-03-29 08:00 A | 2006-03-29 09:00 A |  | 100% |  |
| 151 |  | ITG Checkout script (W_MAIN and ONE_MAIN Session) | 40min | 2006-03-29 08:00 A | 2006-03-29 08:40 A | 150 | 100% |  |
| 152 |  | Backup and Reporting | 20min | 2006-03-29 08:00 A | 2006-03-29 08:20 A | 151 | 100% |  |
| 153 |  | Check: Sign Off on Checkout Scripts, Logs and Results | 0h | 2006-03-29 08:20 A | 2006-03-29 08:20 A | 152 | 100% |  |
| 154 | 1.8.2 | **Failover ONE_MAIN BC (New to New)** | 0.34d | 2006-03-29 08:20 A | 2006-03-29 11:05 A | 149 | 100% |  |
| 155 |  | Cleanup | 20min | 2006-03-29 08:20 A | 2006-03-29 08:40 A | 153 | 100% |  |
| 156 |  | Initial setup for test Drivers (starting processes on BC Slave.) | 25min | 2006-03-29 08:40 A | 2006-03-29 09:05 A | 155 | 100% |  |
| 157 |  | Quote/Order ONE_MAIN traffic going before/during/after failover. Test Execution | 30min | 2006-03-29 09:05 A | 2006-03-29 09:35 A | 156 | 100% |  |
| 158 |  | ITG Checkout script (for W_MAIN and ONE_MAIN Session) | 40min | 2006-03-29 09:35 A | 2006-03-29 10:15 A | 157 | 100% |  |
| 159 |  | Backup for Failover and ITG Checkout | 20min | 2006-03-29 10:15 A | 2006-03-29 10:35 A | 158 | 100% |  |
| 160 |  | Generate Report for Failover Timings for all BC Processes (taking time from log files) | 30min | 2006-03-29 10:35 A | 2006-03-29 11:05 A | 159 | 100% |  |
| 161 |  | Check: Sign Off on Checkout Scripts,Logs and Results | 0h | 2006-03-29 11:05 A | 2006-03-29 11:05 A | 160 | 100% |  |
| 162 | 1.9 | **4 Hour Endurance Test** | 0.5d | 2006-03-30 08:00 A | 2006-03-30 12:00 A | 154 | 100% |  |
| 163 |  | Cleanup for W_MAIN and ONE_MAIN BC | 20min | 2006-03-30 08:00 A | 2006-03-30 08:20 A |  | 100% |  |
| 164 |  | Driver setup | 20min | 2006-03-30 08:00 A | 2006-03-30 08:20 A | 163 | 100% |  |
| 165 |  | CAS bounce | 20min | 2006-03-30 08:00 A | 2006-03-30 08:20 A | 164 | 100% |  |
| 166 |  | 4 hour Sanity Check | 4h | 2006-03-30 08:00 A | 2006-03-30 12:00 A | 165 | 100% |  |
| 167 |  | endOfPerformance and Backup and Reporting | 1h | 2006-03-30 08:05 A | 2006-03-30 09:05 A | 166 | 100% |  |
| 168 |  | Check: Sign Off on Logs and Results | 0h | 2006-03-30 09:05 A | 2006-03-30 09:05 A | 167 | 100% |  |
| 169 | 1.10 | **4 Hour Endurance Test with Auctions** | 0.75d | 2006-03-30 09:05 A | 2006-03-30 16:05 A | 162 | 100% |  |
| 170 |  | Cleanup for W_MAIN and ONE_MAIN BC | 20min | 2006-03-30 09:05 A | 2006-03-30 09:25 A |  | 100% |  |
| 171 |  | Driver setup | 20min | 2006-03-30 09:25 A | 2006-03-30 09:45 A | 170 | 100% |  |
| 172 |  | CAS bounce | 20min | 2006-03-30 09:45 A | 2006-03-30 10:05 A | 171 | 100% |  |
| 173 |  | 4 hour Sanity Check | 4h | 2006-03-30 10:05 A | 2006-03-30 15:05 A | 172 | 100% |  |
| 174 |  | endOfPerformance and Backup and Reporting | 1h | 2006-03-30 15:05 A | 2006-03-30 16:05 A | 173 | 100% |  |
| 175 |  | Check: Sign Off on Logs and Results | 0h | 2006-03-30 16:05 A | 2006-03-30 16:05 A | 174 | 100% |  |
| 176 | 1.42 | **Server Side Full Cleanup after All Server upgrades.** | 0.17d | 2006-03-30 16:05 | 2006-03-31 08:25 | 175 |  | 0d |
| 177 |  | Time server full startup after cleanup (See Server Startup Timing Page) | 1h | 2006-03-30 16:05 | 2006-03-31 08:05 |  |  | 0d |
| 178 |  | Backup for server Timings | 20min | 2006-03-31 08:05 | 2006-03-31 08:25 | 177 |  | 0d |
| 179 |  | Check: Sign Off on Logs and Results | 0h | 2006-03-31 08:25 | 2006-03-31 08:25 | 178 |  | 0d |
| 180 | 1.12 | **Check: Overall Verification** | 0d | 2006-03-31 08:25 | 2006-03-31 08:25 | 176 |  | 0d |
| 181 |  | All Results Signed Off | 0h | 2006-03-31 08:25 | 2006-03-31 08:25 | 178 |  | 0d |
| 182 |  | All Tests Completed | 0h | 2006-03-31 08:25 | 2006-03-31 08:25 | 178 |  | 0d |
| 183 |  | Results Blessed by Paul and Respective Groups | 0h | 2006-03-31 08:25 | 2006-03-31 08:25 | 178 |  | 0d |

## Version 2 (saved 2006-03-31, file Original_ OT1_ProjectPlan.mpp)

Last finish 2006-03-31 → 2006-03-30 (-1d). Complete tasks 141 → 0.

Removed: 34 60 User Login Test with Old GC; 104 MDGC Rollout; 105 MDGC A Upgrade; 106 ITG Checkout for W_MAIN. ONE_MAIN and Log backup; 107 Product State Change Test

Changed:

| ID | Task | Start | Finish | Duration | Complete | Total float | Predecessors | Other |
| --- | --- | --- | --- | --- | --- | --- | --- | --- |
| 1 | **Rollout Task** | 2006-03-17 08:00 A → 2006-03-17 08:00 | 2006-03-31 08:25 → 2006-03-30 13:25 (-1d) | 10.05d → 9.55d | 99% → 0% |  |  | baseline start 2006-03-17 08:00 → none; baseline finish 2006-03-31 09:25 → none |
| 2 | **Pre-Rollout Verification/Changes [If required]** | 2006-03-17 08:00 A → 2006-03-17 08:00 | 2006-03-20 12:00 A → 2006-03-17 08:00 (-3d) | 1.5d → 0d | 100% → 0% | none → 10.18d |  | baseline start 2006-03-17 08:00 → none; baseline finish 2006-03-17 08:00 → none |
| 3 | Database changes | 2006-03-17 08:00 A → 2006-03-17 08:00 | 2006-03-17 08:00 A → 2006-03-17 08:00 |  | 100% → 0% | none → 10.18d |  | baseline start 2006-03-17 08:00 → none; baseline finish 2006-03-17 08:00 → none |
| 4 | Extent Map changes | 2006-03-17 08:00 A → 2006-03-17 08:00 | 2006-03-17 08:00 A → 2006-03-17 08:00 |  | 100% → 0% | none → 10.18d |  | baseline start 2006-03-17 08:00 → none; baseline finish 2006-03-17 08:00 → none |
| 5 | Version label verification on all boxes | 2006-03-17 08:00 A → 2006-03-17 08:00 | 2006-03-20 12:00 A → 2006-03-17 08:00 (-3d) | 12h → 0h | 100% → 0% | none → 10.18d |  | baseline start 2006-03-17 08:00 → none; baseline finish 2006-03-17 08:00 → none |
| 6 | Check: Tier Lead has verified information and obtained a sign off | 2006-03-20 12:00 A → 2006-03-17 08:00 (-3d) | 2006-03-20 12:00 A → 2006-03-17 08:00 (-3d) |  | 100% → 0% | none → 10.18d |  | baseline start 2006-03-17 08:00 → none; baseline finish 2006-03-17 08:00 → none |
| 7 | **Install GC A Side** | 2006-03-20 08:00 A → 2006-03-17 08:00 (-3d) | 2006-03-21 12:00 A → 2006-03-20 10:40 (-1d) | 1.5d → 1.33d | 100% → 0% | none → 0d | 2 → none | baseline start 2006-03-17 08:00 → none; baseline finish 2006-03-20 10:40 → none |
| 8 | **Install GC "A" side with new release – load idl, create EC** | 2006-03-20 08:00 A → 2006-03-17 08:00 (-3d) | 2006-03-20 12:00 A → 2006-03-17 14:20 (-3d) | 0.5d → 0.67d | 100% → 0% | none → 0d |  | baseline start 2006-03-17 08:00 → none; baseline finish 2006-03-17 14:20 → none |
| 9 | Generate XML, build Localrep, load All IFR and other Installation steps. | 2006-03-20 08:00 A → 2006-03-17 08:00 (-3d) | 2006-03-20 09:00 A → 2006-03-17 09:00 (-3d) |  | 100% → 0% | none → 0d |  | baseline start 2006-03-17 08:00 → none; baseline finish 2006-03-17 09:00 → none |
| 10 | Server Side Full Cleanup | 2006-03-20 08:00 A → 2006-03-17 09:00 (-3d) | 2006-03-20 10:30 A → 2006-03-17 12:00 (-3d) | 2.5h → 3h | 100% → 0% | none → 0d |  | baseline start 2006-03-17 09:00 → none; baseline finish 2006-03-17 12:00 → none |
| 11 | Time server full startup after cleanup (See Server Startup Timing Page) | 2006-03-20 08:00 A → 2006-03-17 13:00 (-3d) | 2006-03-20 09:00 A → 2006-03-17 14:00 (-3d) |  | 100% → 0% | none → 0d |  | baseline start 2006-03-17 13:00 → none; baseline finish 2006-03-17 14:00 → none |
| 12 | Backup for server Timings | 2006-03-20 08:00 A → 2006-03-17 14:00 (-3d) | 2006-03-20 08:20 A → 2006-03-17 14:20 (-3d) |  | 100% → 0% | none → 0d |  | baseline start 2006-03-17 14:00 → none; baseline finish 2006-03-17 14:20 → none |
| 13 | Check: Sign off on Server Timings | 2006-03-20 12:00 A → 2006-03-17 14:20 (-3d) | 2006-03-20 12:00 A → 2006-03-17 14:20 (-3d) |  | 100% → 0% | none → 0d |  | baseline start 2006-03-17 14:20 → none; baseline finish 2006-03-17 14:20 → none |
| 14 | **ITG Checkout Script** | 2006-03-20 13:40 A → 2006-03-17 14:20 (-3d) | 2006-03-21 08:20 A → 2006-03-17 16:00 (-4d) | 0.46d → 0.21d | 100% → 0% | none → 0d |  | baseline start 2006-03-17 14:20 → none; baseline finish 2006-03-17 16:00 → none |
| 15 | W_MAIN session | 2006-03-21 08:00 A → 2006-03-17 14:20 (-4d) | 2006-03-21 08:20 A → 2006-03-17 14:40 (-4d) |  | 100% → 0% | none → 0d |  | baseline start 2006-03-17 14:20 → none; baseline finish 2006-03-17 14:40 → none |
| 16 | ONE_MAIN Session | 2006-03-21 08:00 A → 2006-03-17 14:40 (-4d) | 2006-03-21 08:20 A → 2006-03-17 15:00 (-4d) |  | 100% → 0% | none → 0d |  | baseline start 2006-03-17 14:40 → none; baseline finish 2006-03-17 15:00 → none |
| 17 | COF_MAIN Session | 2006-03-21 08:00 A → 2006-03-17 15:00 (-4d) | 2006-03-21 08:00 A → 2006-03-17 15:20 (-4d) | 0min → 20min | 100% → 0% | none → 0d |  | baseline start 2006-03-17 15:00 → none; baseline finish 2006-03-17 15:20 → none |
| 18 | CFE_MAIN Session | 2006-03-21 08:00 A → 2006-03-17 15:20 (-4d) | 2006-03-21 08:00 A → 2006-03-17 15:40 (-4d) | 0min → 20min | 100% → 0% | none → 0d |  | baseline start 2006-03-17 15:20 → none; baseline finish 2006-03-17 15:40 → none |
| 19 | Backup for ITG Checkout (endOfPerformanceReport) | 2006-03-21 08:00 A → 2006-03-17 15:40 (-4d) | 2006-03-21 08:20 A → 2006-03-17 16:00 (-4d) |  | 100% → 0% | none → 0d |  | baseline start 2006-03-17 15:40 → none; baseline finish 2006-03-17 16:00 → none |
| 20 | Check: Sign off on Checkout Scripts | 2006-03-20 13:40 A → 2006-03-17 16:00 (-3d) | 2006-03-20 13:40 A → 2006-03-17 16:00 (-3d) |  | 100% → 0% | none → 0d |  | baseline start 2006-03-17 16:00 → none; baseline finish 2006-03-17 16:00 → none |
| 21 | **User Login test1** | 2006-03-21 08:20 A → 2006-03-17 16:00 (-4d) | 2006-03-21 09:25 A → 2006-03-20 08:05 (-1d) |  | 100% → 0% | none → 0d |  | baseline start 2006-03-17 16:00 → none; baseline finish 2006-03-20 08:05 → none |
| 22 | Initial setup like bouncing Global Server and SACAS. | 2006-03-21 08:20 A → 2006-03-17 16:00 (-4d) | 2006-03-21 08:40 A → 2006-03-17 16:15 (-4d) | 20min → 15min | 100% → 0% | none → 0d |  | baseline start 2006-03-17 16:00 → none; baseline finish 2006-03-17 16:15 → none |
| 23 | Login Test for 1 and 2 Users | 2006-03-21 08:35 A → 2006-03-17 16:15 (-4d) | 2006-03-21 08:50 A → 2006-03-17 16:30 (-4d) |  | 100% → 0% | none → 0d |  | baseline start 2006-03-17 16:15 → none; baseline finish 2006-03-17 16:30 → none |
| 24 | Product State Update to CLOSE on VLO (visually timing Single class CLOSED with SAGUI) | 2006-03-21 08:50 A → 2006-03-17 16:30 (-4d) | 2006-03-21 09:05 A → 2006-03-17 16:45 (-4d) |  | 100% → 0% | none → 0d |  | baseline start 2006-03-17 16:30 → none; baseline finish 2006-03-17 16:45 → none |
| 25 | Backup for Login User Test and Product state Update through SAGUI | 2006-03-21 09:05 A → 2006-03-17 16:45 (-4d) | 2006-03-21 09:25 A → 2006-03-20 08:05 (-1d) |  | 100% → 0% | none → 0d |  | baseline start 2006-03-17 16:45 → none; baseline finish 2006-03-20 08:05 → none |
| 26 | Check: Sign Off on Logs and Results | 2006-03-21 09:25 A → 2006-03-20 08:05 (-1d) | 2006-03-21 09:25 A → 2006-03-20 08:05 (-1d) |  | 100% → 0% | none → 0d |  | baseline start 2006-03-20 08:05 → none; baseline finish 2006-03-20 08:05 → none |
| 27 | **GC failover to "B" side** | 2006-03-21 09:25 A → 2006-03-20 08:05 (-1d) | 2006-03-21 12:00 A → 2006-03-20 10:40 (-1d) |  | 100% → 0% | none → 0d |  | baseline start 2006-03-20 08:05 → none; baseline finish 2006-03-20 10:40 → none |
| 28 | Initial setup for test Drivers (starting processes on GC Slave.) | 2006-03-21 09:25 A → 2006-03-20 08:05 (-1d) | 2006-03-21 09:55 A → 2006-03-20 08:35 (-1d) |  | 100% → 0% | none → 0d |  | baseline start 2006-03-20 08:05 → none; baseline finish 2006-03-20 08:35 → none |
| 29 | Quote/Order BC20 Hybrid and ONE_MAIN traffic going before/during/after failover. Should not hang to verify no Global Dependency introduced. Test Execution | 2006-03-21 09:55 A → 2006-03-20 08:35 (-1d) | 2006-03-21 10:40 A → 2006-03-20 09:20 (-1d) |  | 100% → 0% | none → 0d |  | baseline start 2006-03-20 08:35 → none; baseline finish 2006-03-20 09:20 → none |
| 30 | ITG Checkout script (for W_MAIN and ONE_MAIN Session) | 2006-03-21 10:40 A → 2006-03-20 09:20 (-1d) | 2006-03-21 11:20 A → 2006-03-20 09:50 (-1d) | 40min → 30min | 100% → 0% | none → 0d |  | baseline start 2006-03-20 09:20 → none; baseline finish 2006-03-20 09:50 → none |
| 31 | Backup for Failover and ITG Checkout | 2006-03-21 11:10 A → 2006-03-20 09:50 (-1d) | 2006-03-21 11:30 A → 2006-03-20 10:10 (-1d) |  | 100% → 0% | none → 0d |  | baseline start 2006-03-20 09:50 → none; baseline finish 2006-03-20 10:10 → none |
| 32 | Generate Report for Failover Timings for all GC Processes (taking time from log files) | 2006-03-21 11:30 A → 2006-03-20 10:10 (-1d) | 2006-03-21 12:00 A → 2006-03-20 10:40 (-1d) |  | 100% → 0% | none → 0d |  | baseline start 2006-03-20 10:10 → none; baseline finish 2006-03-20 10:40 → none |
| 33 | Check: Sign Off on Checkout Scripts, Logs and Results | 2006-03-21 12:00 A → 2006-03-20 10:40 (-1d) | 2006-03-21 12:00 A → 2006-03-20 10:40 (-1d) |  | 100% → 0% | none → 0d |  | baseline start 2006-03-20 10:40 → none; baseline finish 2006-03-20 10:40 → none |
| 34 | **Install GC B Side** | 2006-03-22 08:00 A → 2006-03-20 10:40 (-2d) | 2006-03-22 14:50 A → 2006-03-21 11:00 (-1d) | 0.73d → 1.04d | 100% → 0% | none → 0d | 60 User Login Test with Old GC → 7 | baseline start 2006-03-20 10:40 → none; baseline finish 2006-03-21 11:00 → none |
| 35 | **Install GC "B" side** | 2006-03-22 08:00 A → 2006-03-20 10:40 (-2d) | 2006-03-22 10:00 A → 2006-03-20 15:40 (-2d) | 0.25d → 0.5d | 100% → 0% | none → 0d |  | baseline start 2006-03-20 10:40 → none; baseline finish 2006-03-20 15:40 → none |
| 36 | Cleanup, createCurrentBusinessDay,starting all GC Processes on B side | 2006-03-22 08:00 A → 2006-03-20 10:40 (-2d) | 2006-03-22 10:00 A → 2006-03-20 14:40 (-2d) | 2h → 3h | 100% → 0% | none → 0d |  | baseline start 2006-03-20 10:40 → none; baseline finish 2006-03-20 14:40 → none |
| 37 | ITG Checkout script (for W_MAIN and ONE_MAIN Session) | 2006-03-22 08:00 A → 2006-03-20 14:40 (-2d) | 2006-03-22 08:40 A → 2006-03-20 15:20 (-2d) |  | 100% → 0% | none → 0d |  | baseline start 2006-03-20 14:40 → none; baseline finish 2006-03-20 15:20 → none |
| 38 | Backup for GC Upgrade and ITG Checkout | 2006-03-22 08:00 A → 2006-03-20 15:20 (-2d) | 2006-03-22 08:20 A → 2006-03-20 15:40 (-2d) |  | 100% → 0% | none → 0d |  | baseline start 2006-03-20 15:20 → none; baseline finish 2006-03-20 15:40 → none |
| 39 | Check: Sign Off on Checkout Scripts, Logs and Results | 2006-03-22 08:00 A → 2006-03-20 15:40 (-2d) | 2006-03-22 08:00 A → 2006-03-20 15:40 (-2d) |  | 100% → 0% | none → 0d |  | baseline start 2006-03-20 15:40 → none; baseline finish 2006-03-20 15:40 → none |
| 40 | **GC fail over to "A" side** | 2006-03-22 08:00 A → 2006-03-20 15:40 (-2d) | 2006-03-22 10:30 A → 2006-03-21 09:10 (-1d) |  | 100% → 0% | none → 0d |  | baseline start 2006-03-20 15:40 → none; baseline finish 2006-03-21 09:10 → none |
| 41 | Initial setup for test Drivers (starting processes on GC Slave.) | 2006-03-22 08:00 A → 2006-03-20 15:40 (-2d) | 2006-03-22 08:30 A → 2006-03-20 16:10 (-2d) |  | 100% → 0% | none → 0d |  | baseline start 2006-03-20 15:40 → none; baseline finish 2006-03-20 16:10 → none |
| 42 | Quote/Order BC20 Hybrid and ONE_MAIN traffic going before/during/after failover. Should not hang to verify no Global Dependency introduced. Test Execution | 2006-03-22 08:30 A → 2006-03-20 16:10 (-2d) | 2006-03-22 09:00 A → 2006-03-20 16:40 (-2d) |  | 100% → 0% | none → 0d |  | baseline start 2006-03-20 16:10 → none; baseline finish 2006-03-20 16:40 → none |
| 43 | ITG Checkout script (for W_MAIN and ONE_MAIN Session) | 2006-03-22 09:00 A → 2006-03-20 16:40 (-2d) | 2006-03-22 09:40 A → 2006-03-21 08:20 (-1d) |  | 100% → 0% | none → 0d |  | baseline start 2006-03-20 16:40 → none; baseline finish 2006-03-21 08:20 → none |
| 44 | Backup for Failover and ITG Checkout | 2006-03-22 09:40 A → 2006-03-21 08:20 (-1d) | 2006-03-22 10:00 A → 2006-03-21 08:40 (-1d) |  | 100% → 0% | none → 0d |  | baseline start 2006-03-21 08:20 → none; baseline finish 2006-03-21 08:40 → none |
| 45 | Generate Report for Failover Timings for all GC Processes (taking time from log files) | 2006-03-22 10:00 A → 2006-03-21 08:40 (-1d) | 2006-03-22 10:30 A → 2006-03-21 09:10 (-1d) |  | 100% → 0% | none → 0d |  | baseline start 2006-03-21 08:40 → none; baseline finish 2006-03-21 09:10 → none |
| 46 | Check: Sign Off on Checkout Scripts, Logs and Results | 2006-03-22 10:30 A → 2006-03-21 09:10 (-1d) | 2006-03-22 10:30 A → 2006-03-21 09:10 (-1d) |  | 100% → 0% | none → 0d |  | baseline start 2006-03-21 09:10 → none; baseline finish 2006-03-21 09:10 → none |
| 47 | **Login User and 60 User Login** | 2006-03-22 10:30 A → 2006-03-21 09:10 (-1d) | 2006-03-22 14:50 A → 2006-03-21 11:00 (-1d) | 0.42d → 0.23d | 100% → 0% | none → 0d |  | baseline start 2006-03-21 09:10 → none; baseline finish 2006-03-21 11:00 → none |
| 48 | bouncing Global Server process, SACAS and all other CASes for 60 User login Test and SAGUI login test | 2006-03-22 10:30 A → 2006-03-21 09:10 (-1d) | 2006-03-22 11:05 A → 2006-03-21 09:45 (-1d) |  | 100% → 0% | none → 0d |  | baseline start 2006-03-21 09:10 → none; baseline finish 2006-03-21 09:45 → none |
| 49 | Driver Setup | 2006-03-22 11:05 A → 2006-03-21 09:45 (-1d) | 2006-03-22 11:20 A → 2006-03-21 10:00 (-1d) |  | 100% → 0% | none → 0d |  | baseline start 2006-03-21 09:45 → none; baseline finish 2006-03-21 10:00 → none |
| 50 | User login test and 60 user login test, test execution | 2006-03-22 11:20 A → 2006-03-21 10:00 (-1d) | 2006-03-22 14:50 A → 2006-03-21 10:30 (-1d) | 2.5h → 30min | 100% → 0% | none → 0d |  | baseline start 2006-03-21 10:00 → none; baseline finish 2006-03-21 10:30 → none |
| 51 | Backup and Reporting | 2006-03-22 11:50 A → 2006-03-21 10:30 (-1d) | 2006-03-22 13:20 A → 2006-03-21 11:00 (-1d) |  | 100% → 0% | none → 0d |  | baseline start 2006-03-21 10:30 → none; baseline finish 2006-03-21 11:00 → none |
| 52 | Check: Sign Off on Logs and Results | 2006-03-22 13:20 A → 2006-03-21 11:00 (-1d) | 2006-03-22 13:20 A → 2006-03-21 11:00 (-1d) |  | 100% → 0% | none → 0d |  | baseline start 2006-03-21 11:00 → none; baseline finish 2006-03-21 11:00 → none |
| 53 | **Install Hybrid BC A Side** | 2006-03-22 14:50 A → 2006-03-21 11:00 (-1d) | 2006-03-24 17:00 A → 2006-03-24 09:50 | 2.27d → 2.85d | 100% → 0% | none → 0d |  | baseline start 2006-03-21 11:00 → none; baseline finish 2006-03-27 09:50 → none |
| 54 | **Install Hybrid BC (A)** | 2006-03-22 14:50 A → 2006-03-21 11:00 (-1d) | 2006-03-22 16:50 A → 2006-03-21 14:00 (-1d) |  | 100% → 0% | none → 0d |  | baseline start 2006-03-21 11:00 → none; baseline finish 2006-03-21 14:00 → none |
| 55 | Configuration and starting processes | 2006-03-22 14:50 A → 2006-03-21 11:00 (-1d) | 2006-03-22 15:50 A → 2006-03-21 12:00 (-1d) |  | 100% → 0% | none → 0d |  | baseline start 2006-03-21 11:00 → none; baseline finish 2006-03-21 12:00 → none |
| 56 | ITG Checkout script (W_MAIN and ONE_MAIN Session) | 2006-03-22 15:50 A → 2006-03-21 13:00 (-1d) | 2006-03-22 16:30 A → 2006-03-21 13:40 (-1d) |  | 100% → 0% | none → 0d |  | baseline start 2006-03-21 13:00 → none; baseline finish 2006-03-21 13:40 → none |
| 57 | Backup and Reporting | 2006-03-22 16:30 A → 2006-03-21 13:40 (-1d) | 2006-03-22 16:50 A → 2006-03-21 14:00 (-1d) |  | 100% → 0% | none → 0d |  | baseline start 2006-03-21 13:40 → none; baseline finish 2006-03-21 14:00 → none |
| 58 | Check: Sign Off on Checkout Scripts, Logs and Results | 2006-03-22 16:50 A → 2006-03-21 14:00 (-1d) | 2006-03-22 16:50 A → 2006-03-21 14:00 (-1d) |  | 100% → 0% | none → 0d |  | baseline start 2006-03-21 14:00 → none; baseline finish 2006-03-21 14:00 → none |
| 59 | **Global Dependency Test** | 2006-03-22 16:50 A → 2006-03-21 14:00 (-1d) | 2006-03-23 08:40 A → 2006-03-21 14:50 (-2d) |  | 100% → 0% | none → 0d |  | baseline start 2006-03-21 14:00 → none; baseline finish 2006-03-21 14:50 → none |
| 60 | Test Execution | 2006-03-22 16:50 A → 2006-03-21 14:00 (-1d) | 2006-03-23 08:20 A → 2006-03-21 14:30 (-2d) |  | 100% → 0% | none → 0d |  | baseline start 2006-03-21 14:00 → none; baseline finish 2006-03-21 14:30 → none |
| 61 | Log Backup and Reporting | 2006-03-23 08:20 A → 2006-03-21 14:30 (-2d) | 2006-03-23 08:40 A → 2006-03-21 14:50 (-2d) |  | 100% → 0% | none → 0d |  | baseline start 2006-03-21 14:30 → none; baseline finish 2006-03-21 14:50 → none |
| 62 | Check:Log and Results verification | 2006-03-23 08:40 A → 2006-03-21 14:50 (-2d) | 2006-03-23 08:40 A → 2006-03-21 14:50 (-2d) |  | 100% → 0% | none → 0d |  | baseline start 2006-03-21 14:50 → none; baseline finish 2006-03-21 14:50 → none |
| 63 | **Hybrid test scenario 5 (Product State Change Test)** | 2006-03-23 08:40 A → 2006-03-21 14:50 (-2d) | 2006-03-23 10:10 A → 2006-03-21 16:20 (-2d) |  | 100% → 0% | none → 0d |  | baseline start 2006-03-21 14:50 → none; baseline finish 2006-03-21 16:20 → none |
| 64 | BC Cleanup, Initial Driver Setup, | 2006-03-23 08:40 A → 2006-03-21 14:50 (-2d) | 2006-03-23 09:00 A → 2006-03-21 15:10 (-2d) |  | 100% → 0% | none → 0d |  | baseline start 2006-03-21 14:50 → none; baseline finish 2006-03-21 15:10 → none |
| 65 | Test Execution - Global Server Bounce | 2006-03-23 09:00 A → 2006-03-21 15:10 (-2d) | 2006-03-23 09:40 A → 2006-03-21 15:50 (-2d) |  | 100% → 0% | none → 0d |  | baseline start 2006-03-21 15:10 → none; baseline finish 2006-03-21 15:50 → none |
| 66 | Monitor and Backup logs | 2006-03-23 09:40 A → 2006-03-21 15:50 (-2d) | 2006-03-23 10:00 A → 2006-03-21 16:10 (-2d) |  | 100% → 0% | none → 0d |  | baseline start 2006-03-21 15:50 → none; baseline finish 2006-03-21 16:10 → none |
| 67 | Reporting through KR site | 2006-03-23 10:00 A → 2006-03-21 16:10 (-2d) | 2006-03-23 10:10 A → 2006-03-21 16:20 (-2d) |  | 100% → 0% | none → 0d |  | baseline start 2006-03-21 16:10 → none; baseline finish 2006-03-21 16:20 → none |
| 68 | Check: Sign Off on Logs and Results | 2006-03-23 10:10 A → 2006-03-21 16:20 (-2d) | 2006-03-23 10:10 A → 2006-03-21 16:20 (-2d) |  | 100% → 0% | none → 0d |  | baseline start 2006-03-21 16:20 → none; baseline finish 2006-03-21 16:20 → none |
| 69 | **Multi-class Quote step-up test with BOTR [Scenario 3]** | 2006-03-23 10:10 A → 2006-03-21 16:20 (-2d) | 2006-03-23 14:15 A → 2006-03-22 10:25 (-1d) |  | 100% → 0% | none → 0d |  | baseline start 2006-03-21 16:20 → none; baseline finish 2006-03-22 10:25 → none |
| 70 | BC Cleanup, Initial Driver Setup, | 2006-03-23 10:10 A → 2006-03-21 16:20 (-2d) | 2006-03-23 10:30 A → 2006-03-21 16:40 (-2d) |  | 100% → 0% | none → 0d |  | baseline start 2006-03-21 16:20 → none; baseline finish 2006-03-21 16:40 → none |

| ID | Task | Start | Finish | Duration | Complete | Total float | Predecessors | Other |
| --- | --- | --- | --- | --- | --- | --- | --- | --- |
| 71 | Test Execution for No BOTR | 2006-03-23 10:30 A → 2006-03-21 16:40 (-2d) | 2006-03-23 11:30 A → 2006-03-22 08:40 (-1d) |  | 100% → 0% | none → 0d |  | baseline start 2006-03-21 16:40 → none; baseline finish 2006-03-22 08:40 → none |
| 72 | BOTR from 4000 to 16000 | 2006-03-23 11:30 A → 2006-03-22 08:40 (-1d) | 2006-03-23 12:00 A → 2006-03-22 09:10 (-1d) |  | 100% → 0% | none → 0d |  | baseline start 2006-03-22 08:40 → none; baseline finish 2006-03-22 09:10 → none |
| 73 | endOfPerformance and Backup | 2006-03-23 13:00 A → 2006-03-22 09:10 (-1d) | 2006-03-23 13:45 A → 2006-03-22 09:55 (-1d) |  | 100% → 0% | none → 0d |  | baseline start 2006-03-22 09:10 → none; baseline finish 2006-03-22 09:55 → none |
| 74 | Reporting through KR site | 2006-03-23 13:45 A → 2006-03-22 09:55 (-1d) | 2006-03-23 14:15 A → 2006-03-22 10:25 (-1d) |  | 100% → 0% | none → 0d |  | baseline start 2006-03-22 09:55 → none; baseline finish 2006-03-22 10:25 → none |
| 75 | Check: Sign Off on Logs and Results | 2006-03-23 14:15 A → 2006-03-22 10:25 (-1d) | 2006-03-23 14:15 A → 2006-03-22 10:25 (-1d) |  | 100% → 0% | none → 0d |  | baseline start 2006-03-22 10:25 → none; baseline finish 2006-03-22 10:25 → none |
| 76 | **Single-class Quote step-up test with BOTR [Scenario 1]** | 2006-03-23 14:15 A → 2006-03-22 10:25 (-1d) | 2006-03-23 17:00 A → 2006-03-22 14:10 (-1d) |  | 100% → 0% | none → 0d |  | baseline start 2006-03-22 10:25 → none; baseline finish 2006-03-22 14:10 → none |
| 77 | BC Cleanup, Initial Driver Setup, | 2006-03-23 14:15 A → 2006-03-22 10:25 (-1d) | 2006-03-23 14:35 A → 2006-03-22 10:45 (-1d) |  | 100% → 0% | none → 0d |  | baseline start 2006-03-22 10:25 → none; baseline finish 2006-03-22 10:45 → none |
| 78 | Test Execution for No BOTR | 2006-03-23 14:35 A → 2006-03-22 10:45 (-1d) | 2006-03-23 15:35 A → 2006-03-22 11:45 (-1d) |  | 100% → 0% | none → 0d |  | baseline start 2006-03-22 10:45 → none; baseline finish 2006-03-22 11:45 → none |
| 79 | BOTR 16000 | 2006-03-23 15:35 A → 2006-03-22 11:45 (-1d) | 2006-03-23 15:45 A → 2006-03-22 11:55 (-1d) |  | 100% → 0% | none → 0d |  | baseline start 2006-03-22 11:45 → none; baseline finish 2006-03-22 11:55 → none |
| 80 | endOfPerformance and Backup | 2006-03-23 15:45 A → 2006-03-22 11:55 (-1d) | 2006-03-23 16:30 A → 2006-03-22 13:40 (-1d) |  | 100% → 0% | none → 0d |  | baseline start 2006-03-22 11:55 → none; baseline finish 2006-03-22 13:40 → none |
| 81 | Reporting through KR site | 2006-03-23 16:30 A → 2006-03-22 13:40 (-1d) | 2006-03-23 17:00 A → 2006-03-22 14:10 (-1d) |  | 100% → 0% | none → 0d |  | baseline start 2006-03-22 13:40 → none; baseline finish 2006-03-22 14:10 → none |
| 82 | Check: Sign Off On Logs and Results | 2006-03-23 17:00 A → 2006-03-22 14:10 (-1d) | 2006-03-23 17:00 A → 2006-03-22 14:10 (-1d) |  | 100% → 0% | none → 0d |  | baseline start 2006-03-22 14:10 → none; baseline finish 2006-03-22 14:10 → none |
| 83 | **Multi-class Order step-up test [Scenario 4]** | 2006-03-23 08:00 A → 2006-03-22 14:10 (-1d) | 2006-03-23 17:00 A → 2006-03-22 16:05 (-1d) | 1d → 0.24d | 100% → 0% | none → 0d |  | baseline start 2006-03-22 14:10 → none; baseline finish 2006-03-23 16:05 → none |
| 84 | BC Cleanup, Initial Driver Setup, | 2006-03-23 08:00 A → 2006-03-22 14:10 (-1d) | 2006-03-23 08:20 A → 2006-03-22 14:30 (-1d) |  | 100% → 0% | none → 0d |  | baseline start 2006-03-22 14:10 → none; baseline finish 2006-03-22 14:30 → none |
| 85 | Test Execution for No BOTR | 2006-03-23 17:00 A → 2006-03-22 14:30 (-1d) | 2006-03-23 17:00 A → 2006-03-22 15:30 (-1d) | 0h → 1h | 100% → 0% | none → 0d |  | baseline start 2006-03-22 14:30 → none; baseline finish 2006-03-22 15:30 → none |
| 86 | endOfPerformance and Backup | 2006-03-23 17:00 A → 2006-03-22 15:30 (-1d) | 2006-03-23 17:00 A → 2006-03-22 15:50 (-1d) | 0min → 20min | 100% → 0% | none → 0d |  | baseline start 2006-03-22 15:30 → none; baseline finish 2006-03-22 15:50 → none |
| 87 | Reporting through KR site | 2006-03-23 17:00 A → 2006-03-22 15:50 (-1d) | 2006-03-23 17:00 A → 2006-03-22 16:05 (-1d) | 0min → 15min | 100% → 0% | none → 0d |  | baseline start 2006-03-22 15:50 → none; baseline finish 2006-03-22 16:05 → none |
| 88 | Check: Sign Off on Logs and Results | 2006-03-23 17:00 A → 2006-03-22 16:05 (-1d) | 2006-03-23 17:00 A → 2006-03-22 16:05 (-1d) |  | 100% → 0% | none → 0d |  | baseline start 2006-03-22 16:05 → none; baseline finish 2006-03-23 16:05 → none |
| 89 | **HAL Scenarios** | 2006-03-24 08:00 A → 2006-03-22 16:05 (-2d) | 2006-03-24 17:00 A → 2006-03-23 16:05 (-1d) |  | 100% → 0% | none → 0d |  | baseline start 2006-03-23 16:05 → none; baseline finish 2006-03-24 16:05 → none |
| 90 | Scenario 1: All Orders Trade - Baseline | 2006-03-24 08:00 A → 2006-03-22 16:05 (-2d) | 2006-03-24 10:00 A → 2006-03-23 09:05 (-1d) |  | 100% → 0% | none → 0d |  | baseline start 2006-03-23 16:05 → none; baseline finish 2006-03-24 09:05 → none |
| 91 | Scenario 2: All Orders Book No Trade - Baseline | 2006-03-24 10:00 A → 2006-03-23 09:05 (-1d) | 2006-03-24 12:00 A → 2006-03-23 11:05 (-1d) |  | 100% → 0% | none → 0d |  | baseline start 2006-03-24 09:05 → none; baseline finish 2006-03-24 11:05 → none |
| 92 | Scenario 3: All Orders Auction But No Trades | 2006-03-24 13:00 A → 2006-03-23 11:05 (-1d) | 2006-03-24 15:00 A → 2006-03-23 14:05 (-1d) |  | 100% → 0% | none → 0d |  | baseline start 2006-03-24 11:05 → none; baseline finish 2006-03-24 14:05 → none |
| 93 | Scenario 4: All Orders Auction and Trade | 2006-03-24 15:00 A → 2006-03-23 14:05 (-1d) | 2006-03-24 17:00 A → 2006-03-23 16:05 (-1d) |  | 100% → 0% | none → 0d |  | baseline start 2006-03-24 14:05 → none; baseline finish 2006-03-24 16:05 → none |
| 94 | Check: Sign Off on Logs and Results | 2006-03-24 17:00 A → 2006-03-23 16:05 (-1d) | 2006-03-24 17:00 A → 2006-03-23 16:05 (-1d) |  | 100% → 0% | none → 0d |  | baseline start 2006-03-24 16:05 → none; baseline finish 2006-03-24 16:05 → none |
| 95 | **Hybrid BC failover (new release to old release)** | 2006-03-23 08:00 A → 2006-03-23 16:05 | 2006-03-23 08:35 A → 2006-03-24 09:50 (+1d) | 0.07d → 0.34d | 100% → 0% | none → 0d | 83 → 89 | baseline start 2006-03-24 16:05 → none; baseline finish 2006-03-27 09:50 → none |
| 96 | BC Cleanup start A Side as Master | 2006-03-23 08:00 A → 2006-03-23 16:05 | 2006-03-23 08:20 A → 2006-03-23 16:25 |  | 100% → 0% | none → 0d |  | baseline start 2006-03-24 16:05 → none; baseline finish 2006-03-24 16:25 → none |
| 97 | Initial setup for test Drivers (starting processes on BC Slave.) | 2006-03-23 08:00 A → 2006-03-23 16:25 | 2006-03-23 08:35 A → 2006-03-23 16:50 | 35min → 25min | 100% → 0% | none → 0d |  | baseline start 2006-03-24 16:25 → none; baseline finish 2006-03-24 16:50 → none |
| 98 | Quote/Order BC20 Hybrid traffic going before/during/after failover. Test Execution | 2006-03-23 08:00 A → 2006-03-23 16:50 | 2006-03-23 08:30 A → 2006-03-24 08:20 (+1d) |  | 100% → 0% | none → 0d |  | baseline start 2006-03-24 16:50 → none; baseline finish 2006-03-27 08:20 → none |
| 99 | ITG Checkout script (for W_MAIN and ONE_MAIN Session) | 2006-03-23 08:00 A → 2006-03-24 08:20 (+1d) | 2006-03-23 08:20 A → 2006-03-24 09:00 (+1d) | 20min → 40min | 100% → 0% | none → 0d |  | baseline start 2006-03-27 08:20 → none; baseline finish 2006-03-27 09:00 → none |
| 100 | Backup for Failover and ITG Checkout | 2006-03-23 08:00 A → 2006-03-24 09:00 (+1d) | 2006-03-23 08:20 A → 2006-03-24 09:20 (+1d) |  | 100% → 0% | none → 0d |  | baseline start 2006-03-27 09:00 → none; baseline finish 2006-03-27 09:20 → none |
| 101 | Generate Report for Failover Timings for all BC Processes (taking time from log files) | 2006-03-23 08:00 A → 2006-03-24 09:20 (+1d) | 2006-03-23 08:20 A → 2006-03-24 09:50 (+1d) | 20min → 30min | 100% → 0% | none → 0d |  | baseline start 2006-03-27 09:20 → none; baseline finish 2006-03-27 09:50 → none |
| 102 | Check: Sign Off on Checkout Scripts, Logs and Results | 2006-03-23 08:00 A → 2006-03-24 09:50 (+1d) | 2006-03-23 08:00 A → 2006-03-24 09:50 (+1d) |  | 100% → 0% | none → 0d |  | baseline start 2006-03-27 09:50 → none; baseline finish 2006-03-27 09:50 → none |
| 103 | **Install Hybrid BC B Side** | 2006-03-29 08:00 A → 2006-03-24 09:50 (-5d) | 2006-03-29 09:00 A → 2006-03-24 15:35 (-5d) | 0.12d → 0.59d | 100% → 0% | none → 0d | MDGC Rollout → 53 | baseline start 2006-03-27 09:50 → none; baseline finish 2006-03-27 15:35 → none |
| 104 | **Install Hybrid BC "B" side** | 2006-03-29 08:00 A → 2006-03-24 09:50 (-5d) | 2006-03-29 09:00 A → 2006-03-24 13:10 (-5d) | 0.12d → 0.29d | 100% → 0% | none → 0d |  | baseline start 2006-03-27 09:50 → none; baseline finish 2006-03-27 13:10 → none |
| 105 | Cleanup | 2006-03-29 08:00 A → 2006-03-24 09:50 (-5d) | 2006-03-29 08:20 A → 2006-03-24 10:10 (-5d) |  | 100% → 0% | none → 0d |  | baseline start 2006-03-27 09:50 → none; baseline finish 2006-03-27 10:10 → none |
| 106 | Configuration and starting processes | 2006-03-29 08:00 A → 2006-03-24 10:10 (-5d) | 2006-03-29 09:00 A → 2006-03-24 11:10 (-5d) |  | 100% → 0% | none → 0d |  | baseline start 2006-03-27 10:10 → none; baseline finish 2006-03-27 11:10 → none |
| 107 | ITG Checkout script (W_MAIN and ONE_MAIN Session) | 2006-03-29 08:00 A → 2006-03-24 11:10 (-5d) | 2006-03-29 08:40 A → 2006-03-24 11:50 (-5d) |  | 100% → 0% | none → 0d |  | baseline start 2006-03-27 11:10 → none; baseline finish 2006-03-27 11:50 → none |
| 108 | Backup and Reporting | 2006-03-29 08:00 A → 2006-03-24 11:50 (-5d) | 2006-03-29 08:20 A → 2006-03-24 13:10 (-5d) |  | 100% → 0% | none → 0d |  | baseline start 2006-03-27 11:50 → none; baseline finish 2006-03-27 13:10 → none |
| 109 | Check: Sign Off on Checkout Scripts, Logs and Results | 2006-03-29 08:00 A → 2006-03-24 13:10 (-5d) | 2006-03-29 08:00 A → 2006-03-24 13:10 (-5d) |  | 100% → 0% | none → 0d |  | baseline start 2006-03-27 13:10 → none; baseline finish 2006-03-27 13:10 → none |
| 110 | **Hybrid BC failover (new release to new release)** | 2006-03-29 08:00 A → 2006-03-24 13:10 (-5d) | 2006-03-29 08:40 A → 2006-03-24 15:35 (-5d) | 0.08d → 0.3d | 100% → 0% | none → 0d |  | baseline start 2006-03-27 13:10 → none; baseline finish 2006-03-27 15:35 → none |
| 111 | Initial setup for test Drivers (starting processes on BC Slave.) | 2006-03-29 08:00 A → 2006-03-24 13:10 (-5d) | 2006-03-29 08:25 A → 2006-03-24 13:35 (-5d) |  | 100% → 0% | none → 0d |  | baseline start 2006-03-27 13:10 → none; baseline finish 2006-03-27 13:35 → none |
| 112 | Quote/Order BC20 Hybrid traffic going before/during/after failover. Test Execution | 2006-03-29 08:00 A → 2006-03-24 13:35 (-5d) | 2006-03-29 08:30 A → 2006-03-24 14:05 (-5d) |  | 100% → 0% | none → 0d |  | baseline start 2006-03-27 13:35 → none; baseline finish 2006-03-27 14:05 → none |
| 113 | ITG Checkout script (for W_MAIN and ONE_MAIN Session) | 2006-03-29 08:00 A → 2006-03-24 14:05 (-5d) | 2006-03-29 08:40 A → 2006-03-24 14:45 (-5d) |  | 100% → 0% | none → 0d |  | baseline start 2006-03-27 14:05 → none; baseline finish 2006-03-27 14:45 → none |
| 114 | Backup for Failover and ITG Checkout | 2006-03-29 08:00 A → 2006-03-24 14:45 (-5d) | 2006-03-29 08:20 A → 2006-03-24 15:05 (-5d) |  | 100% → 0% | none → 0d |  | baseline start 2006-03-27 14:45 → none; baseline finish 2006-03-27 15:05 → none |
| 115 | Generate Report for Failover Timings for all BC Processes (taking time from log files) | 2006-03-29 08:00 A → 2006-03-24 15:05 (-5d) | 2006-03-29 08:30 A → 2006-03-24 15:35 (-5d) |  | 100% → 0% | none → 0d |  | baseline start 2006-03-27 15:05 → none; baseline finish 2006-03-27 15:35 → none |
| 116 | Check: Sign Off on Checkout Scripts,Logs and Results | 2006-03-29 08:00 A → 2006-03-24 15:35 (-5d) | 2006-03-29 08:00 A → 2006-03-24 15:35 (-5d) |  | 100% → 0% | none → 0d |  | baseline start 2006-03-27 15:35 → none; baseline finish 2006-03-27 15:35 → none |
| 117 | **Install ONE_MAIN BC A Side** | 2006-03-28 08:00 A → 2006-03-24 15:35 (-4d) | 2006-03-28 15:20 A → 2006-03-27 16:20 (-1d) | 0.79d → 1.09d | 100% → 0% | none → 0d |  | baseline start 2006-03-27 15:35 → none; baseline finish 2006-03-28 16:20 → none |
| 118 | **Install ONE_MAIN BC (A)** | 2006-03-28 08:00 A → 2006-03-24 15:35 (-4d) | 2006-03-28 09:00 A → 2006-03-27 08:35 (-1d) | 0.12d → 0.25d | 100% → 0% | none → 0d |  | baseline start 2006-03-27 15:35 → none; baseline finish 2006-03-28 08:35 → none |
| 119 | Configuration and starting processes | 2006-03-28 08:00 A → 2006-03-24 15:35 (-4d) | 2006-03-28 09:00 A → 2006-03-24 16:35 (-4d) |  | 100% → 0% | none → 0d |  | baseline start 2006-03-27 15:35 → none; baseline finish 2006-03-27 16:35 → none |
| 120 | ITG Checkout script (W_MAIN and ONE_MAIN Session) | 2006-03-28 08:00 A → 2006-03-24 16:35 (-4d) | 2006-03-28 08:40 A → 2006-03-27 08:15 (-1d) |  | 100% → 0% | none → 0d |  | baseline start 2006-03-27 16:35 → none; baseline finish 2006-03-28 08:15 → none |
| 121 | Backup and Reporting | 2006-03-28 08:00 A → 2006-03-27 08:15 (-1d) | 2006-03-28 08:20 A → 2006-03-27 08:35 (-1d) |  | 100% → 0% | none → 0d |  | baseline start 2006-03-28 08:15 → none; baseline finish 2006-03-28 08:35 → none |
| 122 | Check: Sign Off on Checkout Scripts, Logs and Results | 2006-03-28 08:00 A → 2006-03-27 08:35 (-1d) | 2006-03-28 08:00 A → 2006-03-27 08:35 (-1d) |  | 100% → 0% | none → 0d |  | baseline start 2006-03-28 08:35 → none; baseline finish 2006-03-28 08:35 → none |
| 123 | **Multi-class Order step-up test for ONE_MAIN [Scenario 2]** | 2006-03-28 08:00 A → 2006-03-27 08:35 (-1d) | 2006-03-28 09:25 A → 2006-03-27 10:25 (-1d) | 0.18d → 0.23d | 100% → 0% | none → 0d |  | baseline start 2006-03-28 08:35 → none; baseline finish 2006-03-28 10:25 → none |
| 124 | BC Cleanup, Initial Driver Setup, | 2006-03-28 08:00 A → 2006-03-27 08:35 (-1d) | 2006-03-28 08:20 A → 2006-03-27 08:55 (-1d) |  | 100% → 0% | none → 0d |  | baseline start 2006-03-28 08:35 → none; baseline finish 2006-03-28 08:55 → none |
| 125 | Test Execution for No BOTR | 2006-03-28 08:00 A → 2006-03-27 08:55 (-1d) | 2006-03-28 09:00 A → 2006-03-27 09:55 (-1d) |  | 100% → 0% | none → 0d |  | baseline start 2006-03-28 08:55 → none; baseline finish 2006-03-28 09:55 → none |
| 126 | endOfPerformance and Backup | 2006-03-28 08:00 A → 2006-03-27 09:55 (-1d) | 2006-03-28 08:15 A → 2006-03-27 10:10 (-1d) |  | 100% → 0% | none → 0d |  | baseline start 2006-03-28 09:55 → none; baseline finish 2006-03-28 10:10 → none |
| 127 | Reporting through KR site | 2006-03-28 08:00 A → 2006-03-27 10:10 (-1d) | 2006-03-28 08:15 A → 2006-03-27 10:25 (-1d) |  | 100% → 0% | none → 0d |  | baseline start 2006-03-28 10:10 → none; baseline finish 2006-03-28 10:25 → none |
| 128 | Check: Sign Off on Logs and Results | 2006-03-28 09:25 A → 2006-03-27 10:25 (-1d) | 2006-03-28 09:25 A → 2006-03-27 10:25 (-1d) |  | 100% → 0% | none → 0d |  | baseline start 2006-03-28 10:25 → none; baseline finish 2006-03-28 10:25 → none |
| 129 | **Multi-class Quote step-up test [Scenario 1]** | 2006-03-28 09:25 A → 2006-03-27 10:25 (-1d) | 2006-03-28 11:35 A → 2006-03-27 13:35 (-1d) |  | 100% → 0% | none → 0d |  | baseline start 2006-03-28 10:25 → none; baseline finish 2006-03-28 13:35 → none |
| 130 | BC Cleanup, Initial Driver Setup, | 2006-03-28 09:25 A → 2006-03-27 10:25 (-1d) | 2006-03-28 09:45 A → 2006-03-27 10:45 (-1d) |  | 100% → 0% | none → 0d |  | baseline start 2006-03-28 10:25 → none; baseline finish 2006-03-28 10:45 → none |
| 131 | Test Execution for No BOTR | 2006-03-28 09:45 A → 2006-03-27 10:45 (-1d) | 2006-03-28 10:45 A → 2006-03-27 11:45 (-1d) |  | 100% → 0% | none → 0d |  | baseline start 2006-03-28 10:45 → none; baseline finish 2006-03-28 11:45 → none |
| 132 | endOfPerformance and Backup | 2006-03-28 10:45 A → 2006-03-27 11:45 (-1d) | 2006-03-28 11:15 A → 2006-03-27 13:15 (-1d) |  | 100% → 0% | none → 0d |  | baseline start 2006-03-28 11:45 → none; baseline finish 2006-03-28 13:15 → none |
| 133 | Reporting through KR site | 2006-03-28 11:15 A → 2006-03-27 13:15 (-1d) | 2006-03-28 11:35 A → 2006-03-27 13:35 (-1d) |  | 100% → 0% | none → 0d |  | baseline start 2006-03-28 13:15 → none; baseline finish 2006-03-28 13:35 → none |
| 134 | Check: Sign Off on Logs and Results | 2006-03-28 11:35 A → 2006-03-27 13:35 (-1d) | 2006-03-28 11:35 A → 2006-03-27 13:35 (-1d) |  | 100% → 0% | none → 0d |  | baseline start 2006-03-28 13:35 → none; baseline finish 2006-03-28 13:35 → none |
| 135 | **Failover ONE_MAIN BC (Old to New)** | 2006-03-28 11:35 A → 2006-03-27 13:35 (-1d) | 2006-03-28 15:20 A → 2006-03-27 16:20 (-1d) |  | 100% → 0% | none → 0d |  | baseline start 2006-03-28 13:35 → none; baseline finish 2006-03-28 16:20 → none |
| 136 | Cleanup | 2006-03-28 11:35 A → 2006-03-27 13:35 (-1d) | 2006-03-28 11:55 A → 2006-03-27 13:55 (-1d) |  | 100% → 0% | none → 0d |  | baseline start 2006-03-28 13:35 → none; baseline finish 2006-03-28 13:55 → none |
| 137 | Initial setup for test Drivers (starting processes on BC Slave.) | 2006-03-28 11:55 A → 2006-03-27 13:55 (-1d) | 2006-03-28 13:20 A → 2006-03-27 14:20 (-1d) |  | 100% → 0% | none → 0d |  | baseline start 2006-03-28 13:55 → none; baseline finish 2006-03-28 14:20 → none |
| 138 | Quote/Order ONE_MAIN traffic going before/during/after failover. Test Execution | 2006-03-28 13:20 A → 2006-03-27 14:20 (-1d) | 2006-03-28 13:50 A → 2006-03-27 14:50 (-1d) |  | 100% → 0% | none → 0d |  | baseline start 2006-03-28 14:20 → none; baseline finish 2006-03-28 14:50 → none |
| 139 | ITG Checkout script (for W_MAIN and ONE_MAIN Session) | 2006-03-28 13:50 A → 2006-03-27 14:50 (-1d) | 2006-03-28 14:30 A → 2006-03-27 15:30 (-1d) |  | 100% → 0% | none → 0d |  | baseline start 2006-03-28 14:50 → none; baseline finish 2006-03-28 15:30 → none |
| 140 | Backup for Failover and ITG Checkout | 2006-03-28 14:30 A → 2006-03-27 15:30 (-1d) | 2006-03-28 14:50 A → 2006-03-27 15:50 (-1d) |  | 100% → 0% | none → 0d |  | baseline start 2006-03-28 15:30 → none; baseline finish 2006-03-28 15:50 → none |

| ID | Task | Start | Finish | Duration | Complete | Total float | Other |
| --- | --- | --- | --- | --- | --- | --- | --- |
| 141 | Generate Report for Failover Timings for all BC Processes (taking time from log files) | 2006-03-28 14:50 A → 2006-03-27 15:50 (-1d) | 2006-03-28 15:20 A → 2006-03-27 16:20 (-1d) |  | 100% → 0% | none → 0d | baseline start 2006-03-28 15:50 → none; baseline finish 2006-03-28 16:20 → none |
| 142 | Check: Sign Off on Checkout Scripts,Logs and Results | 2006-03-28 15:20 A → 2006-03-27 16:20 (-1d) | 2006-03-28 15:20 A → 2006-03-27 16:20 (-1d) |  | 100% → 0% | none → 0d | baseline start 2006-03-28 16:20 → none; baseline finish 2006-03-28 16:20 → none |
| 143 | **Install ONE_MAIN BC B Side** | 2006-03-29 08:00 A → 2006-03-27 16:20 (-2d) | 2006-03-29 11:05 A → 2006-03-28 13:05 (-1d) | 0.39d → 0.59d | 100% → 0% | none → 0d | baseline start 2006-03-28 16:20 → none; baseline finish 2006-03-29 13:05 → none |
| 144 | **Install ONE_MAIN BC (B)** | 2006-03-29 08:00 A → 2006-03-27 16:20 (-2d) | 2006-03-29 09:00 A → 2006-03-28 09:20 (-1d) | 0.12d → 0.25d | 100% → 0% | none → 0d | baseline start 2006-03-28 16:20 → none; baseline finish 2006-03-29 09:20 → none |
| 145 | Configuration and starting processes | 2006-03-29 08:00 A → 2006-03-27 16:20 (-2d) | 2006-03-29 09:00 A → 2006-03-28 08:20 (-1d) |  | 100% → 0% | none → 0d | baseline start 2006-03-28 16:20 → none; baseline finish 2006-03-29 08:20 → none |
| 146 | ITG Checkout script (W_MAIN and ONE_MAIN Session) | 2006-03-29 08:00 A → 2006-03-28 08:20 (-1d) | 2006-03-29 08:40 A → 2006-03-28 09:00 (-1d) |  | 100% → 0% | none → 0d | baseline start 2006-03-29 08:20 → none; baseline finish 2006-03-29 09:00 → none |
| 147 | Backup and Reporting | 2006-03-29 08:00 A → 2006-03-28 09:00 (-1d) | 2006-03-29 08:20 A → 2006-03-28 09:20 (-1d) |  | 100% → 0% | none → 0d | baseline start 2006-03-29 09:00 → none; baseline finish 2006-03-29 09:20 → none |
| 148 | Check: Sign Off on Checkout Scripts, Logs and Results | 2006-03-29 08:20 A → 2006-03-28 09:20 (-1d) | 2006-03-29 08:20 A → 2006-03-28 09:20 (-1d) |  | 100% → 0% | none → 0d | baseline start 2006-03-29 09:20 → none; baseline finish 2006-03-29 09:20 → none |
| 149 | **Failover ONE_MAIN BC (New to New)** | 2006-03-29 08:20 A → 2006-03-28 09:20 (-1d) | 2006-03-29 11:05 A → 2006-03-28 13:05 (-1d) |  | 100% → 0% | none → 0d | baseline start 2006-03-29 09:20 → none; baseline finish 2006-03-29 13:05 → none |
| 150 | Cleanup | 2006-03-29 08:20 A → 2006-03-28 09:20 (-1d) | 2006-03-29 08:40 A → 2006-03-28 09:40 (-1d) |  | 100% → 0% | none → 0d | baseline start 2006-03-29 09:20 → none; baseline finish 2006-03-29 09:40 → none |
| 151 | Initial setup for test Drivers (starting processes on BC Slave.) | 2006-03-29 08:40 A → 2006-03-28 09:40 (-1d) | 2006-03-29 09:05 A → 2006-03-28 10:05 (-1d) |  | 100% → 0% | none → 0d | baseline start 2006-03-29 09:40 → none; baseline finish 2006-03-29 10:05 → none |
| 152 | Quote/Order ONE_MAIN traffic going before/during/after failover. Test Execution | 2006-03-29 09:05 A → 2006-03-28 10:05 (-1d) | 2006-03-29 09:35 A → 2006-03-28 10:35 (-1d) |  | 100% → 0% | none → 0d | baseline start 2006-03-29 10:05 → none; baseline finish 2006-03-29 10:35 → none |
| 153 | ITG Checkout script (for W_MAIN and ONE_MAIN Session) | 2006-03-29 09:35 A → 2006-03-28 10:35 (-1d) | 2006-03-29 10:15 A → 2006-03-28 11:15 (-1d) |  | 100% → 0% | none → 0d | baseline start 2006-03-29 10:35 → none; baseline finish 2006-03-29 11:15 → none |
| 154 | Backup for Failover and ITG Checkout | 2006-03-29 10:15 A → 2006-03-28 11:15 (-1d) | 2006-03-29 10:35 A → 2006-03-28 11:35 (-1d) |  | 100% → 0% | none → 0d | baseline start 2006-03-29 11:15 → none; baseline finish 2006-03-29 11:35 → none |
| 155 | Generate Report for Failover Timings for all BC Processes (taking time from log files) | 2006-03-29 10:35 A → 2006-03-28 11:35 (-1d) | 2006-03-29 11:05 A → 2006-03-28 13:05 (-1d) |  | 100% → 0% | none → 0d | baseline start 2006-03-29 11:35 → none; baseline finish 2006-03-29 13:05 → none |
| 156 | Check: Sign Off on Checkout Scripts,Logs and Results | 2006-03-29 11:05 A → 2006-03-28 13:05 (-1d) | 2006-03-29 11:05 A → 2006-03-28 13:05 (-1d) |  | 100% → 0% | none → 0d | baseline start 2006-03-29 13:05 → none; baseline finish 2006-03-29 13:05 → none |
| 157 | **4 Hour Endurance Test** | 2006-03-30 08:00 A → 2006-03-28 13:05 (-2d) | 2006-03-30 12:00 A → 2006-03-29 10:05 (-1d) | 0.5d → 0.75d | 100% → 0% | none → 0d | baseline start 2006-03-29 13:05 → none; baseline finish 2006-03-30 10:05 → none |
| 158 | Cleanup for W_MAIN and ONE_MAIN BC | 2006-03-30 08:00 A → 2006-03-28 13:05 (-2d) | 2006-03-30 08:20 A → 2006-03-28 13:25 (-2d) |  | 100% → 0% | none → 0d | baseline start 2006-03-29 13:05 → none; baseline finish 2006-03-29 13:25 → none |
| 159 | Driver setup | 2006-03-30 08:00 A → 2006-03-28 13:25 (-2d) | 2006-03-30 08:20 A → 2006-03-28 13:45 (-2d) |  | 100% → 0% | none → 0d | baseline start 2006-03-29 13:25 → none; baseline finish 2006-03-29 13:45 → none |
| 160 | CAS bounce | 2006-03-30 08:00 A → 2006-03-28 13:45 (-2d) | 2006-03-30 08:20 A → 2006-03-28 14:05 (-2d) |  | 100% → 0% | none → 0d | baseline start 2006-03-29 13:45 → none; baseline finish 2006-03-29 14:05 → none |
| 161 | 4 hour Sanity Check | 2006-03-30 08:00 A → 2006-03-28 14:05 (-2d) | 2006-03-30 12:00 A → 2006-03-29 09:05 (-1d) |  | 100% → 0% | none → 0d | baseline start 2006-03-29 14:05 → none; baseline finish 2006-03-30 09:05 → none |
| 162 | endOfPerformance and Backup and Reporting | 2006-03-30 08:05 A → 2006-03-29 09:05 (-1d) | 2006-03-30 09:05 A → 2006-03-29 10:05 (-1d) |  | 100% → 0% | none → 0d | baseline start 2006-03-30 09:05 → none; baseline finish 2006-03-30 10:05 → none |
| 163 | Check: Sign Off on Logs and Results | 2006-03-30 09:05 A → 2006-03-29 10:05 (-1d) | 2006-03-30 09:05 A → 2006-03-29 10:05 (-1d) |  | 100% → 0% | none → 0d | baseline start 2006-03-30 10:05 → none; baseline finish 2006-03-30 10:05 → none |
| 164 | **4 Hour Endurance Test with Auctions** | 2006-03-30 09:05 A → 2006-03-29 10:05 (-1d) | 2006-03-30 16:05 A → 2006-03-30 08:05 |  | 100% → 0% | none → 0d | baseline start 2006-03-30 10:05 → none; baseline finish 2006-03-31 08:05 → none |
| 165 | Cleanup for W_MAIN and ONE_MAIN BC | 2006-03-30 09:05 A → 2006-03-29 10:05 (-1d) | 2006-03-30 09:25 A → 2006-03-29 10:25 (-1d) |  | 100% → 0% | none → 0d | baseline start 2006-03-30 10:05 → none; baseline finish 2006-03-30 10:25 → none |
| 166 | Driver setup | 2006-03-30 09:25 A → 2006-03-29 10:25 (-1d) | 2006-03-30 09:45 A → 2006-03-29 10:45 (-1d) |  | 100% → 0% | none → 0d | baseline start 2006-03-30 10:25 → none; baseline finish 2006-03-30 10:45 → none |
| 167 | CAS bounce | 2006-03-30 09:45 A → 2006-03-29 10:45 (-1d) | 2006-03-30 10:05 A → 2006-03-29 11:05 (-1d) |  | 100% → 0% | none → 0d | baseline start 2006-03-30 10:45 → none; baseline finish 2006-03-30 11:05 → none |
| 168 | 4 hour Sanity Check | 2006-03-30 10:05 A → 2006-03-29 11:05 (-1d) | 2006-03-30 15:05 A → 2006-03-29 16:05 (-1d) |  | 100% → 0% | none → 0d | baseline start 2006-03-30 11:05 → none; baseline finish 2006-03-30 16:05 → none |
| 169 | endOfPerformance and Backup and Reporting | 2006-03-30 15:05 A → 2006-03-29 16:05 (-1d) | 2006-03-30 16:05 A → 2006-03-30 08:05 |  | 100% → 0% | none → 0d | baseline start 2006-03-30 16:05 → none; baseline finish 2006-03-31 08:05 → none |
| 170 | Check: Sign Off on Logs and Results | 2006-03-30 16:05 A → 2006-03-30 08:05 | 2006-03-30 16:05 A → 2006-03-30 08:05 |  | 100% → 0% | none → 0d | baseline start 2006-03-31 08:05 → none; baseline finish 2006-03-31 08:05 → none |
| 171 | **Server Side Full Cleanup after All Server upgrades.** | 2006-03-30 16:05 → 2006-03-30 08:05 | 2006-03-31 08:25 → 2006-03-30 13:25 (-1d) | 0.17d → 0.54d |  |  | baseline start 2006-03-31 08:05 → none; baseline finish 2006-03-31 09:25 → none |
| 172 | Time server full startup after cleanup (See Server Startup Timing Page) | 2006-03-30 16:05 → 2006-03-30 08:05 | 2006-03-31 08:05 → 2006-03-30 13:05 (-1d) | 1h → 4h |  |  | baseline start 2006-03-31 08:05 → none; baseline finish 2006-03-31 09:05 → none |
| 173 | Backup for server Timings | 2006-03-31 08:05 → 2006-03-30 13:05 (-1d) | 2006-03-31 08:25 → 2006-03-30 13:25 (-1d) |  |  |  | baseline start 2006-03-31 09:05 → none; baseline finish 2006-03-31 09:25 → none |
| 174 | Check: Sign Off on Logs and Results | 2006-03-31 08:25 → 2006-03-30 13:25 (-1d) | 2006-03-31 08:25 → 2006-03-30 13:25 (-1d) |  |  |  | baseline start 2006-03-31 09:25 → none; baseline finish 2006-03-31 09:25 → none |
| 175 | **Check: Overall Verification** | 2006-03-31 08:25 → 2006-03-30 13:25 (-1d) | 2006-03-31 08:25 → 2006-03-30 13:25 (-1d) |  |  |  | baseline start 2006-03-31 09:25 → none; baseline finish 2006-03-31 09:25 → none |
| 176 | All Results Signed Off | 2006-03-31 08:25 → 2006-03-30 13:25 (-1d) | 2006-03-31 08:25 → 2006-03-30 13:25 (-1d) |  |  |  | baseline start 2006-03-31 09:25 → none; baseline finish 2006-03-31 09:25 → none |
| 177 | All Tests Completed | 2006-03-31 08:25 → 2006-03-30 13:25 (-1d) | 2006-03-31 08:25 → 2006-03-30 13:25 (-1d) |  |  |  | baseline start 2006-03-31 09:25 → none; baseline finish 2006-03-31 09:25 → none |
| 178 | Results Blessed by Paul and Respective Groups | 2006-03-31 08:25 → 2006-03-30 13:25 (-1d) | 2006-03-31 08:25 → 2006-03-30 13:25 (-1d) |  |  |  | baseline start 2006-03-31 09:25 → none; baseline finish 2006-03-31 09:25 → none |
