# CBOE Stock System(Main)-98

How a schedule from MS Project changed from version to version. A marks actual dates.

## Version 1 (saved 2003-06-24, file CBOE Stock System(Main)-98.mpp)

| ID | WBS | Task | Duration | Start | Finish | Predecessors | Complete | Total float | Constraint |
| --- | --- | --- | --- | --- | --- | --- | --- | --- | --- |
| 1 | 1 | **CBOEdirect Stock System** | 280d | 2002-10-08 A | 2003-11-05 |  | 53% | 0d |  |
| 3 | 1.1 | **Requirements Gathering and Definition** | 62d | 2002-11-25 A | 2003-02-20 A |  | 100% |  |  |
| 4 |  | Requirements Member document | 60d | 2002-11-25 A | 2003-02-20 A |  | 100% |  |  |
| 5 |  | Use Case Comparism | 31d | 2002-11-25 A | 2003-01-10 A |  | 100% |  |  |
| 6 | 1.1.3 | **SBT Code Analysis** | 43d | 2002-11-25 A | 2003-01-24 A |  | 100% |  |  |
| 7 |  | Order Handling Service | 5d | 2002-11-25 A | 2002-11-29 A |  | 100% |  |  |
| 8 |  | Market Data Service | 5d | 2002-12-02 A | 2002-12-06 A | 7 | 100% |  |  |
| 9 |  | Broker Service | 7d | 2002-12-09 A | 2002-12-17 A | 8 | 100% |  |  |
| 10 |  | Presentation to group | 0d | 2002-12-17 A | 2002-12-17 A | 9 | 100% |  |  |
| 11 |  | CATS Support | 26d | 2002-12-18 A | 2003-01-24 A | 10 | 100% |  |  |
| 12 | 1.1.4 | **Use Case Document** | 20d | 2003-01-20 A | 2003-02-14 A |  | 100% |  |  |
| 13 |  | Allocate Trade | 2d | 2003-01-20 A | 2003-01-21 A |  | 100% |  | start no earlier than 2003-01-20 |
| 14 |  | Monitor Sell Short | 2d | 2003-01-22 A | 2003-01-23 A | 13 | 100% |  |  |
| 15 |  | Bust Trade | 2d | 2003-01-24 A | 2003-01-27 A | 14 | 100% |  |  |
| 16 |  | Submit Customer Sell Short | 2d | 2003-01-28 A | 2003-01-29 A | 15 | 100% |  |  |
| 17 |  | Submit Limit Order | 2d | 2003-01-30 A | 2003-01-31 A | 16 | 100% |  |  |
| 18 |  | Submit Market Order | 2d | 2003-02-03 A | 2003-02-04 A | 17 | 100% |  |  |
| 19 |  | Submit Quote | 2d | 2003-02-05 A | 2003-02-06 A | 18 | 100% |  |  |
| 20 |  | Submit Stop/Stop Limit | 1d | 2003-02-07 A | 2003-02-07 A | 19 | 100% |  |  |
| 21 |  | Monitor Stop/Stop Limit | 1d | 2003-02-10 A | 2003-02-10 A | 20 | 100% |  |  |
| 22 |  | NBBO IPP Protection | 1d | 2003-02-11 A | 2003-02-11 A | 21 | 100% |  |  |
| 23 |  | Done Order Entry | 1d | 2003-02-12 A | 2003-02-12 A | 22 | 100% |  |  |
| 24 |  | Market Open Rotation | 1d | 2003-02-13 A | 2003-02-13 A | 23 | 100% |  |  |
| 25 |  | Monitor Trade Through | 1d | 2003-02-14 A | 2003-02-14 A | 24 | 100% |  |  |
| 27 |  | Detail Design | 3d | 2003-04-25 A | 2003-04-30 A | 28 | 100% |  |  |
| 28 | 1.3 | **Development Enviroment setup** | 109.1d | 2002-11-21 A | 2003-04-25 A |  | 100% |  |  |
| 29 | 1.3.1 | **Iteration 1** | 50d | 2002-11-21 A | 2003-01-31 A |  | 100% |  |  |
| 30 |  | Meeting to discuss development environment - Haps0a | 1d | 2002-11-21 A | 2002-11-21 A |  | 100% |  |  |
| 31 |  | Haps0a Configuration Meeting | 1d | 2002-12-19 A | 2002-12-19 A |  | 100% |  | start no earlier than 2002-12-19 |
| 32 |  | Haps0a Request for help | 1d | 2002-12-30 A | 2002-12-30 A |  | 100% |  | start no earlier than 2002-12-30 |
| 33 |  | Haps Infrastructure Installation | 3d | 2003-01-06 A | 2003-01-08 A |  | 100% |  | start no earlier than 2003-01-06 |
| 34 |  | Contact DB staff to install SBT Database | 1d | 2003-01-09 A | 2003-01-09 A | 33 | 100% |  |  |
| 35 |  | Database Installation Complete | 4d | 2003-01-10 A | 2003-01-15 A | 34 | 100% |  |  |
| 36 |  | Infrastructure Installlation Complete | 5d | 2003-01-16 A | 2003-01-22 A | 35 | 100% |  |  |
| 37 |  | SBT Tradeengine install | 7d | 2003-01-23 A | 2003-01-31 A | 36 | 100% |  |  |
| 38 |  | CAS install to haps0a | 7d | 2003-01-23 A | 2003-01-31 A | 36 | 100% |  |  |
| 39 |  | Could Not complete CAS or Tradeengine Install | 0d | 2003-01-31 A | 2003-01-31 A | 38 | 100% |  |  |
| 40 | 1.3.2 | **Iteration 2** | 66.1d | 2003-01-23 A | 2003-04-25 A |  | 100% |  |  |
| 41 |  | Met with SBT/Hardware/DB for alternative solution | 1d | 2003-01-23 A | 2003-01-23 A |  | 100% |  | start no earlier than 2003-01-23 |
| 42 |  | Development Boxes ready | 9d | 2003-01-24 A | 2003-02-05 A | 41 | 100% |  |  |
| 43 |  | Infrastructure Install | 3d | 2003-02-06 A | 2003-02-10 A | 42 | 100% |  |  |
| 44 |  | Meeting to get Stock Dev branch and code | 1d | 2003-02-04 A | 2003-02-04 A |  | 100% |  | start no earlier than 2003-02-04 |
| 45 |  | SBT Code merge for stock branch | 3d | 2003-02-05 A | 2003-02-07 A | 44 | 100% |  |  |
| 46 |  | SBT Tradeengine and CAS Installation | 55d | 2003-02-07 A | 2003-04-25 A | 45 | 100% |  |  |
| 47 | 1.3.3 | **Database Model** | 1d | 2003-02-20 A | 2003-02-20 A |  | 100% |  |  |
| 48 |  | Meeting to finalize datamodel changes | 1d | 2003-02-20 A | 2003-02-20 A |  | 100% |  | start no earlier than 2003-02-20 |
| 50 | 1.4 | **Consultant Hire and Introduction** | 15d | 2003-03-17 A | 2003-04-04 A |  | 100% |  |  |
| 51 | 1.4.1 | **Matt Sochacki** | 5d | 2003-03-17 A | 2003-03-21 A |  | 100% |  |  |
| 52 |  | Overview of System | 1d | 2003-03-17 A | 2003-03-17 A |  | 100% |  | start no earlier than 2003-03-17 |
| 53 |  | Traning/Setup | 4d | 2003-03-18 A | 2003-03-21 A | 52 | 100% |  |  |
| 54 | 1.4.2 | **Crystal Chen** | 5d | 2003-03-31 A | 2003-04-04 A |  | 100% |  |  |
| 55 |  | Overview of System | 1d | 2003-03-31 A | 2003-03-31 A |  | 100% |  | start no earlier than 2003-03-31 |
| 56 |  | Traning/Setup | 4d | 2003-04-01 A | 2003-04-04 A | 55 | 100% |  |  |
| 58 | 1.5 | **Pre-Design** | 8d | 2003-03-19 A | 2003-03-28 A |  | 100% |  |  |
| 59 | 1.5.1 | **Potential Database Changes** | 2d | 2003-03-19 A | 2003-03-20 A |  | 100% |  |  |
| 60 |  | Product( Cusip ) | 1d | 2003-03-19 A | 2003-03-19 A |  | 100% |  | start no earlier than 2003-03-19 |
| 61 |  | Member( Clearing code ) | 1d | 2003-03-20 A | 2003-03-20 A | 60 | 100% |  |  |
| 62 | 1.5.2 | **Major Object Changes** | 1d | 2003-03-21 A | 2003-03-21 A |  | 100% |  |  |
| 63 |  | Order Side - Sell Short | 1d | 2003-03-21 A | 2003-03-21 A | 61 | 100% |  |  |
| 64 | 1.5.3 | **IDL Changes** | 1d | 2003-03-27 A | 2003-03-28 A |  | 100% |  |  |
| 65 |  | Imbalance Calculation | 0d | 2003-03-27 A | 2003-03-27 A | 63 | 100% |  |  |
| 66 |  | Order Side - Sell Short/Sell Short Exempt | 1d | 2003-03-28 A | 2003-03-28 A | 65 | 100% |  |  |
| 68 | 1.6 | **Business Services** | 127d | 2003-03-24 A | 2003-09-16 |  | 38% | 6d |  |
| 69 | 1.6.1 | **Allocation Allgorithm Changes** | 48d | 2003-03-24 A | 2003-05-28 |  | 96% | 85d |  |
| 70 |  | Detail Design | 2d | 2003-03-24 A | 2003-03-25 A | 51 | 100% |  |  |
| 71 |  | Design Walkthrough | 0d | 2003-03-25 A | 2003-03-25 A | 70 | 100% |  |  |
| 72 |  | Additional Design and Evaluation of SBT | 12d | 2003-03-26 A | 2003-04-10 A | 71 | 100% |  |  |
| 73 |  | Walkthrough with Sandip on Algorithms | 5d | 2003-04-11 A | 2003-04-17 A | 72 | 100% |  |  |
| 74 |  | Configuration Delays | 12d | 2003-04-18 A | 2003-05-05 A | 73 | 100% |  |  |
| 75 | 1.6.1.6 | **Iteration 1** | 10d | 2003-05-05 A | 2003-05-19 |  | 80% | 92d |  |

| ID | WBS | Task | Duration | Start | Finish | Predecessors | Complete | Total float | Constraint |
| --- | --- | --- | --- | --- | --- | --- | --- | --- | --- |
| 76 |  | Odd-Lot | 0d | 2003-05-05 A | 2003-05-05 A | 74 | 100% |  |  |
| 77 |  | Mixed Lot | 0d | 2003-05-05 A | 2003-05-05 A | 76 | 100% |  |  |
| 78 |  | Pro-Rata | 4d | 2003-05-06 A | 2003-05-09 A | 77 | 100% |  |  |
| 79 |  | Time-Price | 4d | 2003-05-12 A | 2003-05-15 A | 78 | 100% |  |  |
| 80 |  | Trade Service | 2d | 2003-05-16 | 2003-05-19 | 79 |  | 86d |  |
| 81 | 1.6.1.7 | **Iteration 2** | 6d | 2003-05-20 A | 2003-05-27 A |  | 100% |  |  |
| 82 |  | Trade Service | 3d | 2003-05-20 A | 2003-05-22 A | 75 | 100% |  |  |
| 83 |  | Trade Envoy | 4d | 2003-05-22 A | 2003-05-27 A | 82 | 100% |  |  |
| 84 |  | Test Plan | 2d | 2003-05-20 A | 2003-05-28 A | 83 | 100% |  |  |
| 85 |  | Code Walkthrough | 0d | 2003-05-28 A | 2003-05-28 A | 84 | 100% |  |  |
| 86 | 1.6.2 | **Allocation Algorithm Testing** | 22d | 2003-05-29 A | 2003-06-27 |  | 45% | 32d |  |
| 87 |  | Environment Setup | 8d | 2003-05-29 A | 2003-06-09 A | 69 | 100% |  |  |
| 88 |  | Clearcase Issues | 2d | 2003-06-10 A | 2003-06-11 A | 87 | 100% |  |  |
| 89 | 1.6.2.3 | **Testing Effort** | 12d | 2003-06-12 | 2003-06-27 |  |  | 32d |  |
| 90 |  | Allocation | 7d | 2003-06-12 | 2003-06-20 | 88 |  | 26d |  |
| 91 |  | Quoting | 5d | 2003-06-23 | 2003-06-27 | 90 |  | 32d |  |
| 92 | 1.6.3 | **Lot Size Entry and Caching** | 7d | 2003-06-30 | 2003-07-08 |  |  | 32d |  |
| 93 |  | Analysis | 1d | 2003-06-30 | 2003-06-30 | 86 |  | 32d |  |
| 94 |  | Design | 1d | 2003-07-01 | 2003-07-01 | 93 |  | 32d |  |
| 95 |  | 1st Iteration Coding/Testing | 2d | 2003-07-02 | 2003-07-03 | 94 |  | 32d |  |
| 96 |  | 2nd Iteration Coding/Testing/Configuration | 3d | 2003-07-04 | 2003-07-08 | 95 |  | 32d |  |
| 97 | 1.6.4 | **Automated Execution for Marketable Orders** | 22d | 2003-04-07 A | 2003-05-06 A |  | 100% |  |  |
| 98 |  | Testing | 3d | 2003-04-07 A | 2003-04-09 A | 54 | 100% |  |  |
| 99 |  | Delay for Merge to SBT 3.0 | 12d | 2003-04-17 A | 2003-05-02 A | 98 | 100% |  | start no earlier than 2003-04-17 |
| 100 |  | Rotue to Manual Handling | 2d | 2003-05-05 A | 2003-05-06 A | 99 | 100% |  |  |
| 101 | 1.6.5 | **Trade Bust** | 25d | 2003-04-28 A | 2003-05-30 |  | 81% | 83d |  |
| 102 | 1.6.5.1 | **Detail Design** | 14d | 2003-04-28 A | 2003-05-15 A |  | 100% |  |  |
| 103 |  | Use Case | 2d | 2003-04-28 A | 2003-04-29 A |  | 100% |  | start no earlier than 2003-04-28 |
| 104 |  | Clearing issues and time frames | 1d | 2003-04-30 A | 2003-04-30 A | 103 | 100% |  |  |
| 105 |  | Database changes | 1d | 2003-05-01 A | 2003-05-01 A | 104 | 100% |  |  |
| 106 |  | Detail Design | 1d | 2003-05-02 A | 2003-05-02 A | 105 | 100% |  |  |
| 107 |  | Configuration Delay | 9d | 2003-05-05 A | 2003-05-15 A | 106 | 100% |  |  |
| 108 | 1.6.5.2 | **1st Iteration Coding** | 4d | 2003-05-16 A | 2003-05-21 |  | 67% | 90d |  |
| 109 |  | GUI | 2d | 2003-05-16 | 2003-05-19 | 107 |  | 86d |  |
| 110 | 1.6.5.2.2 | **Server** | 4d | 2003-05-16 A | 2003-05-21 A |  | 100% |  |  |
| 111 |  | IDL Changes | 1d | 2003-05-16 A | 2003-05-16 A | 107 | 100% |  |  |
| 112 |  | IDL Affected Code | 2d | 2003-05-19 A | 2003-05-20 A | 111 | 100% |  |  |
| 113 |  | Trade Service | 1d | 2003-05-21 A | 2003-05-21 A | 112 | 100% |  |  |
| 114 |  | Detail Design | 1d | 2003-05-22 A | 2003-05-22 A | 110 | 100% |  |  |
| 115 | 1.6.5.4 | **2nd Iteration Coding** | 5d | 2003-05-23 A | 2003-05-29 |  | 60% | 84d |  |
| 116 |  | GUI | 2d | 2003-05-23 | 2003-05-26 | 114 |  | 81d |  |
| 117 |  | Server | 3d | 2003-05-27 A | 2003-05-29 A | 116 | 100% |  |  |
| 118 |  | Test Plan | 1d | 2003-05-30 | 2003-05-30 | 117 |  | 77d |  |
| 119 |  | Code Walkthrough | 0d | 2003-05-30 | 2003-05-30 | 118 |  | 77d |  |
| 120 | 1.6.6 | **NBBO( IPP ) Protection - NBBO Stepup** | 43d | 2003-04-17 A | 2003-06-16 |  | 93% | 72d |  |
| 121 | 1.6.6.1 | **Detail Design** | 17d | 2003-04-17 A | 2003-05-09 A |  | 100% |  |  |
| 122 |  | Plug point for penny rule for ITS | 2d | 2003-05-08 A | 2003-05-09 A | 97 | 100% |  |  |
| 123 |  | Server | 2d | 2003-04-17 A | 2003-04-18 A | 122 | 100% |  |  |
| 124 |  | Design Walkthrough | 0d | 2003-04-18 A | 2003-04-18 A | 121 | 100% |  |  |
| 125 | 1.6.6.3 | **First Iteration Coding** | 5d | 2003-06-02 A | 2003-06-06 A |  | 100% |  |  |
| 126 | 1.6.6.3.1 | **Server** | 5d | 2003-06-02 A | 2003-06-06 A |  | 100% |  |  |
| 127 |  | ITS Strategies | 5d | 2003-06-02 A | 2003-06-06 A | 101 | 100% |  |  |
| 128 |  | Detail Design | 2d | 2003-06-09 A | 2003-06-10 A | 126 | 100% |  |  |
| 129 | 1.6.6.5 | **Second Iteration Coding** | 3d | 2003-06-11 A | 2003-06-13 A |  | 100% |  |  |
| 130 |  | Server | 3d | 2003-06-11 A | 2003-06-13 A | 128 | 100% |  |  |
| 131 |  | Test Plan | 1d | 2003-06-16 | 2003-06-16 | 130 |  | 23.4d |  |
| 132 |  | Code Walkthrough | 0d | 2003-06-16 | 2003-06-16 | 131 |  | 23.4d |  |
| 133 | 1.6.7 | **Sell Short** | 23d | 2003-06-17 A | 2003-07-17 |  | 24% | 27d |  |
| 134 | 1.6.7.1 | **Detail Design** | 3d | 2003-06-17 A | 2003-06-19 |  | 99% | 0d |  |
| 135 |  | Determine Event Channel to Monitor Ticks | 1d | 2003-06-17 A | 2003-06-17 A | 120 | 100% |  |  |
| 136 |  | Determine Event Channel to Monitor NBBO | 1d | 2003-06-18 A | 2003-06-18 A | 135 | 100% |  |  |
| 137 |  | Design Service to handle the monitoring of sell short | 1d | 2003-06-19 A | 2003-06-19 A | 136 | 100% |  |  |
| 138 |  | Deisgn Walkthrough | 0d | 2003-06-19 A | 2003-06-19 A | 137 | 100% |  |  |
| 139 | 1.6.7.3 | **First Iteration Coding** | 10d | 2003-06-20 A | 2003-07-03 |  | 30% | 27d |  |
| 140 | 1.6.7.3.1 | **Server** | 10d | 2003-06-20 A | 2003-07-03 |  | 30% | 27d |  |
| 141 |  | Sell Short Strategy/Factory | 3d | 2003-06-20 A | 2003-06-24 A | 134 | 100% |  |  |
| 142 |  | Order Book helper methods | 2d | 2003-06-25 | 2003-06-26 | 141 |  | 27d |  |
| 143 |  | Order Helper Methods | 3d | 2003-06-27 | 2003-07-01 | 142 |  | 27d |  |
| 144 |  | Sell Short Holder | 2d | 2003-07-02 | 2003-07-03 | 143 |  | 27d |  |
| 145 |  | Detail Design | 2d | 2003-07-04 | 2003-07-07 | 140 |  | 27d |  |

| ID | WBS | Task | Duration | Start | Finish | Predecessors | Complete | Total float | Constraint |
| --- | --- | --- | --- | --- | --- | --- | --- | --- | --- |
| 146 | 1.6.7.5 | **2nd Iteration Coding** | 3d | 2003-07-08 | 2003-07-10 |  |  | 27d |  |
| 147 |  | Server | 3d | 2003-07-08 | 2003-07-10 | 145 |  | 27d |  |
| 148 |  | Test Plan | 2d | 2003-07-11 | 2003-07-14 | 147 |  | 30d |  |
| 149 |  | Code Walkthrough | 0d | 2003-07-14 | 2003-07-14 | 148 |  | 30d |  |
| 150 |  | Testing | 5d | 2003-07-11 | 2003-07-17 | 146 |  | 27d |  |
| 151 | 1.6.8 | **Stop/Stop Limit** | 17d | 2003-07-18 | 2003-08-11 |  |  | 27d |  |
| 152 |  | Detail Design | 5d | 2003-07-18 | 2003-07-24 | 133 |  | 27d |  |
| 153 |  | Design Walkthrough | 0d | 2003-07-24 | 2003-07-24 | 152 |  | 39d |  |
| 154 | 1.6.8.3 | **First Iteration Coding** | 5d | 2003-07-25 | 2003-07-31 |  |  | 27d |  |
| 155 |  | Server | 5d | 2003-07-25 | 2003-07-31 | 152 |  | 27d |  |
| 156 |  | Test Plan | 2d | 2003-08-01 | 2003-08-04 | 155 |  | 27d |  |
| 157 |  | Code Walkthough | 0d | 2003-08-04 | 2003-08-04 | 156 |  | 27d |  |
| 158 |  | Integration Testesting | 5d | 2003-08-05 | 2003-08-11 | 157 |  | 27d |  |
| 159 | 1.6.9 | **Done Order Entry** | 63d | 2003-04-28 A | 2003-07-23 |  | 17% | 45d |  |
| 160 | 1.6.9.1 | **Detail Design** | 40d | 2003-04-28 A | 2003-06-20 |  | 31% | 68d |  |
| 161 |  | Sale Condition | 0.5d | 2003-04-28 A | 2003-04-28 A |  | 100% |  | start no earlier than 2003-04-28 |
| 162 |  | Detail Design for SBT Re-factoring | 3d | 2003-04-28 A | 2003-05-01 A | 161 | 100% |  |  |
| 163 |  | Clearing Code Analaysis | 2d | 2003-05-01 A | 2003-05-05 A | 162 | 100% |  |  |
| 164 |  | Configuration Delay | 12d | 2003-05-05 | 2003-05-21 | 163 |  | 90.5d |  |
| 165 |  | Dependent on Trade idl from Trade Bust | 0d | 2003-05-21 | 2003-05-21 | 110 |  | 88d |  |
| 166 |  | Modification at later time | 2d | 2003-05-22 | 2003-05-23 | 165 |  | 88d |  |
| 167 | 1.6.9.1.7 | **Coding** | 33.5d | 2003-05-06 A | 2003-06-20 |  | 38% | 45d |  |
| 168 |  | Re-Factor of SBT Code to allow for stock in same session | 3d | 2003-05-06 A | 2003-05-27 A | 166 | 100% |  |  |
| 169 |  | Clearing code specifics | 3d | 2003-06-16 | 2003-06-18 | 168 |  | 45d | start no earlier than 2003-06-16 |
| 170 |  | GUI | 2d | 2003-06-19 | 2003-06-20 | 169 |  | 45d |  |
| 171 |  | Design Walkthrough | 0d | 2003-06-20 | 2003-06-20 | 170 |  | 68d |  |
| 172 |  | Detail Design | 1d | 2003-06-23 | 2003-06-23 | 167 |  | 45d |  |
| 173 | 1.6.9.3 | **2nd Iteration Coding** | 16d | 2003-06-24 | 2003-07-15 |  |  | 45d |  |
| 174 | 1.6.9.3.1 | **GUI** | 6d | 2003-06-24 | 2003-07-01 | 172 |  | 45d |  |
| 175 |  | Enter the Trade | 2d | 2003-06-24 | 2003-06-25 |  |  | 45d |  |
| 176 |  | Recall the trade for later updates | 4d | 2003-06-26 | 2003-07-01 | 175 |  | 45d |  |
| 177 | 1.6.9.3.2 | **Server** | 10d | 2003-07-02 | 2003-07-15 | 176 |  | 45d |  |
| 178 |  | Enter the trade. | 2d | 2003-07-02 | 2003-07-03 | 174 |  | 45d |  |
| 179 |  | Send to CFN | 3d | 2003-07-04 | 2003-07-08 | 178 |  | 45d |  |
| 180 |  | Recall and Update the trade at a later time | 5d | 2003-07-09 | 2003-07-15 | 179 |  | 45d |  |
| 181 |  | Test Plan | 1d | 2003-07-16 | 2003-07-16 | 177 |  | 45d |  |
| 182 |  | Testing | 5d | 2003-07-17 | 2003-07-23 | 181 |  | 45d |  |
| 183 |  | Codewalkthrough | 0d | 2003-07-23 | 2003-07-23 | 182 |  | 45d |  |
| 184 | 1.6.10 | **Dividend and Corportate Action** | 5d | 2003-08-12 | 2003-08-18 |  |  | 27d |  |
| 185 |  | Detailed Testing | 5d | 2003-08-12 | 2003-08-18 | 151 |  | 27d |  |
| 186 |  | Use Case | 0d | 2003-08-18 | 2003-08-18 | 185 |  | 27d |  |
| 187 |  | Design | 0d | 2003-08-18 | 2003-08-18 | 186 |  | 27d |  |
| 188 |  | Deisgn walktrhough | 0d | 2003-08-18 | 2003-08-18 | 187 |  | 27d |  |
| 189 | 1.6.10.5 | **1st Iteration Coding** | 0d | 2003-08-18 | 2003-08-18 |  |  | 27d |  |
| 190 |  | Server | 0d | 2003-08-18 | 2003-08-18 | 187 |  | 27d |  |
| 191 |  | GUI | 0d | 2003-08-18 | 2003-08-18 | 190 |  | 27d |  |
| 192 |  | Test Plan | 0d | 2003-08-18 | 2003-08-18 | 191 |  | 27d |  |
| 193 |  | Code Walkthrough | 0d | 2003-08-18 | 2003-08-18 | 192 |  | 27d |  |
| 194 |  | Inbound SIAC Data - Task has been scratched. | 111.1d | 2002-12-19 A | 2003-05-23 A |  | 100% |  |  |
| 195 | 1.6.12 | **Manual Handling( NBBO Agent )** | 3d | 2003-05-16 A | 2003-05-21 A |  | 100% |  |  |
| 196 | 1.6.12.1 | **Detail Design** | 3d | 2003-05-16 A | 2003-05-21 A |  | 100% |  |  |
| 197 |  | Client | 2d | 2003-05-16 A | 2003-05-20 A | 194 | 100% |  |  |
| 198 |  | Server | 1d | 2003-05-20 A | 2003-05-21 A | 197 | 100% |  |  |
| 199 |  | Design Walkthrough | 0d | 2003-05-21 A | 2003-05-21 A | 198 | 100% |  |  |
| 200 | 1.6.13 | **Book Depth** | 16d | 2003-06-13 | 2003-07-04 |  |  | 6d |  |
| 201 |  | Detail Design | 7d | 2003-06-13 | 2003-06-23 | 195 |  | 6d | start no earlier than 2003-06-13 |
| 202 |  | Delay for TIPS Meetings | 3d | 2003-06-24 | 2003-06-26 | 201 |  | 12d |  |
| 203 | 1.6.13.3 | **1st Iteration Coding** | 4d | 2003-06-24 | 2003-06-27 |  |  | 6d |  |
| 204 |  | Server | 3d | 2003-06-24 | 2003-06-26 | 201 |  | 6d |  |
| 205 |  | IDL | 1d | 2003-06-27 | 2003-06-27 | 204 |  | 6d |  |
| 206 | 1.6.13.4 | **2nd Iteration Coding** | 4d | 2003-06-30 | 2003-07-03 |  |  | 6d |  |
| 207 |  | Server | 3d | 2003-06-30 | 2003-07-02 | 203 |  | 6d |  |
| 208 |  | IDL | 1d | 2003-07-03 | 2003-07-03 | 207 |  | 6d |  |
| 209 |  | Test Plan | 1d | 2003-07-04 | 2003-07-04 | 208 |  | 6d |  |
| 210 |  | Code Walkthrough | 0d | 2003-07-04 | 2003-07-04 | 209 |  | 6d |  |
| 211 | 1.6.14 | **Market Open Rotation** | 42d | 2003-07-07 | 2003-09-02 |  |  | 6d |  |
| 212 | 1.6.14.1 | **Detail Design** | 13d | 2003-07-07 | 2003-07-23 |  |  | 6d |  |
| 213 |  | Use Case | 4d | 2003-07-07 | 2003-07-10 | 195, 200 |  | 6d |  |
| 214 |  | Trade Engine Design | 9d | 2003-07-11 | 2003-07-23 | 213 |  | 6d |  |
| 215 |  | Design Walkthrough | 0d | 2003-07-23 | 2003-07-23 | 214 |  | 6d |  |

| ID | WBS | Task | Duration | Start | Finish | Predecessors | Complete | Total float |
| --- | --- | --- | --- | --- | --- | --- | --- | --- |
| 216 | 1.6.14.2 | **1st Iteration Coding** | 10d | 2003-07-24 | 2003-08-06 |  |  | 6d |
| 217 |  | Server | 10d | 2003-07-24 | 2003-08-06 | 212 |  | 6d |
| 218 |  | Detail Design | 3d | 2003-08-07 | 2003-08-11 | 216 |  | 6d |
| 219 | 1.6.14.4 | **2nd Iteration Coding** | 6d | 2003-08-12 | 2003-08-19 |  |  | 6d |
| 220 |  | Server | 6d | 2003-08-12 | 2003-08-19 | 218 |  | 6d |
| 221 |  | Test Plan | 1d | 2003-08-20 | 2003-08-20 | 220 |  | 15d |
| 222 |  | Code Walkthrough | 0d | 2003-08-19 | 2003-08-19 | 220 |  | 16d |
| 223 |  | Testing | 10d | 2003-08-20 | 2003-09-02 | 219 |  | 6d |
| 224 | 1.6.15 | **At the Open Contingency** | 10d | 2003-09-03 | 2003-09-16 |  |  | 6d |
| 225 |  | Detail Design | 2d | 2003-09-03 | 2003-09-04 | 211 |  | 6d |
| 226 |  | Use Case | 1d | 2003-09-05 | 2003-09-05 | 225 |  | 6d |
| 227 | 1.6.15.3 | **Iteration 1** | 5d | 2003-09-08 | 2003-09-12 |  |  | 6d |
| 228 |  | Coding | 5d | 2003-09-08 | 2003-09-12 | 226 |  | 6d |
| 229 |  | Testing | 2d | 2003-09-15 | 2003-09-16 | 227 |  | 6d |
| 230 | 1.6.16 | **Member Participant Quoting** | 0d | 2003-06-27 | 2003-06-27 |  |  | 63d |
| 231 |  | Detail Design | 0d | 2003-06-27 | 2003-06-27 | 89 |  | 63d |
| 232 |  | Design Walkthrough | 0d | 2003-06-27 | 2003-06-27 | 231 |  | 63d |
| 233 | 1.6.16.3 | **1st Iteration Coding** | 0d | 2003-06-27 | 2003-06-27 |  |  | 63d |
| 234 |  | Server | 0d | 2003-06-27 | 2003-06-27 | 232 |  | 63d |
| 235 |  | Test Plan | 0d | 2003-06-27 | 2003-06-27 | 234 |  | 63d |
| 236 |  | Code Walkthrough | 0d | 2003-06-27 | 2003-06-27 | 235 |  | 63d |
| 237 | 1.6.17 | **Order Cancel/Cancel Replace** | 6d | 2003-09-03 | 2003-09-10 |  |  | 10d |
| 238 |  | Design | 3d | 2003-09-03 | 2003-09-05 | 92, 211, 250, 257 |  | 10d |
| 239 |  | Design Walktrhough | 0d | 2003-09-05 | 2003-09-05 | 238 |  | 13d |
| 240 | 1.6.17.3 | **1st Iteration Coding** | 2d | 2003-09-08 | 2003-09-09 |  |  | 10d |
| 241 |  | Server | 2d | 2003-09-08 | 2003-09-09 | 238 |  | 10d |
| 242 |  | Test Plan | 1d | 2003-09-10 | 2003-09-10 | 240 |  | 10d |
| 243 |  | Code Walkthrough | 0d | 2003-09-10 | 2003-09-10 | 242 |  | 10d |
| 244 | 1.6.18 | **Order Book Priority** | 0d | 2003-06-25 A | 2003-06-25 A |  | 100% |  |
| 245 |  | Design | 0d | 2003-06-25 A | 2003-06-25 A | 89 | 100% |  |
| 246 |  | Design Walkthrough | 0d | 2003-06-25 A | 2003-06-25 A | 245 | 100% |  |
| 247 | 1.6.19 | **Market Display** | 0d | 2003-06-27 | 2003-06-27 |  |  | 63d |
| 248 |  | Design | 0d | 2003-06-27 | 2003-06-27 | 230 |  | 63d |
| 249 |  | Design Walkthrough | 0d | 2003-06-27 | 2003-06-27 | 248 |  | 63d |
| 250 | 1.6.20 | **Trade History Changes** | 5d | 2003-07-09 | 2003-07-15 |  |  | 32d |
| 251 |  | Detail Design | 2d | 2003-07-09 | 2003-07-10 | 244, 92 |  | 32d |
| 252 |  | Design Walkthrough | 0d | 2003-07-10 | 2003-07-10 | 251 |  | 35d |
| 253 | 1.6.20.3 | **1st Iteration Coding** | 2d | 2003-07-11 | 2003-07-14 |  |  | 32d |
| 254 |  | Server | 2d | 2003-07-11 | 2003-07-14 | 251 |  | 32d |
| 255 |  | Test Plan | 1d | 2003-07-15 | 2003-07-15 | 253 |  | 32d |
| 256 |  | Code Walkthrough | 0d | 2003-07-14 | 2003-07-14 | 254 |  | 33d |
| 257 | 1.6.21 | **Trade Through Monitoring Service** | 13d | 2003-07-16 | 2003-08-01 |  |  | 32d |
| 258 | 1.6.21.1 | **Detail Design** | 2d | 2003-07-16 | 2003-07-17 |  |  | 32d |
| 259 |  | Server | 2d | 2003-07-16 | 2003-07-17 | 250 |  | 32d |
| 260 |  | Design Walkthrough | 0d | 2003-07-17 | 2003-07-17 | 259 |  | 32d |
| 261 | 1.6.21.2 | **1st Iteration Coding** | 4d | 2003-07-18 | 2003-07-23 |  |  | 32d |
| 262 |  | Server | 4d | 2003-07-18 | 2003-07-23 | 260 |  | 32d |
| 263 |  | Detail Design | 2d | 2003-07-24 | 2003-07-25 | 262 |  | 32d |
| 264 | 1.6.21.4 | **2nd Iteration Coding** | 4d | 2003-07-28 | 2003-07-31 |  |  | 32d |
| 265 |  | Server | 4d | 2003-07-28 | 2003-07-31 | 263 |  | 32d |
| 266 |  | Test Plan | 1d | 2003-08-01 | 2003-08-01 | 264 |  | 32d |
| 267 |  | Code Walkthrough | 0d | 2003-08-01 | 2003-08-01 | 266 |  | 32d |
| 269 | 1.7 | **Supporting Services** | 72d | 2003-07-01 | 2003-10-08 |  |  | 20d |
| 270 | 1.7.1 | **Equity Maintanance - CUSIP** | 7d | 2003-07-24 | 2003-08-01 |  |  | 68d |
| 271 |  | Use Case Changes | 2d | 2003-07-24 | 2003-07-25 | 159 |  | 68d |
| 272 |  | Design | 1d | 2003-07-28 | 2003-07-28 | 271 |  | 68d |
| 273 |  | Design Walkthrough | 0d | 2003-07-28 | 2003-07-28 | 272 |  | 68d |
| 274 | 1.7.1.4 | **Iteration 1** | 4d | 2003-07-29 | 2003-08-01 |  |  | 68d |
| 275 |  | Client | 1d | 2003-07-29 | 2003-07-29 | 273 |  | 68d |
| 276 |  | IDL Change | 2d | 2003-07-30 | 2003-07-31 | 275 |  | 68d |
| 277 |  | Server | 1d | 2003-08-01 | 2003-08-01 | 276 |  | 68d |
| 278 | 1.7.2 | **Settlement Changes** | 13d | 2003-09-11 | 2003-09-29 |  |  | 20d |
| 279 |  | Detailed Design | 5d | 2003-09-11 | 2003-09-17 | 237 |  | 20d |
| 280 |  | Database Analysis | 3d | 2003-09-18 | 2003-09-22 | 279 |  | 20d |
| 281 |  | Report Coding | 5d | 2003-09-23 | 2003-09-29 | 280 |  | 20d |
| 282 |  | Code Walkthrough | 0d | 2003-09-29 | 2003-09-29 | 281 |  | 20d |
| 283 | 1.7.3 | **NSCC Clearing File Creation** | 7d | 2003-09-30 | 2003-10-08 |  |  | 20d |
| 284 |  | File creation | 3d | 2003-09-30 | 2003-10-02 | 278 |  | 20d |
| 285 |  | FTP Process | 2d | 2003-10-03 | 2003-10-06 | 284 |  | 20d |
| 286 |  | Intranet Development | 1d | 2003-10-07 | 2003-10-07 | 285 |  | 21d |

| ID | WBS | Task | Duration | Start | Finish | Predecessors | Complete | Total float | Constraint |
| --- | --- | --- | --- | --- | --- | --- | --- | --- | --- |
| 287 |  | Viewable report | 2d | 2003-10-07 | 2003-10-08 | 285 |  | 20d |  |
| 288 | 1.7.4 | **ISG End of Day File** | 2d | 2003-07-01 | 2003-07-02 |  |  | 90d |  |
| 289 |  | File creation | 1d | 2003-07-01 | 2003-07-01 |  |  | 90d | start no earlier than 2003-07-01 |
| 290 |  | FTP Process | 1d | 2003-07-02 | 2003-07-02 | 289 |  | 90d |  |
| 292 | 1.8 | **Linkage Service** | 23d | 2002-11-25 | 2002-12-26 |  |  | 223d |  |
| 293 |  | Design/Review of Linkage Service | 5d | 2002-11-25 | 2002-11-29 |  |  | 223d |  |
| 294 | 1.8.2 | **CMI Changes for ITS** | 4d | 2002-12-02 | 2002-12-05 |  |  | 223d |  |
| 295 |  | Outbound PoI | 2d | 2002-12-02 | 2002-12-03 | 293 |  | 223d |  |
| 296 |  | Outbound PoR | 2d | 2002-12-04 | 2002-12-05 | 295 |  | 223d |  |
| 297 |  | Design Walktrhough | 0d | 2002-12-05 | 2002-12-05 | 294 |  | 223d |  |
| 298 | 1.8.4 | **Inbound Committement Processing** | 7d | 2002-12-06 | 2002-12-16 |  |  | 223d |  |
| 299 |  | Design | 2d | 2002-12-06 | 2002-12-09 | 297 |  | 223d |  |
| 300 |  | Coding | 5d | 2002-12-10 | 2002-12-16 | 299 |  | 223d |  |
| 301 | 1.8.5 | **Outbound ITS Commitment** | 7d | 2002-12-17 | 2002-12-26 |  |  | 223d |  |
| 302 |  | CMI Message Coding | 2d | 2002-12-17 | 2002-12-18 | 298 |  | 223d |  |
| 303 |  | Integration to ITS Adapter | 5d | 2002-12-19 | 2002-12-26 | 302 |  | 223d |  |
| 304 | 1.8.6 | **Inbound ITS Fill Report** | 3d | 2002-11-25 | 2002-11-27 |  |  | 243d |  |
| 305 |  | ITS Integration | 2d | 2002-11-25 | 2002-11-26 |  |  | 244d |  |
| 306 |  | Trade Server Integration | 3d | 2002-11-25 | 2002-11-27 |  |  | 243d |  |
| 307 | 1.8.7 | **Outbound POI Message** | 3d | 2002-11-25 | 2002-11-27 |  |  | 243d |  |
| 308 |  | CMI Testing | 2d | 2002-11-25 | 2002-11-26 |  |  | 244d |  |
| 309 |  | Integration to ITS Adapater | 3d | 2002-11-25 | 2002-11-27 |  |  | 243d |  |
| 310 | 1.8.8 | **Outbound POR Message** | 2d | 2002-11-25 | 2002-11-26 |  |  | 244d |  |
| 311 |  | CMI Testing | 2d | 2002-11-25 | 2002-11-26 |  |  | 244d |  |
| 312 |  | Integration to ITS Adapter | 2d | 2002-11-25 | 2002-11-26 |  |  | 244d |  |
| 313 | 1.8.9 | **Outbound Complaint Message** | 2d | 2002-11-25 | 2002-11-26 |  |  | 244d |  |
| 314 |  | CMI Testing | 2d | 2002-11-25 | 2002-11-26 |  |  | 244d |  |
| 315 |  | Integration to ITS Adapter | 2d | 2002-11-25 | 2002-11-26 |  |  | 244d |  |
| 316 | 1.8.10 | **Inbound ITS Complaint** | 2d | 2002-11-25 | 2002-11-26 |  |  | 244d |  |
| 317 |  | CMI Testing | 2d | 2002-11-25 | 2002-11-26 |  |  | 244d |  |
| 318 |  | Integration to ITS Adapter | 2d | 2002-11-25 | 2002-11-26 |  |  | 244d |  |
| 319 | 1.8.11 | **Inbound POI Message** | 2d | 2002-11-25 | 2002-11-26 |  |  | 244d |  |
| 320 |  | CMI Testing | 2d | 2002-11-25 | 2002-11-26 |  |  | 244d |  |
| 321 |  | Integration to ITS Adapater | 2d | 2002-11-25 | 2002-11-26 |  |  | 244d |  |
| 322 | 1.8.12 | **Inbound POR Message** | 2d | 2002-11-25 | 2002-11-26 |  |  | 244d |  |
| 323 |  | CMI Testing | 2d | 2002-11-25 | 2002-11-26 |  |  | 244d |  |
| 324 |  | Integration to ITS Adapter | 2d | 2002-11-25 | 2002-11-26 |  |  | 244d |  |
| 325 | 1.8.13 | **Creation of New Order in book** | 4d | 2002-11-25 | 2002-11-28 |  |  | 242d |  |
| 326 |  | CMI Changes | 3d | 2002-11-25 | 2002-11-27 |  |  | 243d |  |
| 327 |  | GUI Changes | 2d | 2002-11-25 | 2002-11-26 |  |  | 244d |  |
| 328 |  | Execution Report back to requester | 4d | 2002-11-25 | 2002-11-28 |  |  | 242d |  |
| 330 | 1.9 | **Trading Operation Support** | 10d | 2003-05-26 | 2003-06-06 |  |  | 108d |  |
| 331 |  | Readable HTML Format of NSCC File | 10d | 2003-05-26 | 2003-06-06 |  |  | 108d | start no earlier than 2003-05-26 |
| 332 | 1.10 | **Workstation/Testing GUI** | 216d | 2002-11-25 A | 2003-09-24 |  | 58% | 0d |  |
| 333 |  | Review of SBT GUI and Architecture | 10d | 2003-03-03 | 2003-03-14 |  |  | 138d | start no earlier than 2003-03-03 |
| 334 | 1.10.2 | **Screen Design and Layouts** | 19d | 2003-03-17 A | 2003-04-10 A |  | 100% |  |  |
| 335 |  | Login | 1d | 2003-03-17 A | 2003-03-17 A | 333 | 100% |  |  |
| 336 |  | Logout | 1d | 2003-03-18 A | 2003-03-18 A | 335 | 100% |  |  |
| 337 |  | Main Market Data Screen | 1d | 2003-03-19 A | 2003-03-19 A | 336 | 100% |  |  |
| 338 |  | Update/Send Quote | 1d | 2003-03-20 A | 2003-03-20 A | 337 | 100% |  |  |
| 339 |  | Cancel Quote | 1d | 2003-03-21 A | 2003-03-21 A | 338 | 100% |  |  |
| 340 |  | Send Text Message | 1d | 2003-03-24 A | 2003-03-24 A | 339 | 100% |  |  |
| 341 |  | Respond to RFQ | 1d | 2003-03-25 A | 2003-03-25 A | 340 | 100% |  |  |
| 342 |  | Enter a new order | 1d | 2003-03-26 A | 2003-03-26 A | 341 | 100% |  |  |
| 343 |  | ITS Takeout | 1d | 2003-03-27 A | 2003-03-27 A | 342 | 100% |  |  |
| 344 |  | Hit the bid/Take the Offer | 1d | 2003-03-28 A | 2003-03-28 A | 343 | 100% |  |  |
| 345 |  | Cancel/Replace Order | 1d | 2003-03-31 A | 2003-03-31 A | 344 | 100% |  |  |
| 346 |  | Cancel Order | 1d | 2003-04-01 A | 2003-04-01 A | 345 | 100% |  |  |
| 347 |  | See Order History | 1d | 2003-04-02 A | 2003-04-02 A | 346 | 100% |  |  |
| 348 |  | Edit Trading Preferences | 1d | 2003-04-03 A | 2003-04-03 A | 347 | 100% |  |  |
| 349 |  | See Trade History | 1d | 2003-04-04 A | 2003-04-04 A | 348 | 100% |  |  |
| 350 |  | Edit User Prefernces | 1d | 2003-04-07 A | 2003-04-07 A | 349 | 100% |  |  |
| 351 |  | View Order Book | 1d | 2003-04-08 A | 2003-04-08 A | 350 | 100% |  |  |
| 352 |  | Pre-Opening Screen | 1d | 2003-04-09 A | 2003-04-09 A | 351 | 100% |  |  |
| 353 |  | Manual Handling Screen | 1d | 2003-04-10 A | 2003-04-10 A | 352 | 100% |  |  |
| 354 |  | Screen Review | 1d | 2003-04-11 A | 2003-04-11 A | 334 | 100% |  |  |
| 355 | 1.10.4 | **Screen Construction** | 216d | 2002-11-25 A | 2003-09-24 |  | 56% | 0d |  |
| 356 | 1.10.4.1 | **Login/Logout Screen** | 3d | 2003-04-14 A | 2003-04-16 A |  | 100% |  |  |
| 357 |  | Design | 1d | 2003-04-14 A | 2003-04-14 A | 354 | 100% |  |  |
| 358 |  | Coding | 2d | 2003-04-15 A | 2003-04-16 A | 357 | 100% |  |  |

| ID | WBS | Task | Duration | Start | Finish | Predecessors | Complete | Total float | Constraint |
| --- | --- | --- | --- | --- | --- | --- | --- | --- | --- |
| 359 | 1.10.4.2 | **Main Market Data Screen** | 52d | 2003-04-17 A | 2003-06-27 |  | 83% | 0d |  |
| 360 |  | Design | 5d | 2003-04-17 A | 2003-04-23 A | 356 | 100% |  |  |
| 361 |  | Walkthrough | 0d | 2003-04-23 A | 2003-04-23 A | 360 | 100% |  |  |
| 362 | 1.10.4.2.3 | **Iteration 1** | 4d | 2003-04-24 A | 2003-04-29 A |  | 100% |  |  |
| 363 |  | Coding | 4d | 2003-04-24 A | 2003-04-29 A | 361 | 100% |  |  |
| 364 |  | Design | 2d | 2003-04-30 A | 2003-05-01 A | 363 | 100% |  |  |
| 365 | 1.10.4.2.5 | **Iteration 2** | 5d | 2003-04-30 A | 2003-05-06 A |  | 100% |  |  |
| 366 |  | Coding | 5d | 2003-04-30 A | 2003-05-06 A | 362 | 100% |  |  |
| 367 |  | Code Walkthrough | 0d | 2003-05-06 A | 2003-05-06 A | 365 | 100% |  |  |
| 368 | 1.10.4.2.7 | **Iteration 3** | 5d | 2003-06-19 A | 2003-06-25 |  | 80% | 2d |  |
| 369 |  | Market Data Info Panel | 4d | 2003-06-19 A | 2003-06-24 A | 365 | 100% |  | start no earlier than 2003-06-19 |
| 370 |  | Market Data Model | 1d | 2003-06-25 | 2003-06-25 | 369 |  | 2d |  |
| 371 |  | Testing | 3d | 2003-06-25 | 2003-06-27 | 369 |  | 0d |  |
| 372 | 1.10.4.3 | **Update/Send Quote** | 5d | 2003-05-07 A | 2003-05-13 A |  | 100% |  |  |
| 373 |  | Design | 2d | 2003-05-07 A | 2003-05-08 A | 359 | 100% |  |  |
| 374 |  | Walkthough | 0d | 2003-05-08 A | 2003-05-08 A | 373 | 100% |  |  |
| 375 |  | Coding | 3d | 2003-05-09 A | 2003-05-13 A | 374 | 100% |  |  |
| 376 | 1.10.4.4 | **Cancel Quote** | 4d | 2003-05-14 A | 2003-05-19 A |  | 100% |  |  |
| 377 |  | Design | 1d | 2003-05-14 A | 2003-05-14 A | 372 | 100% |  |  |
| 378 |  | Coding | 3d | 2003-05-15 A | 2003-05-19 A | 377 | 100% |  |  |
| 379 | 1.10.4.5 | **Respond to RFQ** | 7d | 2002-11-25 A | 2002-12-03 A |  | 100% |  |  |
| 380 |  | Design | 2d | 2002-11-25 A | 2002-11-26 A |  | 100% |  |  |
| 381 |  | Coding | 5d | 2002-11-27 A | 2002-12-03 A | 380 | 100% |  |  |
| 382 | 1.10.4.6 | **Enter a new Order** | 23d | 2003-06-05 A | 2003-07-07 |  | 54% | 0d |  |
| 383 |  | Deisgn | 2d | 2003-06-05 A | 2003-06-06 A | 372 | 100% |  |  |
| 384 | 1.10.4.6.2 | **Iteration 1** | 5d | 2003-06-09 A | 2003-06-13 A | 383 | 100% |  |  |
| 385 |  | Coding | 5d | 2003-06-09 A | 2003-06-13 A |  | 100% |  |  |
| 386 | 1.10.4.6.3 | **Iteration 2** | 3d | 2003-06-30 | 2003-07-02 |  |  | 0d |  |
| 387 |  | Sell Short | 3d | 2003-06-30 | 2003-07-02 | 359 |  | 0d |  |
| 388 |  | Testing | 3d | 2003-07-03 | 2003-07-07 | 387 |  | 0d |  |
| 390 | 1.10.4.7 | **Montage Screen** | 23d | 2003-06-16 A | 2003-07-16 |  | 36% | 0d |  |
| 391 |  | Design | 4d | 2003-06-16 A | 2003-06-19 A | 382 | 100% |  |  |
| 392 | 1.10.4.7.2 | **Iteration 1** | 4d | 2003-07-08 | 2003-07-11 |  |  | 0d |  |
| 393 |  | Market Data Model | 3d | 2003-07-08 | 2003-07-10 | 382 |  | 0d |  |
| 394 |  | Screen Updates | 1d | 2003-07-11 | 2003-07-11 | 393 |  | 0d |  |
| 395 |  | Testing | 3d | 2003-07-14 | 2003-07-16 | 392 |  | 0d |  |
| 397 | 1.10.4.8 | **Hit the bid/Take the Offer** | 3d | 2003-06-09 A | 2003-06-11 A |  | 100% |  |  |
| 398 |  | Design | 1d | 2003-06-09 A | 2003-06-09 A | 390 | 100% |  |  |
| 399 |  | Coding | 2d | 2003-06-10 A | 2003-06-11 A | 398 | 100% |  |  |
| 400 | 1.10.4.9 | **Refactoring and combination with SBT Code** | 6d | 2003-06-12 A | 2003-06-19 A |  | 100% |  |  |
| 401 |  | Design | 2d | 2003-06-12 A | 2003-06-13 A | 397 | 100% |  |  |
| 402 |  | Coding | 4d | 2003-06-16 A | 2003-06-19 A | 401 | 100% |  |  |
| 403 | 1.10.4.10 | **Cancel/Replace Order** | 3d | 2003-06-20 A | 2003-06-24 A |  | 100% |  |  |
| 404 |  | Design | 1d | 2003-06-20 A | 2003-06-20 A | 400 | 100% |  |  |
| 405 |  | Coding | 2d | 2003-06-23 A | 2003-06-24 A | 404 | 100% |  |  |
| 406 | 1.10.4.11 | **Cancel Order** | 3d | 2003-06-25 A | 2003-06-27 A |  | 100% |  |  |
| 407 |  | Design | 1d | 2003-06-25 A | 2003-06-25 A | 403 | 100% |  |  |
| 408 |  | Coding | 2d | 2003-06-26 A | 2003-06-27 A | 407 | 100% |  |  |
| 409 | 1.10.4.12 | **See Order History** | 4d | 2003-07-07 A | 2003-07-10 A |  | 100% |  |  |
| 410 |  | Design | 2d | 2003-07-07 A | 2003-07-08 A | 406 | 100% |  |  |
| 411 |  | Coding | 2d | 2003-07-09 A | 2003-07-10 A | 410 | 100% |  |  |
| 412 | 1.10.4.13 | **Edit Trading Preferences** | 4d | 2003-07-17 | 2003-07-22 |  |  | 0d |  |
| 413 |  | Design | 1d | 2003-07-17 | 2003-07-17 | 390 |  | 0d |  |
| 414 |  | Coding | 3d | 2003-07-18 | 2003-07-22 | 413 |  | 0d |  |
| 415 | 1.10.4.14 | **See Trade History** | 3d | 2003-07-17 A | 2003-07-21 A |  | 100% |  |  |
| 416 |  | Design | 1d | 2003-07-17 A | 2003-07-17 A | 412 | 100% |  |  |
| 417 |  | Coding | 2d | 2003-07-18 A | 2003-07-21 A | 416 | 100% |  |  |
| 418 | 1.10.4.15 | **Edit User Prefernces** | 4d | 2003-07-23 | 2003-07-28 |  |  | 0d |  |
| 419 |  | Design | 1d | 2003-07-23 | 2003-07-23 | 412 |  | 0d |  |
| 420 |  | Coding | 3d | 2003-07-24 | 2003-07-28 | 419 |  | 0d |  |
| 421 | 1.10.4.16 | **Normal Book Depth** | 13d | 2003-07-02 A | 2003-07-18 A |  | 100% |  |  |
| 422 |  | Design | 3d | 2003-07-02 A | 2003-07-04 A | 418 | 100% |  |  |
| 423 |  | Coding | 10d | 2003-07-07 A | 2003-07-18 A | 422 | 100% |  |  |
| 424 | 1.10.4.17 | **Pre-Opening Screen** | 15d | 2003-07-29 | 2003-08-18 |  |  | 0d |  |
| 425 |  | Design | 5d | 2003-07-29 | 2003-08-04 | 418 |  | 0d |  |
| 426 |  | Coding | 10d | 2003-08-05 | 2003-08-18 | 425 |  | 0d |  |
| 427 | 1.10.4.18 | **Pre Open Manual Handling Screen** | 7d | 2003-08-19 | 2003-08-27 |  |  | 0d |  |
| 428 |  | Design | 2d | 2003-08-19 | 2003-08-20 | 424 |  | 0d |  |
| 429 |  | Coding | 5d | 2003-08-21 | 2003-08-27 | 428 |  | 0d |  |
| 430 | 1.10.4.19 | **Held Order Screeen** | 1d | 2002-11-25 A | 2002-11-25 A |  | 100% |  |  |

| ID | WBS | Task | Duration | Start | Finish | Predecessors | Complete | Total float | Constraint |
| --- | --- | --- | --- | --- | --- | --- | --- | --- | --- |
| 431 |  | Design | 1d | 2002-11-25 A | 2002-11-25 A |  | 100% |  |  |
| 432 |  | Coding | 1d | 2002-11-25 A | 2002-11-25 A |  | 100% |  |  |
| 433 | 1.10.4.20 | **Simulator Support for Screens** | 20d | 2003-08-28 | 2003-09-24 |  |  | 0d |  |
| 434 |  | Design | 3d | 2003-08-28 | 2003-09-01 | 427 |  | 0d |  |
| 435 |  | Coding | 17d | 2003-09-02 | 2003-09-24 | 434 |  | 0d |  |
| 437 | 1.11 | **External Team Depencies** | 119d | 2002-11-25 | 2003-05-12 |  |  | 127d |  |
| 438 | 1.11.1 | **Membership System** | 30d | 2003-04-01 | 2003-05-12 |  |  | 127d |  |
| 439 |  | Clearing Code | 15d | 2003-04-01 | 2003-04-21 |  |  | 127d | start no earlier than 2003-04-01 |
| 440 |  | SBT Feed | 15d | 2003-04-22 | 2003-05-12 | 439 |  | 127d |  |
| 441 | 1.11.2 | **Regulatory** | 1d | 2002-11-25 | 2002-11-25 |  |  | 245d |  |
| 442 |  | Reports | 1d | 2002-11-25 | 2002-11-25 |  |  | 245d |  |
| 443 |  | Order Disclosure | 1d | 2002-11-25 | 2002-11-25 |  |  | 245d |  |
| 445 |  | External Intefaces Project | 248d | 2002-10-08 | 2003-09-18 |  | 51% | 0d |  |
| 446 |  | Stock Team internal integration testing | 30d | 2003-09-25 | 2003-11-05 | 68, 332, 445 |  | 0d |  |

## Version 2 (saved 2003-09-22, file CBOE Stock System(Main).mpp)

Last finish 2003-11-05 → 2003-10-27 (-9d). Complete tasks 151 → 275.

Added:

| ID | Task | Duration | Start | Finish | Predecessors | Constraint | Resources |
| --- | --- | --- | --- | --- | --- | --- | --- |
| 118 | **Trade Bust and Trade Server Integration to Calendar Service** | 8d | 2003-09-03 A | 2003-09-12 A |  |  |  |
| 119 | Update code in trade bust to read Calendar date | 3d | 2003-09-03 A | 2003-09-05 A | 191 | start no earlier than 2003-08-22 | Crystal |
| 120 | GUI to read Calendar Service | 3d | 2003-09-08 A | 2003-09-10 A | 119 |  | Nyoman |
| 121 | Testing | 2d | 2003-09-11 A | 2003-09-12 A | 120 |  | Crystal; Nyoman |
| 148 | Recap consumer XML to receive recap in the short sale service. | 1d | 2003-07-21 A | 2003-07-21 A | 147 | start no earlier than 2003-07-21 | Crystal |
| 149 | Testing of sell short order entry | 2d | 2003-07-22 A | 2003-07-23 A | 148 |  | Crystal |
| 150 | Test sell short order is booked with derived price | 1d | 2003-07-24 A | 2003-07-24 A | 149 |  | Crystal |
| 151 | Test sell short rules not applied for ETF. | 1d | 2003-07-25 A | 2003-07-25 A | 150 |  | Crystal |
| 152 | Test 0 minus rule is in effect for principal type orders. | 2d | 2003-07-28 A | 2003-07-29 A | 151 |  | Crystal |
| 153 | Monitoring Service and Tick updates | 3d | 2003-07-30 A | 2003-08-01 A | 152 |  | Crystal |
| 154 | Test sell short for stop/stop limit | 1d | 2003-08-04 A | 2003-08-04 A | 153 |  | Crystal |
| 155 | Recovery of sell short on failover. | 4d | 2003-08-05 A | 2003-08-08 A | 154 |  | Crystal |
| 157 | Failover of Derived Order | 3d | 2003-08-11 A | 2003-08-13 A | 143 |  | Crystal |
| 158 | Trading Properties - ETF | 1d | 2003-07-15 A | 2003-07-15 A | 157 |  | Crystal |
| 159 | Handle market open assignment( using previous day close )] | 3d | 2003-08-14 A | 2003-08-18 A | 157 |  | Crystal |
| 160 | Monitor product state changes to determine sell short monitoring | 2d | 2003-08-19 A | 2003-08-20 A | 159 |  | Crystal |
| 163 | **Allocation Defects** | 3d | 2003-08-14 A | 2003-08-18 A |  |  |  |
| 164 | Sell short orders with remainder entering manual handling | 3d | 2003-08-14 A | 2003-08-18 A | 286 |  | Matt |
| 165 | **Monitor NBBO For Orders and Trades** | 6d | 2003-08-18 A | 2003-08-25 A |  |  |  |
| 166 | Implementation | 4d | 2003-08-18 A | 2003-08-21 A |  | start no earlier than 2003-08-18 | Matt |
| 167 | Environment setup | 1d | 2003-08-22 A | 2003-08-22 A | 166 |  | Matt |
| 168 | Testing | 1d | 2003-08-25 A | 2003-08-25 A | 167 |  | Matt |
| 169 | **Market Opening Trade Match( Non-Primary )** | 9d | 2003-08-26 A | 2003-09-05 A |  |  |  |
| 172 | Environment | 1d | 2003-09-03 A | 2003-09-03 A | 171 |  | Matt |
| 173 | Testing | 2d | 2003-09-04 A | 2003-09-05 A | 172 |  | Matt |
| 174 | **Merge Linkage and test environment** | 4d | 2003-09-19 | 2003-09-24 |  |  |  |
| 175 | Perform Merge | 2d | 2003-09-19 | 2003-09-22 |  | start no earlier than 2003-09-19 | Matt |
| 176 | Test environment | 2d | 2003-09-23 | 2003-09-24 | 175 |  | Matt |
| 177 | **Generate BOTR with NBBO information so we don't walk book** | 7d | 2003-09-25 | 2003-10-03 |  |  |  |
| 180 | Environment | 1d | 2003-10-02 | 2003-10-02 | 179 |  | Matt |
| 181 | Testing | 1d | 2003-10-03 | 2003-10-03 | 180 |  | Matt |
| 182 | **Sell Short Orders - Cancelling** | 5d | 2003-10-06 | 2003-10-10 |  |  |  |
| 185 | Trade Property - Rollout script | 2d | 2003-10-13 | 2003-10-14 | 182 |  | Matt |
| 186 | **Defect - Orders routed to manual with Trade History** | 1d | 2003-09-11 A | 2003-09-11 A |  |  |  |
| 187 | Testing | 1d | 2003-09-11 A | 2003-09-11 A | 177, 165 |  | Matt |
| 188 | **NBBO Crossed Market and NO NBBO - Manual Routing** | 5d | 2003-08-26 A | 2003-09-01 A |  |  |  |
| 190 | Coding | 3d | 2003-08-28 A | 2003-09-01 A | 189 |  | Matt |
| 196 | Triggering Logic Changes | 2d | 2003-08-28 A | 2003-08-29 A | 195 |  | Crystal |
| 200 | **DPM Quote for Opening - Change to Trading Property** | 2.5d | 2003-09-15 A | 2003-09-17 A |  |  |  |
| 202 | Coding | 1.5d | 2003-09-16 A | 2003-09-17 A | 201 |  | Crystal |
| 203 | Testing | 0.5d | 2003-09-17 A | 2003-09-17 A | 202 |  | Crystal |
| 205 | Mei Vacation | 0d | 2003-08-12 A | 2003-08-12 A |  | start no earlier than 2003-08-12 | Mei Wu [50%]; Crystal |
| 207 | Review Use Case and Requirement | 2d | 2003-08-12 A | 2003-08-13 A | 205 | start no earlier than 2003-07-21 | Mei Wu |
| 208 | Determine SCRUM tasks for completion | 1d | 2003-08-14 A | 2003-08-14 A | 207 |  | Mei Wu |
| 209 | **Modify Server code to accept entered trades for non block** | 11d | 2003-08-15 A | 2003-08-29 A |  |  |  |
| 210 | Enter settlement date correctly | 1d | 2003-08-15 A | 2003-08-15 A | 206 |  | Mei Wu [50%] |
| 211 | Add stock clearing codes to constants | 1d | 2003-08-18 A | 2003-08-18 A | 210 |  | Mei Wu [50%] |
| 212 | Send Message to CurrentMarket EC in a manner readable by CFN Adapter | 1d | 2003-08-22 A | 2003-08-22 A |  |  | Mei Wu [50%] |
| 213 | Unkown Tasks | 5d | 2003-08-25 A | 2003-08-29 A | 212 |  | Mei Wu [50%] |
| 214 | **GUI Changes** | 12d | 2003-08-19 A | 2003-09-03 A |  |  |  |
| 215 | Create new dropdown's | 3d | 2003-08-19 A | 2003-08-21 A | 211 |  | Nyoman |
| 216 | Access Calendar Service | 2d | 2003-09-01 A | 2003-09-02 A | 209 |  | Mei Wu [50%] |
| 217 | Edit Checks | 1d | 2003-09-03 A | 2003-09-03 A | 216 |  | Mei Wu [50%] |
| 220 | **Done Order Entry - Recall Trade** | 5d | 2003-09-29 | 2003-10-03 |  |  |  |
| 232 | Design Review | 0d | 2003-07-01 A | 2003-07-01 A | 231 |  | Sandip |
| 237 | Rebasing/Merging | 1d | 2003-07-14 A | 2003-07-14 A | 236 |  | Sandip |
| 238 | Testing | 5d | 2003-07-15 A | 2003-07-21 A | 237 |  | Sandip |
| 244 | Label and merge to SBT_DEV | 1d | 2003-07-28 A | 2003-07-28 A | 243 |  | Sandip |
| 245 | Minor changes to IDL and structs for Simulator | 2d | 2003-07-29 A | 2003-07-30 A | 244 |  | Sandip |
| 246 | **Market Open - CBOE-is-Not-Primary** | 45d | 2003-07-31 A | 2003-10-01 |  |  |  |
| 247 | **Detailed Design** | 11d | 2003-07-31 A | 2003-08-14 A |  |  |  |
| 248 | Existing Code Walk-through and creating Seq Diagram | 3d | 2003-07-31 A | 2003-08-04 A | 230 |  | Sandip |
| 249 | Changes for Equity Code & Seq Diagram | 2d | 2003-08-05 A | 2003-08-06 A | 248 |  | Sandp |
| 250 | Existing Tests walk-through [Code & Env] | 3d | 2003-08-07 A | 2003-08-11 A | 249 |  | Sandip |
| 251 | Creating new test-cases document | 1d | 2003-08-12 A | 2003-08-12 A | 250 |  | Sandip |
| 252 | Creating new test-case scripts | 2d | 2003-08-13 A | 2003-08-14 A | 251 |  | Sandip |
| 253 | Rebasing to new Stock Dev Updates | 1d | 2003-08-15 A | 2003-08-15 A | 252 |  | Sandip |
| 254 | Multiple implementations | 15d | 2003-08-18 A | 2003-09-05 A | 253 |  | Sandip |
| 255 | Lock/Unlock Order Book | 3d | 2003-09-08 A | 2003-09-10 A | 254 |  | Sandip |
| 256 | Order from DPM when booked is "locked" | 2d | 2003-09-11 A | 2003-09-12 A | 255 |  | Sandip |
| 257 | Reroute of non DPM orders to and from when book is "locked" | 2d | 2003-09-15 A | 2003-09-16 A | 256 |  | Sandip |
| 258 | Handle Market orders when order book is locked. | 1d | 2003-09-17 A | 2003-09-17 A | 257 |  | Sandip |
| 259 | Execute held orders when OB is unlocked | 1d | 2003-09-18 A | 2003-09-18 A | 258 |  | Sandip |
| 260 | Execute held order on open with open price | 1d | 2003-09-19 A | 2003-09-19 A | 259 |  | Sandip |
| 261 | Cancel Mkt Quotes | 1d | 2003-09-22 | 2003-09-22 | 260 |  | Sandip |
| 262 | Handle crosses when OB is locked ( reject ) | 1d | 2003-09-23 | 2003-09-23 | 261 |  | Sandip |
| 263 | Handle Stop/Stop Limit | 1d | 2003-09-24 | 2003-09-24 | 262 |  | Sandip |
| 264 | Handle Timed Orders( should be rejected ) | 1d | 2003-09-25 | 2003-09-25 | 263 |  | Sandip |
| 265 | Execute held orders when Product is opened. | 2d | 2003-09-26 | 2003-09-29 | 264 |  | Sandip |
| 266 | Test order matching. | 2d | 2003-09-30 | 2003-10-01 | 265 |  | Sandip |
| 267 | **Market Open - CBOE-is-Primary** | 8d | 2003-09-18 A | 2003-09-29 |  |  |  |
| 269 | Modify Trading Properties for DPM quote required to be configured by class | 3d | 2003-09-25 A | 2003-09-29 A | 268 |  | Crystal |
| 272 | IDL Changes and Server compatability changes | 5d | 2003-10-06 | 2003-10-10 | 271 |  | Mei Wu [50%] |
| 280 | Database cleanup design | 3d | 2003-07-15 A | 2003-07-17 A | 279 |  | Matt |
| 283 | Database Script changes | 5d | 2003-07-22 A | 2003-07-28 A | 281 |  | Matt |
| 286 | **IPP Modifications for ETF** | 9d | 2003-08-01 A | 2003-08-13 A |  |  |  |
| 287 | Detailed Design | 2d | 2003-08-01 A | 2003-08-04 A | 278 |  | Matt |
| 289 | Read ETF properties to determine if a configurable addition/substraction to NBBO Agent | 2d | 2003-08-05 A | 2003-08-06 A | 287 |  | Matt |
| 290 | Apply the modification to the IPP price protection | 1d | 2003-08-07 A | 2003-08-07 A | 289 |  | Matt |
| 291 | Perform Trade | 2d | 2003-08-08 A | 2003-08-11 A | 290 |  | Matt |
| 292 | Testing | 2d | 2003-08-12 A | 2003-08-13 A | 288 |  | Matt |
| 299 | Testing | 1d | 2003-09-17 | 2003-09-17 | 298 |  | Matt |
| 301 | **IPP/NBBO testing** | 5d | 2003-09-18 | 2003-09-24 |  |  |  |
| 302 | Environment setup | 3d | 2003-09-18 | 2003-09-22 |  | start no earlier than 2003-09-18 | Crystal |
| 303 | Testing | 2d | 2003-09-23 | 2003-09-24 | 302 |  | Crystal |
| 304 | **Dividend and Corporate Maint Testing** | 5d | 2003-09-25 | 2003-10-01 |  |  |  |
| 305 | Create test cases | 2d | 2003-09-25 | 2003-09-26 | 301 |  | Eva |
| 306 | Testing | 3d | 2003-09-29 | 2003-10-01 | 305 |  | Crystal |
| 403 | Refactoring of MD Info | 3d | 2003-06-30 A | 2003-07-02 A | 402FS+2d |  | Nyoman |
| 427 | ITS Screens/Takeout | 0d | 2003-07-22 A | 2003-07-22 A | 426 |  | Nyoman |
| 453 | **Auto Cancel POR - from the GUI** | 2d? | 2003-10-02 | 2003-10-03 |  |  |  |
| 454 | Design | 1d? | 2003-10-02 | 2003-10-02 | 450 |  | Nyoman |
| 455 | Coding | 1d? | 2003-10-03 | 2003-10-03 | 454 |  | Nyoman |
| 459 | Simulator Support | 1d? | 2002-11-25 A | 2002-11-25 A |  |  |  |
| 460 | **Intermarket Control Service** | 6d | 2003-07-25 A | 2003-08-04 A |  |  |  |
| 461 | Coding | 3d | 2003-07-25 A | 2003-07-30 A | 422 |  |  |
| 462 | Testing | 3d | 2003-07-30 A | 2003-08-04 A | 461 |  |  |
| 463 | **Pre-Open Order Book** | 8d | 2003-08-06 A | 2003-08-15 A |  |  |  |
| 464 | Coding | 5d | 2003-08-06 A | 2003-08-12 A | 480 |  |  |
| 465 | Testing | 3d | 2003-08-13 A | 2003-08-15 A | 464 |  |  |
| 472 | Additional Changes to Held Order | 1d | 2003-07-17 A | 2003-07-17 A |  | start no earlier than 2003-07-17 | Nyoman |
| 473 | **ITS - Pre-opening Simulator Support** | 9d | 2003-07-21 A | 2003-07-31 A |  |  |  |
| 474 | Coding | 5d | 2003-07-21 A | 2003-07-25 A |  | start no earlier than 2003-07-21 | Nyoman |
| 475 | Testing | 4d | 2003-07-28 A | 2003-07-31 A | 474 |  |  |
| 476 | **ITS Admin Message** | 2d | 2003-08-01 A | 2003-08-04 A |  |  |  |
| 477 | Coding | 2d | 2003-08-01 A | 2003-08-04 A | 473 | start no earlier than 2002-11-25 | Nyoman |
| 478 | **ITS Pre Opening Indication** | 2d | 2003-08-05 A | 2003-08-06 A |  |  |  |
| 479 | Coding | 2d | 2003-08-05 A | 2003-08-06 A | 476 |  | Nyoman |
| 480 | **ITS Pre Opening Response** | 3d | 2003-08-01 A | 2003-08-05 A |  |  |  |
| 481 | Coding | 2d | 2003-08-01 A | 2003-08-04 A | 478 |  | Nyoman |
| 482 | Testing | 1d | 2003-08-05 A | 2003-08-05 A | 481 |  |  |

Removed: 91 Quoting; 118 Test Plan; 145 Detail Design; 148 Test Plan; 161 Sale Condition; 162 Detail Design for SBT Re-factoring; 163 Clearing Code Analaysis; 165 Dependent on Trade idl from Trade Bust; 166 Modification at later time; 168 Re-Factor of SBT Code to allow for stock in same session; 169 Clearing code specifics; 172 Detail Design; 173 2nd Iteration Coding; 174 GUI; 175 Enter the Trade; 176 Recall the trade for later updates; 177 Server; 178 Enter the trade.; 179 Send to CFN; 180 Recall and Update the trade at a later time; 181 Test Plan; 184 Dividend and Corportate Action; 185 Detailed Testing; 186 Use Case; 188 Deisgn walktrhough; 189 1st Iteration Coding; 190 Server; 191 GUI; 192 Test Plan; 193 Code Walkthrough; 202 Delay for TIPS Meetings; 211 Market Open Rotation; 212 Detail Design; 213 Use Case; 214 Trade Engine Design; 215 Design Walkthrough; 216 1st Iteration Coding; 217 Server; 218 Detail Design; 219 2nd Iteration Coding; 220 Server; 221 Test Plan; 222 Code Walkthrough; 226 Use Case; 230 Member Participant Quoting; 231 Detail Design; 232 Design Walkthrough; 233 1st Iteration Coding; 234 Server; 235 Test Plan; 236 Code Walkthrough; 237 Order Cancel/Cancel Replace; 239 Design Walktrhough; 240 1st Iteration Coding; 241 Server; 242 Test Plan; 243 Code Walkthrough; 247 Market Display; 249 Design Walkthrough; 252 Design Walkthrough; 254 Server; 263 Detail Design; 264 2nd Iteration Coding; 265 Server; 266 Test Plan; 271 Use Case Changes; 278 Settlement Changes; 280 Database Analysis; 281 Report Coding; 282 Code Walkthrough; 424 Pre-Opening Screen; 433 Simulator Support for Screens

Changed:

| ID | Task | Start | Finish | Duration | Complete | Total float | Predecessors | Other |
| --- | --- | --- | --- | --- | --- | --- | --- | --- |
| 1 | **CBOEdirect Stock System** | 2002-10-08 A → 2002-11-21 A (+44d) | 2003-11-05 → 2003-10-27 (-9d) | 280d → 241d? | 53% → 78% |  |  |  |
| 4 | Requirements Member document |  |  |  |  |  |  | resources Brad → Mei Wu |
| 5 | Use Case Comparism |  |  |  |  |  |  | resources Brad → Mei Wu |
| 13 | Allocate Trade |  |  |  |  |  |  | resources Brad → Mei Wu |
| 14 | Monitor Sell Short |  |  |  |  |  |  | resources Brad → Mei Wu |
| 15 | Bust Trade |  |  |  |  |  |  | resources Brad → Mei Wu |
| 16 | Submit Customer Sell Short |  |  |  |  |  |  | resources Brad → Mei Wu |
| 17 | Submit Limit Order |  |  |  |  |  |  | resources Brad → Mei Wu |
| 18 | Submit Market Order |  |  |  |  |  |  | resources Brad → Mei Wu |
| 19 | Submit Quote |  |  |  |  |  |  | resources Brad → Mei Wu |
| 20 | Submit Stop/Stop Limit |  |  |  |  |  |  | resources Brad → Mei Wu |
| 21 | Monitor Stop/Stop Limit |  |  |  |  |  |  | resources Brad → Mei Wu |
| 22 | NBBO IPP Protection |  |  |  |  |  |  | resources Brad → Mei Wu |
| 23 | Done Order Entry |  |  |  |  |  |  | resources Brad → Mei Wu |
| 30 | Meeting to discuss development environment - Haps0a |  |  |  |  |  |  | resources Brad; Mark Woyna; Eva; SBT staff → Mei Wu; Mark Woyna; Eva; SBT staff |
| 31 | Haps0a Configuration Meeting |  |  |  |  |  |  | resources Brad; Mark Woyna; Eva; SBT staff → Mei Wu; Mark Woyna; Eva; SBT staff |
| 32 | Haps0a Request for help |  |  |  |  |  |  | resources Brad; Mmark Woyna → Mei Wu; Mmark Woyna |
| 34 | Contact DB staff to install SBT Database |  |  |  |  |  |  | resources Brad → Mei Wu |
| 46 | SBT Tradeengine and CAS Installation |  |  |  |  |  |  | resources Sandip; Matt; Brad → Sandip; Matt; Mei Wu |
| 48 | Meeting to finalize datamodel changes |  |  |  |  |  |  | resources Eva; Brad; Carol → Eva; Mei Wu; Carol |
| 60 | Product( Cusip ) |  |  |  |  |  |  | resources Brad → Mei Wu |
| 61 | Member( Clearing code ) |  |  |  |  |  |  | resources Brad → Mei Wu |
| 63 | Order Side - Sell Short |  |  |  |  |  |  | resources Brad → Mei Wu |
| 65 | Imbalance Calculation |  |  |  |  |  |  | resources Brad → Mei Wu |
| 66 | Order Side - Sell Short/Sell Short Exempt |  |  |  |  |  |  | resources Brad → Mei Wu |
| 68 | **Business Services** |  | 2003-09-16 → 2003-10-14 (+28d) | 127d → 147d | 38% → 85% | 6d → 9d |  |  |
| 69 | **Allocation Allgorithm Changes** |  | 2003-05-28 A |  | 96% → 100% | 85d → none |  |  |
| 75 | **Iteration 1** |  | 2003-05-19 A |  | 80% → 100% | 92d → none |  |  |
| 80 | Trade Service | 2003-05-16 A | 2003-05-19 A |  | 0% → 100% | 86d → none |  |  |
| 86 | **Allocation Algorithm Testing** |  | 2003-06-27 A |  | 45% → 100% | 32d → none |  |  |
| 89 | **Testing Effort** | 2003-06-12 A | 2003-06-27 A |  | 0% → 100% | 32d → none |  |  |
| 90 | Allocation and Quoting | 2003-06-12 A | 2003-06-20 → 2003-06-27 A (+7d) | 7d → 12d | 0% → 100% | 26d → none |  | was named Allocation |
| 91 | **Lot Size Entry and Caching** | 2003-06-30 A | 2003-07-08 → 2003-07-10 A (+2d) | 7d → 9d | 0% → 100% | 32d → none |  |  |
| 92 | Analysis | 2003-06-30 A | 2003-06-30 A |  | 0% → 100% | 32d → none |  |  |
| 93 | Design | 2003-07-01 A | 2003-07-01 A |  | 0% → 100% | 32d → none |  |  |
| 94 | 1st Iteration Coding/Testing | 2003-07-02 A | 2003-07-03 → 2003-07-07 A (+4d) | 2d → 4d | 0% → 100% | 32d → none |  |  |
| 95 | 2nd Iteration Coding/Testing/Configuration | 2003-07-04 → 2003-07-08 A (+4d) | 2003-07-08 → 2003-07-10 A (+2d) |  | 0% → 100% | 32d → none |  |  |
| 100 | **Trade Bust** |  | 2003-05-30 → 2003-07-18 A (+49d) | 25d → 60d | 81% → 100% | 83d → none |  |  |
| 107 | **1st Iteration Coding** |  | 2003-05-21 A |  | 67% → 100% | 90d → none |  |  |
| 108 | GUI | 2003-05-16 A | 2003-05-19 A |  | 0% → 100% | 86d → none |  |  |
| 114 | **2nd Iteration Coding** |  | 2003-05-29 A |  | 60% → 100% | 84d → none |  |  |
| 115 | GUI | 2003-05-23 A | 2003-05-26 A |  | 0% → 100% | 81d → none |  |  |
| 117 | Testing | 2003-08-20 → 2003-07-17 A (-34d) | 2003-09-02 → 2003-07-18 A (-46d) | 10d → 2d | 0% → 100% | 6d → none | 2nd Iteration Coding → 116 | constraint none → start no earlier than 2003-07-17; resources Sandip → Crystal; Nyoman |
| 122 | Code Walkthrough | 2003-05-30 → 2003-09-12 A (+105d) | 2003-05-30 → 2003-09-12 A (+105d) |  | 0% → 100% | 77d → none | Test Plan → 121 |  |
| 123 | **NBBO( IPP ) Protection - NBBO Stepup** |  | 2003-06-16 → 2003-07-15 A (+29d) | 43d → 64d | 93% → 100% | 72d → none |  |  |
| 134 | Testing | 2003-06-16 → 2003-07-15 A (+29d) | 2003-06-16 → 2003-07-15 A (+29d) |  | 0% → 100% | 23.4d → none |  | was named Test Plan; constraint none → start no earlier than 2003-07-15; resources Crystal → Crystal; Nyoman |
| 135 | Code Walkthrough | 2003-06-16 → 2003-07-15 A (+29d) | 2003-06-16 → 2003-07-15 A (+29d) |  | 0% → 100% | 23.4d → none |  |  |
| 136 | **Sell Short** |  | 2003-07-17 → 2003-08-27 A (+41d) | 23d → 52d | 24% → 100% | 27d → none |  |  |
| 137 | **Detail Design** |  | 2003-06-19 A |  | 99% → 100% | 0d → none |  |  |
| 138 | Determine Event Channel to Monitor Ticks |  |  |  |  |  |  | resources none → Crystal |
| 139 | Determine Event Channel to Monitor NBBO |  |  |  |  |  |  | resources none → Crystal |
| 140 | Design Service to handle the monitoring of sell short |  |  |  |  |  |  | resources none → Crystal |
| 142 | **First Iteration Coding** |  | 2003-07-03 → 2003-08-08 A (+36d) | 10d → 36d | 30% → 100% | 27d → none |  |  |
| 143 | **Server** |  | 2003-07-03 → 2003-08-08 A (+36d) | 10d → 36d | 30% → 100% | 27d → none |  |  |
| 144 | Sell Short Strategy/Factory |  | 2003-06-24 A → 2003-06-20 A (-4d) | 3d → 1d |  |  |  |  |
| 145 | Order Book helper methods | 2003-06-25 A | 2003-06-26 → 2003-06-25 A (-1d) | 2d → 1d | 0% → 100% | 27d → none |  | resources none → Crystal |
| 146 | Order Helper Methods | 2003-06-27 A | 2003-07-01 → 2003-06-30 A (-1d) | 3d → 2d | 0% → 100% | 27d → none |  | resources none → Crystal |
| 147 | Sell Short Holder | 2003-07-02 A | 2003-07-03 → 2003-07-02 A (-1d) | 2d → 1d | 0% → 100% | 27d → none |  | resources none → Crystal |
| 156 | **2nd Iteration Coding** | 2003-07-08 → 2003-07-15 A (+7d) | 2003-07-10 → 2003-08-20 A (+41d) | 3d → 27d | 0% → 100% | 27d → none |  |  |
| 161 | Code Walkthrough | 2003-07-14 → 2003-08-20 A (+37d) | 2003-07-14 → 2003-08-20 A (+37d) |  | 0% → 100% | 30d → none | Test Plan → 160 |  |
| 162 | Testing | 2003-07-11 → 2003-08-21 A (+41d) | 2003-07-17 → 2003-08-27 A (+41d) |  | 0% → 100% | 27d → none | 156 → 161 |  |
| 170 | Design | 2003-08-18 → 2003-08-26 A (+8d) | 2003-08-18 → 2003-08-26 A (+8d) | 0d → 1d | 0% → 100% | 27d → none | Use Case → 165 | resources Crystal → Matt; baseline start 2003-05-23 → none; baseline finish 2003-05-28 → none |
| 171 | Coding | 2003-09-08 → 2003-08-27 A (-12d) | 2003-09-12 → 2003-09-02 A (-10d) |  | 0% → 100% | 6d → none | Use Case → 170 | resources Sandip → Matt |
| 178 | Design | 2003-09-03 → 2003-09-25 (+22d) | 2003-09-05 → 2003-09-25 (+20d) | 3d → 1d |  | 10d → 9d | 91, Market Open Rotation, 278, 293 → 174 | baseline start 2003-05-05 → none; baseline finish 2003-05-07 → none |
| 179 | Coding | 2003-08-05 → 2003-09-26 (+52d) | 2003-08-18 → 2003-10-01 (+44d) | 10d → 4d |  | 0d → 9d | 201 → 178 | resources Nyoman → Matt |
| 183 | Design | 2003-06-27 → 2003-10-06 (+101d) | 2003-06-27 → 2003-10-07 (+102d) | 0d → 2d |  | 63d → 9d | Member Participant Quoting → 177 | resources Mike N → Matt; baseline start 2003-05-14 → none; baseline finish 2003-05-15 → none |
| 184 | Coding | 2003-09-02 → 2003-10-08 (+36d) | 2003-09-24 → 2003-10-10 (+16d) | 17d → 3d |  | 0d → 9d | 221 → 183 | resources Nyoman → Matt |
| 189 | Design | 2003-07-28 → 2003-08-26 A (+29d) | 2003-07-28 → 2003-08-27 A (+30d) | 1d → 2d | 0% → 100% | 68d → none | Use Case Changes → 165 | resources Brad → Matt |
| 191 | **Stop/Stop Limit** | 2003-07-18 → 2003-08-25 A (+38d) | 2003-08-11 → 2003-09-02 A (+22d) | 17d → 7d | 0% → 100% | 27d → none |  |  |
| 192 | Detail Design | 2003-07-18 → 2003-08-25 A (+38d) | 2003-07-24 → 2003-08-25 A (+32d) | 5d → 1d | 0% → 100% | 27d → none | 136 → none | constraint none → start no earlier than 2003-08-25 |

| ID | Task | Start | Finish | Duration | Complete | Total float | Predecessors | Other |
| --- | --- | --- | --- | --- | --- | --- | --- | --- |
| 193 | Design Walkthrough | 2003-07-24 → 2003-08-25 A (+32d) | 2003-07-24 → 2003-08-25 A (+32d) |  | 0% → 100% | 39d → none |  |  |
| 194 | **First Iteration Coding** | 2003-07-25 → 2003-08-26 A (+32d) | 2003-07-31 → 2003-08-29 A (+29d) | 5d → 4d | 0% → 100% | 27d → none |  |  |
| 195 | Event Channel Changes to monitor Recap | 2003-07-25 → 2003-08-26 A (+32d) | 2003-07-31 → 2003-08-27 A (+27d) | 5d → 2d | 0% → 100% | 27d → none |  | was named Server |
| 197 | Test Plan | 2003-08-01 → 2003-09-01 A (+31d) | 2003-08-04 → 2003-09-01 A (+28d) | 2d → 1d | 0% → 100% | 27d → none | 195 → 194 |  |
| 198 | Code Walkthough | 2003-08-04 → 2003-09-01 A (+28d) | 2003-08-04 → 2003-09-01 A (+28d) |  | 0% → 100% | 27d → none |  |  |
| 199 | Integration Testesting | 2003-08-05 → 2003-09-02 A (+28d) | 2003-08-11 → 2003-09-02 A (+22d) | 5d → 1d | 0% → 100% | 27d → none |  |  |
| 201 | Design | 2003-07-29 → 2003-09-15 A (+48d) | 2003-08-04 → 2003-09-15 A (+42d) | 5d → 0.5d | 0% → 100% | 0d → none | 450 → 191 | resources Nyoman → Crystal |
| 204 | **Done Order Entry** | 2003-04-28 A → 2003-08-12 A (+106d) | 2003-07-23 → 2003-09-12 A (+51d) | 63d → 24d | 17% → 100% | 45d → none |  |  |
| 206 | **Detail Design** | 2003-04-28 A → 2003-08-12 A (+106d) | 2003-06-20 → 2003-08-14 A (+55d) | 40d → 3d | 31% → 100% | 68d → none |  |  |
| 218 | Testing | 2003-07-17 → 2003-09-04 A (+49d) | 2003-07-23 → 2003-09-12 A (+51d) | 5d → 7d | 0% → 100% | 45d → none | Test Plan → 209, 214 | resources Brad → Mei Wu |
| 219 | Codewalkthrough | 2003-07-23 → 2003-09-12 A (+51d) | 2003-07-23 → 2003-09-12 A (+51d) |  | 0% → 100% | 45d → none |  | resources Nyoman; Brad → Mei Wu |
| 221 | Design | 2003-08-28 → 2003-09-29 (+32d) | 2003-09-01 → 2003-09-29 (+28d) | 3d → 1d |  | 0d → 16d | 466 → none | constraint none → start no earlier than 2003-09-29; resources Nyoman → Mei/Nyoman |
| 222 | GUI | 2003-06-19 → 2003-09-30 (+103d) | 2003-06-20 → 2003-10-01 (+103d) |  |  | 45d → 16d | Clearing code specifics → 221 | resources Brad → Nyoman; baseline start 2003-03-24 → none; baseline finish 2003-03-24 → none |
| 223 | Server | 2003-07-08 → 2003-10-02 (+86d) | 2003-07-10 → 2003-10-03 (+85d) | 3d → 2d |  | 27d → 16d | Detail Design → 222 | resources Crystal → Mei; baseline start 2003-03-31 → none; baseline finish 2003-04-03 → none |
| 230 | **Book Depth** | 2003-06-13 → 2003-06-24 A (+11d) | 2003-07-04 → 2003-07-30 A (+26d) | 16d → 27d | 0% → 100% | 6d → none |  |  |
| 231 | Detail Design | 2003-06-13 → 2003-06-24 A (+11d) | 2003-06-23 → 2003-07-01 A (+8d) | 7d → 6d | 0% → 100% | 6d → none |  | constraint start no earlier than 2003-06-13 → start no earlier than 2003-06-24 |
| 233 | **1st Iteration Coding** | 2003-06-24 → 2003-07-02 A (+8d) | 2003-06-27 → 2003-07-21 A (+24d) | 4d → 14d | 0% → 100% | 6d → none |  |  |
| 234 | Server | 2003-06-24 → 2003-07-02 A (+8d) | 2003-06-26 → 2003-07-04 A (+8d) |  | 0% → 100% | 6d → none |  |  |
| 235 | IDL | 2003-06-27 → 2003-07-07 A (+10d) | 2003-06-27 → 2003-07-07 A (+10d) |  | 0% → 100% | 6d → none |  |  |
| 236 | Configuration Delay | 2003-05-05 → 2003-07-08 A (+64d) | 2003-05-21 → 2003-07-11 A (+51d) | 12d → 4d | 0% → 100% | 90.5d → none | Clearing Code Analaysis → 235 | resources none → Sandip |
| 239 | **2nd Iteration Coding** | 2003-06-30 → 2003-07-22 A (+22d) | 2003-07-03 → 2003-07-23 A (+20d) | 4d → 2d | 0% → 100% | 6d → none |  |  |
| 240 | Server | 2003-06-30 → 2003-07-22 A (+22d) | 2003-07-02 → 2003-07-22 A (+20d) | 3d → 1d | 0% → 100% | 6d → none |  |  |
| 241 | IDL | 2003-07-03 → 2003-07-23 A (+20d) | 2003-07-03 → 2003-07-23 A (+20d) |  | 0% → 100% | 6d → none |  |  |
| 242 | Testing | 2003-07-04 → 2003-07-24 A (+20d) | 2003-07-04 → 2003-07-25 A (+21d) | 1d → 2d | 0% → 100% | 6d → none |  | was named Test Plan |
| 243 | Code Walkthrough | 2003-07-04 → 2003-07-25 A (+21d) | 2003-07-04 → 2003-07-25 A (+21d) |  | 0% → 100% | 6d → none |  |  |
| 268 | Detailed Design | 2003-09-11 → 2003-09-18 (+7d) | 2003-09-17 → 2003-09-24 (+7d) |  |  | 20d → 23d | Order Cancel/Cancel Replace → 200 | resources Matt → Mei Wu [50%]; baseline start 2003-04-03 → none; baseline finish 2003-04-09 → none |
| 270 | **At the Open Contingency** | 2003-09-03 → 2003-10-02 (+29d) | 2003-09-16 → 2003-10-13 (+27d) | 10d → 8d |  | 6d → 10d |  |  |
| 271 | Detail Design | 2003-09-03 → 2003-10-02 (+29d) | 2003-09-04 → 2003-10-03 (+29d) |  |  | 6d → 10d | Market Open Rotation → 246 |  |
| 273 | Open matching related and cancel of OPG coding | 2003-09-08 → 2003-10-06 (+28d) | 2003-09-12 → 2003-10-08 (+26d) | 5d → 3d |  | 6d → 12d | none → 271 | was named Iteration 1; resources none → Sandip |
| 274 | Testing | 2003-09-15 → 2003-10-13 (+28d) | 2003-09-16 → 2003-10-13 (+27d) | 2d → 1d |  | 6d → 10d | 273 → 273, 272 | resources Sandip → Sandip; Mei |
| 278 | **Trade History/Settlement Changes** | 2003-07-09 → 2003-07-11 A (+2d) | 2003-07-15 → 2003-07-31 A (+16d) | 5d → 15d | 0% → 100% | 32d → none |  | was named Trade History Changes |
| 279 | Detail Design | 2003-07-09 → 2003-07-11 A (+2d) | 2003-07-10 → 2003-07-14 A (+4d) |  | 0% → 100% | 32d → none |  |  |
| 281 | Design Walkthrough | 2003-06-20 → 2003-07-18 A (+28d) | 2003-06-20 → 2003-07-21 A (+31d) | 0d → 2d | 0% → 100% | 68d → none | 222 → 280 | resources Brad → Matt |
| 282 | **1st Iteration Coding** | 2003-07-11 → 2003-07-22 A (+11d) | 2003-07-14 → 2003-07-28 A (+14d) | 2d → 5d | 0% → 100% | 32d → none |  |  |
| 284 | Testing | 2003-07-15 → 2003-07-29 A (+14d) | 2003-07-15 → 2003-07-31 A (+16d) | 1d → 3d | 0% → 100% | 32d → none |  | was named Test Plan |
| 285 | Code Walkthrough | 2003-07-14 → 2003-07-31 A (+17d) | 2003-07-14 → 2003-07-31 A (+17d) |  | 0% → 100% | 33d → none | Server → 284 |  |
| 288 | **Coding** | 2003-05-06 A → 2003-08-05 A (+91d) | 2003-06-20 → 2003-08-11 A (+52d) | 33.5d → 5d | 38% → 100% | 45d → none |  |  |
| 293 | **Trade Through Monitoring Service** | 2003-07-16 → 2003-08-14 A (+29d) | 2003-08-01 → 2003-09-17 (+47d) | 13d → 25d | 0% → 33% | 32d → 23.4d |  |  |
| 294 | **Detail Design** | 2003-07-16 → 2003-08-14 A (+29d) | 2003-07-17 → 2003-08-15 A (+29d) |  | 0% → 100% | 32d → none |  |  |
| 295 | Server | 2003-07-16 → 2003-08-14 A (+29d) | 2003-07-17 → 2003-08-15 A (+29d) |  | 0% → 100% | 32d → none | 278 → 286 |  |
| 296 | Design Walkthrough | 2003-07-17 → 2003-08-15 A (+29d) | 2003-07-17 → 2003-08-15 A (+29d) |  | 0% → 100% | 32d → none |  |  |
| 297 | **1st Iteration Coding** | 2003-07-18 → 2003-09-12 (+56d) | 2003-07-23 → 2003-09-16 (+55d) | 4d → 3d |  | 32d → 23.4d |  |  |
| 298 | Server | 2003-07-18 → 2003-09-12 (+56d) | 2003-07-23 → 2003-09-16 (+55d) | 4d → 3d |  | 32d → 23.4d | 296 → 296, 186, 188 |  |
| 300 | Code Walkthrough | 2003-08-01 → 2003-09-16 (+46d) | 2003-08-01 → 2003-09-16 (+46d) |  |  | 32d → 24.4d | Test Plan → 297 |  |
| 308 | **Supporting Services** | 2003-07-01 → 2002-11-25 A (-218d) | 2003-10-08 → 2003-10-09 (+1d) | 72d → 227d | 0% → 17% | 20d → 12d |  |  |
| 309 | **Equity Maintanance - CUSIP** | 2003-07-24 → 2002-11-25 (-241d) | 2003-08-01 → 2002-11-28 (-246d) | 7d → 4d |  | 68d → 235d |  |  |
| 310 | Design Walkthrough | 2003-07-28 → 2002-11-25 (-245d) | 2003-07-28 → 2002-11-25 (-245d) |  |  | 68d → 235d | 189 → none | resources Brad → Matt |
| 311 | **Iteration 1** | 2003-07-29 → 2002-11-25 (-246d) | 2003-08-01 → 2002-11-28 (-246d) |  |  | 68d → 235d |  |  |
| 312 | Client | 2003-07-29 → 2002-11-25 (-246d) | 2003-07-29 → 2002-11-25 (-246d) |  |  | 68d → 235d |  | resources Brad → Mei Wu |
| 313 | IDL Change | 2003-07-30 → 2002-11-26 (-246d) | 2003-07-31 → 2002-11-27 (-246d) |  |  | 68d → 235d |  | resources Brad → Mei Wu |
| 314 | Server | 2003-08-01 → 2002-11-28 (-246d) | 2003-08-01 → 2002-11-28 (-246d) |  |  | 68d → 235d |  | resources Brad → Mei Wu |
| 315 | **NSCC Clearing File Creation** | 2003-09-30 → 2003-10-01 A (+1d) | 2003-10-08 → 2003-10-09 (+1d) |  | 0% → 30% | 20d → 12d |  |  |
| 316 | File creation | 2003-09-30 → 2003-10-01 A (+1d) | 2003-10-02 → 2003-10-03 (+1d) |  | 0% → 80% | 20d → 12d | Settlement Changes → 293 | constraint none → start no earlier than 2003-10-01 |
| 317 | FTP Process | 2003-10-03 → 2003-10-06 (+3d) | 2003-10-06 → 2003-10-07 (+1d) |  |  | 20d → 12d |  |  |
| 318 | Intranet Development | 2003-10-07 → 2003-10-08 (+1d) | 2003-10-07 → 2003-10-08 (+1d) |  |  | 21d → 13d |  |  |
| 319 | Viewable report | 2003-10-07 → 2003-10-08 (+1d) | 2003-10-08 → 2003-10-09 (+1d) |  |  | 20d → 12d |  |  |
| 364 | **Workstation/Testing GUI** |  | 2003-09-24 → 2003-10-03 (+9d) | 216d → 223d? | 58% → 89% | 0d → 16d |  |  |
| 387 | **Screen Construction** |  | 2003-09-24 → 2003-10-03 (+9d) | 216d → 223d? | 56% → 94% | 0d → 16d |  |  |
| 391 | **Main Market Data Screen** |  | 2003-06-27 → 2003-07-08 A (+11d) | 52d → 59d | 83% → 100% | 0d → none |  |  |
| 400 | **Iteration 3** |  | 2003-06-25 → 2003-07-02 A (+7d) | 5d → 10d | 80% → 100% | 2d → none |  |  |
| 402 | Market Data Model | 2003-06-25 A | 2003-06-25 A |  | 0% → 100% | 2d → none |  | resources none → Nyoman |
| 404 | Testing | 2003-06-25 → 2003-07-03 A (+8d) | 2003-06-27 → 2003-07-08 A (+11d) | 3d → 4d | 0% → 100% | 0d → none | 401 → 403 |  |
| 415 | **Enter a new Order** |  | 2003-07-07 → 2003-07-16 A (+9d) | 23d → 29.1d | 54% → 100% | 0d → none |  |  |
| 419 | **Iteration 2** | 2003-06-30 → 2003-07-03 A (+3d) | 2003-07-02 → 2003-07-11 A (+9d) | 3d → 6.1d | 0% → 100% | 0d → none |  |  |
| 420 | Sell Short | 2003-06-30 → 2003-07-03 A (+3d) | 2003-07-02 → 2003-07-11 A (+9d) |  | 0% → 100% | 0d → none |  |  |
| 421 | Testing | 2003-07-03 → 2003-07-11 A (+8d) | 2003-07-07 → 2003-07-16 A (+9d) |  | 0% → 100% | 0d → none |  |  |
| 422 | **Montage Screen** |  | 2003-07-16 → 2003-07-25 A (+9d) | 23d → 29.1d | 36% → 100% | 0d → none |  |  |
| 424 | **Iteration 1** | 2003-07-08 → 2003-07-16 A (+8d) | 2003-07-11 → 2003-07-22 A (+11d) |  | 0% → 100% | 0d → none |  |  |
| 425 | Market Data Model | 2003-07-08 → 2003-07-16 A (+8d) | 2003-07-10 → 2003-07-21 A (+11d) |  | 0% → 100% | 0d → none |  |  |
| 426 | Screen Updates | 2003-07-11 → 2003-07-21 A (+10d) | 2003-07-11 → 2003-07-22 A (+11d) |  | 0% → 100% | 0d → none |  |  |

| ID | Task | Start | Finish | Duration | Complete | Total float | Predecessors | Other |
| --- | --- | --- | --- | --- | --- | --- | --- | --- |
| 428 | Testing | 2003-07-14 → 2003-07-22 A (+8d) | 2003-07-16 → 2003-07-25 A (+9d) |  | 0% → 100% | 0d → none |  |  |
| 444 | **Edit Trading Preferences** | 2003-07-17 → 2003-09-22 (+67d) | 2003-07-22 → 2003-09-25 (+65d) |  |  | 0d → 16d |  |  |
| 445 | Design | 2003-07-17 → 2003-09-22 (+67d) | 2003-07-17 → 2003-09-22 (+67d) |  |  | 0d → 16d | 422 → 466 | constraint none → start no earlier than 2003-09-22 |
| 446 | Coding | 2003-07-18 → 2003-09-23 (+67d) | 2003-07-22 → 2003-09-25 (+65d) |  |  | 0d → 16d |  |  |
| 450 | **Edit User Prefernces** | 2003-07-23 → 2003-09-26 (+65d) | 2003-07-28 → 2003-10-01 (+65d) |  |  | 0d → 16d |  |  |
| 451 | Design | 2003-07-23 → 2003-09-26 (+65d) | 2003-07-23 → 2003-09-26 (+65d) |  |  | 0d → 16d |  |  |
| 452 | Coding | 2003-07-24 → 2003-09-29 (+67d) | 2003-07-28 → 2003-10-01 (+65d) |  |  | 0d → 16d |  |  |
| 466 | **Pre Open Manual Handling Screen** | 2003-08-19 → 2003-08-18 A (-1d) | 2003-08-27 → 2003-08-26 A (-1d) |  | 0% → 100% | 0d → none |  |  |
| 467 | Design | 2003-08-19 → 2003-08-18 A (-1d) | 2003-08-20 → 2003-08-19 A (-1d) |  | 0% → 100% | 0d → none | Pre-Opening Screen → 463 |  |
| 468 | Coding | 2003-08-21 → 2003-08-20 A (-1d) | 2003-08-27 → 2003-08-26 A (-1d) |  | 0% → 100% | 0d → none |  |  |
| 469 | **Held Order Screeen** |  | 2002-11-25 A → 2003-07-17 A (+234d) | 1d → 167d |  |  |  |  |
| 492 | External Intefaces Project | 2002-10-08 → 2002-11-21 A (+44d) | 2003-09-18 → 2003-10-27 (+39d) | 248d → 243d | 51% → 71% |  |  |  |
| 494 | Stock Team internal integration testing | 2003-09-25 → 2003-10-27 (+32d) | 2003-11-05 → 2003-10-27 (-9d) | 30d → 0d |  |  |  |  |
